# 2_ESI_P74_UMS_2026 - BOOK DE PLANEJAMENTO

Schedule from MS Project XML, 2026-08-18 to 2027-05-25, status date 2026-07-02, 17 hours a day.
P-74 PPGM-I FASE 4
ESTRUTURAL ENGENHARIA

## Calendars

- 8,5 Horas - 2 Turnos (30% Desconexão): Mon-Sun 01:30-06:00, 08:00-12:00, 13:30-18:00, 20:00-00:00. Exceptions (off unless hours are given): 2027-01-08 to 2027-02-06 (Parada de Produção P-74).

## Resources

| Resource | Group | Rate |
| --- | --- | --- |
| COORDENADOR DE PROJETO | APOIO |  |
| DELINEADOR ON - CALDEIRARIA | DELIN |  |
| DELINEADOR ON - PINTURA |  |  |
| DELINEADOR ON - ELÉT/INSTR |  |  |
| PETROBRAS ON |  |  |
| DELINEADOR OFF - CALDEIRARIA | DELIN |  |
| DELINEADOR OFF - PINTURA |  |  |
| DELINEADOR OFF - ELÉT/INSTR |  |  |
| PETROBRAS OFF |  |  |
| VERIFICADOR ON |  |  |
| PROJETISTA ON | DELIN |  |
| TÉCNICO DE PLANEJAMENTO ON - TAC |  |  |
| TÉCNICO DE MATERIAIS ON |  |  |
| CUSTO ORÇADO BOOK |  | 498.04 |
| HIDROJATISTA-OFF |  |  |
| PINTOR ESC-OFF |  |  |
| MONTADOR ANDAIME-OFF |  |  |

## Schedule

| ID | WBS | Task | Duration | Start | Finish | Predecessors | Total slack | Free slack | Resources | Work | % Previsto Calculado Prazo | Portifólio | % da Etapa Concluída | % Previsto Calculado Trabalho | Início1 | Término1 | Data de Status | QT SS's/REG. | Farol | Quant. m² | Disciplina | Gerência Executante | Empresa Executante | Área/Sistema | Registro | Nº SS | Módulo | Nota/Item/Medida | Origem | TAG | Serviço Padrão | Status Planner | Prioridade do Serviço | Piso/Setor | Zona [Plano Pintura] | Sistema [Plano Pintura] |
| --- | --- | --- | --- | --- | --- | --- | --- | --- | --- | --- | --- | --- | --- | --- | --- | --- | --- | --- | --- | --- | --- | --- | --- | --- | --- | --- | --- | --- | --- | --- | --- | --- | --- | --- | --- | --- |
| 1 | 1 | **ESCOPO FASE 3** | 250.15d | 2026-08-18 | 2027-05-25 |  | 0d |  |  | 64184h | 0,00% | P74-UMS-2026 | 0,00% | 0,00% | 2026-04-02 | 2026-04-14 | 2026-07-02 | 6 | -1 | 674.61 |  |  |  |  |  |  |  |  |  |  |  |  |  |  |  |  |
| 2 | 1.200 | **SS-767/2024 - Registro: 303980/ 397647 - Plano de pintura para o Módulo 23 Setor 1 e Setor 5** | 250.15d | 2026-08-18 | 2027-05-25 |  | 0d |  |  | 25120h | 0,00% |  | 0,00% | 0,00% |  |  | 2026-07-02 | 1 | -1 | 320.5 | PINT-PLANO | PPGM-I | ESTRUTURAL | ZPIN - Módulos para Pintura | 303980/ 397647 | SS-767/2024 | M23 | 15525151 | NOTA ZS | Diversos | PINTURA - EXECUÇÃO DE PLANOS DE PINTURA | PLANEJAMENTO ENCERRADO | C - POSTERGÁVEL | Setor 1 |  |  |
| 3 | 1.1.1 | **ZONA A** | 142.12d | 2026-08-18 | 2027-01-07 |  | 0d |  |  | 9714h | 0,00% |  |  | 0,00% |  |  | 2026-07-02 |  | -1 | 73.41 | PINT-PLANO | PPGM-I | ESTRUTURAL | ZPIN - Módulos para Pintura | 303980/ 397647 | SS-767/2024 | M23 | 15525151 | NOTA ZS | Diversos | PINTURA - EXECUÇÃO DE PLANOS DE PINTURA | PLANEJAMENTO ENCERRADO | C - POSTERGÁVEL | Setor 1 | ZONA A |  |
| 4 | 1.1.1.1 | **MONTAGEM DO ACESSO** | 2.06d | 2026-08-18 | 2026-08-20 |  | 0d |  |  | 72h | 0,00% |  |  | 0,00% |  |  | 2026-07-02 |  |  |  |  |  | ESTRUTURAL |  | 303980/ 397647 | SS-767/2024 |  |  |  |  |  |  |  |  | ZONA A |  |
| 5 | 1.1.1.1.1 | MONTAGEM DE ANDAIMES - ZONA A | 18h | 2026-08-18 | 2026-08-20 |  | 0d |  | MONTADOR ANDAIME-OFF [400%] | 72h | 0,00% |  |  | 0,00% |  |  | 2026-07-02 |  |  |  |  |  | ESTRUTURAL |  | 303980/ 397647 | SS-767/2024 |  |  |  |  |  |  |  |  | ZONA A |  |
| 6 | 1.1.1.2 | **PINTURA** | 135.76d | 2026-08-20 | 2027-01-03 |  | 0d |  |  | 8758h | 0,00% |  |  | 0,00% |  |  | 2026-07-02 |  |  |  |  |  | ESTRUTURAL |  | 303980/ 397647 | SS-767/2024 |  |  |  |  |  |  |  |  | ZONA A |  |
| 7 | 1.1.1.2.1 | **APLICAÇÃO SISTEMA DE PINTURA AÇO CARBONO - ALTA TEMPERATURA** | 8.18d | 2026-08-20 | 2026-08-28 |  | 0d |  |  | 446h | 0,00% |  |  | 0,00% |  |  | 2026-07-02 |  |  |  | PINT-PLANO | PPGM-I | ESTRUTURAL | ZPIN - Módulos para Pintura | 303980/ 397647 | SS-767/2024 | M23 | 15525151 | NOTA ZS | Diversos | PINTURA - EXECUÇÃO DE PLANOS DE PINTURA | PLANEJAMENTO ENCERRADO | C - POSTERGÁVEL | Setor 1 | ZONA A | SISTEMA B - TUBULAÇÕES |
| 8 | 1.1.1.2.1.1 | Tratamento de Pintura | 111h | 2026-08-20 | 2026-08-26 | 5 | 0d |  | HIDROJATISTA-OFF [200%] | 222h | 0,00% |  |  | 0,00% |  |  | 2026-07-02 |  |  |  |  |  | ESTRUTURAL |  | 303980/ 397647 | SS-767/2024 |  |  |  |  |  |  |  |  | ZONA A | SISTEMA B - TUBULAÇÕES |
| 9 | 1.1.1.2.1.2 | Pintura | 28h | 2026-08-26 | 2026-08-28 | 8 | 202.91d | 0d | PINTOR ESC-OFF [800%] | 224h | 0,00% |  |  | 0,00% |  |  | 2026-07-02 |  |  |  |  |  | ESTRUTURAL |  | 303980/ 397647 | SS-767/2024 |  |  |  |  |  |  |  |  | ZONA A | SISTEMA B - TUBULAÇÕES |
| 10 | 1.1.1.2.2 | **APLICAÇÃO SISTEMA DE PINTURA AÇO CARBONO - TEMP. AMBIENTE** | 2.59d | 2026-08-26 | 2026-08-29 |  | 0d |  |  | 64h | 0,00% |  |  | 0,00% |  |  | 2026-07-02 |  |  |  | PINT-PLANO | PPGM-I | ESTRUTURAL | ZPIN - Módulos para Pintura | 303980/ 397647 | SS-767/2024 | M23 | 15525151 | NOTA ZS | Diversos | PINTURA - EXECUÇÃO DE PLANOS DE PINTURA | PLANEJAMENTO ENCERRADO | C - POSTERGÁVEL | Setor 1 | ZONA A | SISTEMA B - TUBULAÇÕES |
| 11 | 1.1.1.2.2.1 | Tratamento de Pintura | 16h | 2026-08-26 | 2026-08-27 | 8 | 0d |  | HIDROJATISTA-OFF [200%] | 32h | 0,00% |  |  | 0,00% |  |  | 2026-07-02 |  |  |  |  |  | ESTRUTURAL |  | 303980/ 397647 | SS-767/2024 |  |  |  |  |  |  |  |  | ZONA A | SISTEMA B - TUBULAÇÕES |
| 12 | 1.1.1.2.2.2 | Pintura | 16h | 2026-08-28 | 2026-08-29 | 9 | 202.91d | 1d | PINTOR ESC-OFF [200%] | 32h | 0,00% |  |  | 0,00% |  |  | 2026-07-02 |  |  |  |  |  | ESTRUTURAL |  | 303980/ 397647 | SS-767/2024 |  |  |  |  |  |  |  |  | ZONA A | SISTEMA B - TUBULAÇÕES |
| 13 | 1.1.1.2.3 | **APLICAÇÃO SISTEMA DE PINTURA COBRE-NÍQUEL - TEMP. AMBIENTE** | 5.29d | 2026-08-27 | 2026-09-02 |  | 0d |  |  | 180h | 0,00% |  |  | 0,00% |  |  | 2026-07-02 |  |  |  | PINT-PLANO | PPGM-I | ESTRUTURAL | ZPIN - Módulos para Pintura | 303980/ 397647 | SS-767/2024 | M23 | 15525151 | NOTA ZS | Diversos | PINTURA - EXECUÇÃO DE PLANOS DE PINTURA | PLANEJAMENTO ENCERRADO | C - POSTERGÁVEL | Setor 1 | ZONA A | SISTEMA B - TUBULAÇÕES |
| 14 | 1.1.1.2.3.1 | Tratamento de Pintura | 45h | 2026-08-27 | 2026-08-30 | 11 | 0d |  | HIDROJATISTA-OFF [200%] | 90h | 0,00% |  |  | 0,00% |  |  | 2026-07-02 |  |  |  |  |  | ESTRUTURAL |  | 303980/ 397647 | SS-767/2024 |  |  |  |  |  |  |  |  | ZONA A | SISTEMA B - TUBULAÇÕES |
| 15 | 1.1.1.2.3.2 | Pintura | 45h | 2026-08-30 | 2026-09-02 | 12, 14 | 201.91d | 0d | PINTOR ESC-OFF [200%] | 90h | 0,00% |  |  | 0,00% |  |  | 2026-07-02 |  |  |  |  |  | ESTRUTURAL |  | 303980/ 397647 | SS-767/2024 |  |  |  |  |  |  |  |  | ZONA A | SISTEMA B - TUBULAÇÕES |
| 16 | 1.1.1.2.4 | **APLICAÇÃO SISTEMA DE PINTURA AÇO INOX - TEMP. AMBIENTE** | 4.24d | 2026-08-30 | 2026-09-03 |  | 0d |  |  | 108h | 0,00% |  |  | 0,00% |  |  | 2026-07-02 |  |  |  | PINT-PLANO | PPGM-I | ESTRUTURAL | ZPIN - Módulos para Pintura | 303980/ 397647 | SS-767/2024 | M23 | 15525151 | NOTA ZS | Diversos | PINTURA - EXECUÇÃO DE PLANOS DE PINTURA | PLANEJAMENTO ENCERRADO | C - POSTERGÁVEL | Setor 1 | ZONA A | SISTEMA B - TUBULAÇÕES |
| 17 | 1.1.1.2.4.1 | Tratamento de Pintura | 27h | 2026-08-30 | 2026-09-01 | 14 | 0d |  | HIDROJATISTA-OFF [200%] | 54h | 0,00% |  |  | 0,00% |  |  | 2026-07-02 |  |  |  |  |  | ESTRUTURAL |  | 303980/ 397647 | SS-767/2024 |  |  |  |  |  |  |  |  | ZONA A | SISTEMA B - TUBULAÇÕES |
| 18 | 1.1.1.2.4.2 | Pintura | 27h | 2026-09-02 | 2026-09-03 | 15, 17 | 201.91d | 0d | PINTOR ESC-OFF [200%] | 54h | 0,00% |  |  | 0,00% |  |  | 2026-07-02 |  |  |  |  |  | ESTRUTURAL |  | 303980/ 397647 | SS-767/2024 |  |  |  |  |  |  |  |  | ZONA A | SISTEMA B - TUBULAÇÕES |
| 19 | 1.1.1.2.5 | **APLICAÇÃO SISTEMA DE PINTURA SUPER DUPLEX - ALTA TEMPERATURA** | 2.76d | 2026-09-01 | 2026-09-03 |  | 0d |  |  | 8h | 0,00% |  |  | 0,00% |  |  | 2026-07-02 |  |  |  | PINT-PLANO | PPGM-I | ESTRUTURAL | ZPIN - Módulos para Pintura | 303980/ 397647 | SS-767/2024 | M23 | 15525151 | NOTA ZS | Diversos | PINTURA - EXECUÇÃO DE PLANOS DE PINTURA | PLANEJAMENTO ENCERRADO | C - POSTERGÁVEL | Setor 1 | ZONA A | SISTEMA B - TUBULAÇÕES |
| 20 | 1.1.1.2.5.1 | Tratamento de Pintura | 2h | 2026-09-01 | 2026-09-01 | 17 | 0d |  | HIDROJATISTA-OFF [200%] | 4h | 0,00% |  |  | 0,00% |  |  | 2026-07-02 |  |  |  |  |  | ESTRUTURAL |  | 303980/ 397647 | SS-767/2024 |  |  |  |  |  |  |  |  | ZONA A | SISTEMA B - TUBULAÇÕES |
| 21 | 1.1.1.2.5.2 | Pintura | 2h | 2026-09-03 | 2026-09-03 | 18, 20 | 201.91d | 0d | PINTOR ESC-OFF [200%] | 4h | 0,00% |  |  | 0,00% |  |  | 2026-07-02 |  |  |  |  |  | ESTRUTURAL |  | 303980/ 397647 | SS-767/2024 |  |  |  |  |  |  |  |  | ZONA A | SISTEMA B - TUBULAÇÕES |
| 22 | 1.1.1.2.6 | **APLICAÇÃO SISTEMA DE PINTURA AÇO CARBONO - TEMP. AMBIENTE** | 15.71d | 2026-11-12 | 2026-11-27 |  | 0d |  |  | 852h | 0,00% |  |  | 0,00% |  |  | 2026-07-02 |  |  |  | PINT-PLANO | PPGM-I | ESTRUTURAL | ZPIN - Módulos para Pintura | 303980/ 397647 | SS-767/2024 | M23 | 15525151 | NOTA ZS | Diversos | PINTURA - EXECUÇÃO DE PLANOS DE PINTURA | PLANEJAMENTO ENCERRADO | C - POSTERGÁVEL | Setor 1 | ZONA A | SISTEMA C - ESTRUTURAS |
| 23 | 1.1.1.2.6.1 | Tratamento de Pintura | 214h | 2026-11-12 | 2026-11-24 | 29 | 0d |  | HIDROJATISTA-OFF [200%] | 428h | 0,00% |  |  | 0,00% |  |  | 2026-07-02 |  |  |  |  |  | ESTRUTURAL |  | 303980/ 397647 | SS-767/2024 |  |  |  |  |  |  |  |  | ZONA A | SISTEMA C - ESTRUTURAS |
| 24 | 1.1.1.2.6.2 | Pintura | 53h | 2026-11-24 | 2026-11-27 | 30, 23 | 132.91d | 0d | PINTOR ESC-OFF [800%] | 424h | 0,00% |  |  | 0,00% |  |  | 2026-07-02 |  |  |  |  |  | ESTRUTURAL |  | 303980/ 397647 | SS-767/2024 |  |  |  |  |  |  |  |  | ZONA A | SISTEMA C - ESTRUTURAS |

| ID | WBS | Task | Type | Duration | Start | Finish | Predecessors | Total slack | Free slack | Resources | Work | Disciplina | Gerência Executante | Empresa Executante | Área/Sistema | Registro | Nº SS | Módulo | Nota/Item/Medida | Origem | TAG | Serviço Padrão | Status Planner | Prioridade do Serviço | % Previsto Calculado Prazo | Zona [Plano Pintura] | Sistema [Plano Pintura] | Piso/Setor | % Previsto Calculado Trabalho | Data de Status | Quant. m² |
| --- | --- | --- | --- | --- | --- | --- | --- | --- | --- | --- | --- | --- | --- | --- | --- | --- | --- | --- | --- | --- | --- | --- | --- | --- | --- | --- | --- | --- | --- | --- | --- |
| 25 | 1.1.1.2.7 | **APLICAÇÃO SISTEMA DE PINTURA AÇO CARBONO - TEMP. AMBIENTE** |  | 3.71d | 2026-09-01 | 2026-09-04 |  | 0d |  |  | 72h | PINT-PLANO | PPGM-I | ESTRUTURAL | ZPIN - Módulos para Pintura | 303980/ 397647 | SS-767/2024 | M23 | 15525151 | NOTA ZS | Diversos | PINTURA - EXECUÇÃO DE PLANOS DE PINTURA | PLANEJAMENTO ENCERRADO | C - POSTERGÁVEL | 0,00% | ZONA A | SISTEMA D - SUPORTES | Setor 1 | 0,00% | 2026-07-02 |  |
| 26 | 1.1.1.2.7.1 | Tratamento de Pintura |  | 18h | 2026-09-01 | 2026-09-02 | 20 | 0d |  | HIDROJATISTA-OFF [200%] | 36h |  |  | ESTRUTURAL |  | 303980/ 397647 | SS-767/2024 |  |  |  |  |  |  |  | 0,00% | ZONA A | SISTEMA D - SUPORTES |  | 0,00% | 2026-07-02 |  |
| 27 | 1.1.1.2.7.2 | Pintura |  | 18h | 2026-09-03 | 2026-09-04 | 21, 26 | 201.91d | 68.24d | PINTOR ESC-OFF [200%] | 36h |  |  | ESTRUTURAL |  | 303980/ 397647 | SS-767/2024 |  |  |  |  |  |  |  | 0,00% | ZONA A | SISTEMA D - SUPORTES |  | 0,00% | 2026-07-02 |  |
| 28 | 1.1.1.2.8 | **APLICAÇÃO SISTEMA DE PINTURA AÇO CARBONO - TEMP. AMBIENTE** |  | 82.71d | 2026-09-02 | 2026-11-23 |  | 0d |  |  | 4822h | PINT-PLANO | PPGM-I | ESTRUTURAL | ZPIN - Módulos para Pintura | 303980/ 397647 | SS-767/2024 | M23 | 15525151 | NOTA ZS | Diversos | PINTURA - EXECUÇÃO DE PLANOS DE PINTURA | PLANEJAMENTO ENCERRADO | C - POSTERGÁVEL | 0,00% | ZONA A | SISTEMA E - EQUIPAMENTOS | Setor 1 | 0,00% | 2026-07-02 |  |
| 29 | 1.1.1.2.8.1 | Tratamento de Pintura |  | 1205h | 2026-09-02 | 2026-11-12 | 26 | 0d |  | HIDROJATISTA-OFF [200%] | 2410h |  |  | ESTRUTURAL |  | 303980/ 397647 | SS-767/2024 |  |  |  |  |  |  |  | 0,00% | ZONA A | SISTEMA E - EQUIPAMENTOS |  | 0,00% | 2026-07-02 |  |
| 30 | 1.1.1.2.8.2 | Pintura |  | 201h | 2026-11-12 | 2026-11-23 | 27, 29 | 133.68d | 0d | PINTOR ESC-OFF [1200%] | 2412h |  |  | ESTRUTURAL |  | 303980/ 397647 | SS-767/2024 |  |  |  |  |  |  |  | 0,00% | ZONA A | SISTEMA E - EQUIPAMENTOS |  | 0,00% | 2026-07-02 |  |
| 31 | 1.1.1.2.9 | **APLICAÇÃO SISTEMA DE PINTURA AÇO CARBONO - TEMP. AMBIENTE** |  | 5.94d | 2026-11-24 | 2026-11-30 |  | 0d |  |  | 192h | PINT-PLANO | PPGM-I | ESTRUTURAL | ZPIN - Módulos para Pintura | 303980/ 397647 | SS-767/2024 | M23 | 15525151 | NOTA ZS | Diversos | PINTURA - EXECUÇÃO DE PLANOS DE PINTURA | PLANEJAMENTO ENCERRADO | C - POSTERGÁVEL | 0,00% | ZONA A | SISTEMA F - GUARDA CORPO | Setor 1 | 0,00% | 2026-07-02 |  |
| 32 | 1.1.1.2.9.1 | Tratamento de Pintura |  | 48h | 2026-11-24 | 2026-11-27 | 23 | 0d |  | HIDROJATISTA-OFF [200%] | 96h |  |  | ESTRUTURAL |  | 303980/ 397647 | SS-767/2024 |  |  |  |  |  |  |  | 0,00% | ZONA A | SISTEMA F - GUARDA CORPO |  | 0,00% | 2026-07-02 |  |
| 33 | 1.1.1.2.9.2 | Pintura |  | 48h | 2026-11-27 | 2026-11-30 | 24, 32 | 132.91d | 0d | PINTOR ESC-OFF [200%] | 96h |  |  | ESTRUTURAL |  | 303980/ 397647 | SS-767/2024 |  |  |  |  |  |  |  | 0,00% | ZONA A | SISTEMA F - GUARDA CORPO |  | 0,00% | 2026-07-02 |  |
| 34 | 1.1.1.2.10 | **APLICAÇÃO SISTEMA DE PINTURA AÇO CARBONO - TEMP. AMBIENTE** |  | 4.94d | 2026-11-27 | 2026-12-02 |  | 0d |  |  | 124h | PINT-PLANO | PPGM-I | ESTRUTURAL | ZPIN - Módulos para Pintura | 303980/ 397647 | SS-767/2024 | M23 | 15525151 | NOTA ZS | Diversos | PINTURA - EXECUÇÃO DE PLANOS DE PINTURA | PLANEJAMENTO ENCERRADO | C - POSTERGÁVEL | 0,00% | ZONA A | SISTEMA G - ESCADAS | Setor 1 | 0,00% | 2026-07-02 |  |
| 35 | 1.1.1.2.10.1 | Tratamento de Pintura |  | 31h | 2026-11-27 | 2026-11-29 | 32 | 0d |  | HIDROJATISTA-OFF [200%] | 62h |  |  | ESTRUTURAL |  | 303980/ 397647 | SS-767/2024 |  |  |  |  |  |  |  | 0,00% | ZONA A | SISTEMA G - ESCADAS |  | 0,00% | 2026-07-02 |  |
| 36 | 1.1.1.2.10.2 | Pintura |  | 31h | 2026-11-30 | 2026-12-02 | 33, 35 | 132.91d | 24.71d | PINTOR ESC-OFF [200%] | 62h |  |  | ESTRUTURAL |  | 303980/ 397647 | SS-767/2024 |  |  |  |  |  |  |  | 0,00% | ZONA A | SISTEMA G - ESCADAS |  | 0,00% | 2026-07-02 |  |
| 37 | 1.1.1.2.11 | **APLICAÇÃO SISTEMA DE PINTURA AÇO CARBONO - TEMP. AMBIENTE** |  | 34.76d | 2026-11-29 | 2027-01-03 |  | 0d |  |  | 1890h | PINT-PLANO | PPGM-I | ESTRUTURAL | ZPIN - Módulos para Pintura | 303980/ 397647 | SS-767/2024 | M23 | 15525151 | NOTA ZS | Diversos | PINTURA - EXECUÇÃO DE PLANOS DE PINTURA | PLANEJAMENTO ENCERRADO | C - POSTERGÁVEL | 0,00% | ZONA A | SISTEMA I - PISO | Setor 1 | 0,00% | 2026-07-02 |  |
| 38 | 1.1.1.2.11.1 | Tratamento de Pintura |  | 473h | 2026-11-29 | 2026-12-27 | 35 | 0d |  | HIDROJATISTA-OFF [200%] | 946h |  |  | ESTRUTURAL |  | 303980/ 397647 | SS-767/2024 |  |  |  |  |  |  |  | 0,00% | ZONA A | SISTEMA I - PISO |  | 0,00% | 2026-07-02 |  |
| 39 | 1.1.1.2.11.2 | Pintura |  | 118h | 2026-12-27 | 2027-01-03 | 36, 38 | 108.21d | 0.18d | PINTOR ESC-OFF [800%] | 944h |  |  | ESTRUTURAL |  | 303980/ 397647 | SS-767/2024 |  |  |  |  |  |  |  | 0,00% | ZONA A | SISTEMA I - PISO |  | 0,00% | 2026-07-02 |  |
| 40 | 1.1.1.3 | **PRESERVAÇÃO** |  | 90.82d | 2026-08-28 | 2026-11-27 |  | 144.97d |  |  | 740h |  |  | ESTRUTURAL |  | 303980/ 397647 | SS-767/2024 |  |  |  |  |  |  |  | 0,00% | ZONA A | SISTEMA J - PRESERVAÇÃO |  | 0,00% | 2026-07-02 | 73.41 |
| 41 | 1.1.1.3.1 | APLICAÇÃO SISTEMA DE PRESERVAÇAO AÇO CARBONO - TEMP. AMBIENTE |  | 58h | 2026-11-23 | 2026-11-27 | 12, 27, 30 | 144.97d | 36.94d | PINTOR ESC-OFF [800%] | 464h | PINT-PLANO | PPGM-I | ESTRUTURAL | ZPIN - Módulos para Pintura | 303980/ 397647 | SS-767/2024 | M23 | 15525151 | NOTA ZS | Diversos | PINTURA - EXECUÇÃO DE PLANOS DE PINTURA | PLANEJAMENTO ENCERRADO | C - POSTERGÁVEL | 0,00% | ZONA A | SISTEMA J - PRESERVAÇÃO | Setor 1 | 0,00% | 2026-07-02 | 46.03 |
| 42 | 1.1.1.3.2 | APLICAÇÃO SISTEMA DE PRESERVAÇAO AÇO CARBONO - ALTA TEMPERATURA |  | 43h | 2026-08-28 | 2026-08-31 | 9 | 233.26d | 125.24d | PINTOR ESC-OFF [200%] | 86h | PINT-PLANO | PPGM-I | ESTRUTURAL | ZPIN - Módulos para Pintura | 303980/ 397647 | SS-767/2024 | M23 | 15525151 | NOTA ZS | Diversos | PINTURA - EXECUÇÃO DE PLANOS DE PINTURA | PLANEJAMENTO ENCERRADO | C - POSTERGÁVEL | 0,00% | ZONA A | SISTEMA J - PRESERVAÇÃO | Setor 1 | 0,00% | 2026-07-02 | 8.56 |
| 43 | 1.1.1.3.3 | APLICAÇÃO SISTEMA DE PRESERVAÇÃO COBRE-NÍQUEL - TEMP. AMBIENTE |  | 29h | 2026-09-02 | 2026-09-03 | 15 | 229.5d | 121.47d | PINTOR ESC-OFF [400%] | 116h | PINT-PLANO | PPGM-I | ESTRUTURAL | ZPIN - Módulos para Pintura | 303980/ 397647 | SS-767/2024 | M23 | 15525151 | NOTA ZS | Diversos | PINTURA - EXECUÇÃO DE PLANOS DE PINTURA | PLANEJAMENTO ENCERRADO | C - POSTERGÁVEL | 0,00% | ZONA A | SISTEMA J - PRESERVAÇÃO | Setor 1 | 0,00% | 2026-07-02 | 11.4 |
| 44 | 1.1.1.3.4 | APLICAÇÃO SISTEMA DE PRESERVAÇÃO AÇO INOX - TEMP. AMBIENTE |  | 25h | 2026-09-03 | 2026-09-05 | 18 | 228.15d | 120.12d | PINTOR ESC-OFF [200%] | 50h | PINT-PLANO | PPGM-I | ESTRUTURAL | ZPIN - Módulos para Pintura | 303980/ 397647 | SS-767/2024 | M23 | 15525151 | NOTA ZS | Diversos | PINTURA - EXECUÇÃO DE PLANOS DE PINTURA | PLANEJAMENTO ENCERRADO | C - POSTERGÁVEL | 0,00% | ZONA A | SISTEMA J - PRESERVAÇÃO | Setor 1 | 0,00% | 2026-07-02 | 5.05 |
| 45 | 1.1.1.3.5 | APLICAÇÃO SISTEMA DE PRESERVAÇÃO SUPER DUPLEX - TEMP. AMBIENTE |  | 12h | 2026-09-03 | 2026-09-04 | 21 | 228.79d | 120.76d | PINTOR ESC-OFF [200%] | 24h | PINT-PLANO | PPGM-I | ESTRUTURAL | ZPIN - Módulos para Pintura | 303980/ 397647 | SS-767/2024 | M23 | 15525151 | NOTA ZS | Diversos | PINTURA - EXECUÇÃO DE PLANOS DE PINTURA | PLANEJAMENTO ENCERRADO | C - POSTERGÁVEL | 0,00% | ZONA A | SISTEMA J - PRESERVAÇÃO | Setor 1 | 0,00% | 2026-07-02 | 2.37 |
| 46 | 1.1.1.4 | **DESMONTAGEM DE ANDAIMES** |  | 4.12d | 2027-01-03 | 2027-01-07 |  | 108.03d |  |  | 144h |  |  | ESTRUTURAL |  | 303980/ 397647 | SS-767/2024 |  |  |  |  |  |  |  | 0,00% | ZONA A |  |  | 0,00% | 2026-07-02 |  |
| 47 | 1.1.1.4.1 | DESMONTAGEM DE ANDAIMES - ZONA A |  | 36h | 2027-01-03 | 2027-01-07 | 39, 41, 42, 43, 44, 45 | 108.03d | 0d | MONTADOR ANDAIME-OFF [400%] | 144h |  |  | ESTRUTURAL |  | 303980/ 397647 | SS-767/2024 |  |  |  |  |  |  |  | 0,00% | ZONA A |  |  | 0,00% | 2026-07-02 |  |
| 48 | 1.1.2 | EMISSÃO DOS RELATÓRIOS | milestone | 0h | 2027-01-07 | 2027-01-07 | 47 | 108.03d |  |  |  |  |  | ESTRUTURAL |  | 303980/ 397647 | SS-767/2024 |  |  |  |  |  |  |  | 0,00% |  |  |  | 0,00% | 2026-07-02 |  |

| ID | WBS | Task | Duration | Start | Finish | Predecessors | Total slack | Free slack | Resources | Work | Disciplina | Gerência Executante | Empresa Executante | Área/Sistema | Registro | Nº SS | Módulo | Nota/Item/Medida | Origem | TAG | Serviço Padrão | Status Planner | Prioridade do Serviço | % Previsto Calculado Prazo | Zona [Plano Pintura] | Piso/Setor | % Previsto Calculado Trabalho | Data de Status | Farol | Quant. m² | Sistema [Plano Pintura] |
| --- | --- | --- | --- | --- | --- | --- | --- | --- | --- | --- | --- | --- | --- | --- | --- | --- | --- | --- | --- | --- | --- | --- | --- | --- | --- | --- | --- | --- | --- | --- | --- |
| 49 | 1.1.3 | **ZONA B** | 248.09d | 2026-08-20 | 2027-05-25 |  | 0d |  |  | 8744h | PINT-PLANO | PPGM-I | ESTRUTURAL | ZPIN - Módulos para Pintura | 303980/ 397647 | SS-767/2024 | M23 | 15525151 | NOTA ZS | Diversos | PINTURA - EXECUÇÃO DE PLANOS DE PINTURA | PLANEJAMENTO ENCERRADO | C - POSTERGÁVEL | 0,00% | ZONA B | Setor 1 | 0,00% | 2026-07-02 | -1 | 97.1 |  |
| 50 | 1.1.3.1 | **MONTAGEM DO ACESSO** | 5.32d | 2026-08-20 | 2026-08-25 |  | 123.12d |  |  | 192h |  |  | ESTRUTURAL |  | 303980/ 397647 | SS-767/2024 |  |  |  |  |  |  |  | 0,00% | ZONA B |  | 0,00% | 2026-07-02 |  |  |  |
| 51 | 1.1.3.1.1 | MONTAGEM DE ANDAIMES - ZONA B | 48h | 2026-08-20 | 2026-08-25 | 5 | 123.12d | 0d | MONTADOR ANDAIME-OFF [400%] | 192h |  |  | ESTRUTURAL |  | 303980/ 397647 | SS-767/2024 |  |  |  |  |  |  |  | 0,00% | ZONA B |  | 0,00% | 2026-07-02 |  |  |  |
| 52 | 1.1.3.2 | **PINTURA** | 116.35d | 2026-12-27 | 2027-05-22 |  | 0d |  |  | 7486h |  |  | ESTRUTURAL |  | 303980/ 397647 | SS-767/2024 |  |  |  |  |  |  |  | 0,00% | ZONA B |  | 0,00% | 2026-07-02 |  |  |  |
| 53 | 1.1.3.2.1 | **APLICAÇÃO SISTEMA DE PINTURA AÇO CARBONO - ALTA TEMPERATURA** | 20.41d | 2026-12-27 | 2027-02-15 |  | 0d |  |  | 1108h | PINT-PLANO | PPGM-I | ESTRUTURAL | ZPIN - Módulos para Pintura | 303980/ 397647 | SS-767/2024 | M23 | 15525151 | NOTA ZS | Diversos | PINTURA - EXECUÇÃO DE PLANOS DE PINTURA | PLANEJAMENTO ENCERRADO | C - POSTERGÁVEL | 0,00% | ZONA B | Setor 1 | 0,00% | 2026-07-02 |  |  | SISTEMA B - TUBULAÇÕES |
| 54 | 1.1.3.2.1.1 | Tratamento de Superfície | 278h | 2026-12-27 | 2027-02-11 | 38, 51 | 0d |  | HIDROJATISTA-OFF [200%] | 556h |  |  | ESTRUTURAL |  | 303980/ 397647 | SS-767/2024 |  |  |  |  |  |  |  | 0,00% | ZONA B |  | 0,00% | 2026-07-02 |  |  | SISTEMA B - TUBULAÇÕES |
| 55 | 1.1.3.2.1.2 | Pintura | 69h | 2027-02-11 | 2027-02-15 | 54 | 64.41d | 0d | PINTOR ESC-OFF [800%] | 552h |  |  | ESTRUTURAL |  | 303980/ 397647 | SS-767/2024 |  |  |  |  |  |  |  | 0,00% | ZONA B |  | 0,00% | 2026-07-02 |  |  | SISTEMA B - TUBULAÇÕES |
| 56 | 1.1.3.2.2 | **APLICAÇÃO SISTEMA DE PINTURA AÇO CARBONO - TEMP. AMBIENTE** | 7.82d | 2027-02-11 | 2027-02-19 |  | 0d |  |  | 256h | PINT-PLANO | PPGM-I | ESTRUTURAL | ZPIN - Módulos para Pintura | 303980/ 397647 | SS-767/2024 | M23 | 15525151 | NOTA ZS | Diversos | PINTURA - EXECUÇÃO DE PLANOS DE PINTURA | PLANEJAMENTO ENCERRADO | C - POSTERGÁVEL | 0,00% | ZONA B | Setor 1 | 0,00% | 2026-07-02 |  |  | SISTEMA B - TUBULAÇÕES |
| 57 | 1.1.3.2.2.1 | Tratamento de Superfície | 64h | 2027-02-11 | 2027-02-15 | 54 | 0d |  | HIDROJATISTA-OFF [200%] | 128h |  |  | ESTRUTURAL |  | 303980/ 397647 | SS-767/2024 |  |  |  |  |  |  |  | 0,00% | ZONA B |  | 0,00% | 2026-07-02 |  |  | SISTEMA B - TUBULAÇÕES |
| 58 | 1.1.3.2.2.2 | Pintura | 64h | 2027-02-15 | 2027-02-19 | 55, 57 | 64.41d | 0d | PINTOR ESC-OFF [200%] | 128h |  |  | ESTRUTURAL |  | 303980/ 397647 | SS-767/2024 |  |  |  |  |  |  |  | 0,00% | ZONA B |  | 0,00% | 2026-07-02 |  |  | SISTEMA B - TUBULAÇÕES |
| 59 | 1.1.3.2.3 | **APLICAÇÃO SISTEMA DE PINTURA COBRE-NÍQUEL - TEMP. AMBIENTE** | 6.35d | 2027-02-15 | 2027-02-21 |  | 0d |  |  | 156h | PINT-PLANO | PPGM-I | ESTRUTURAL | ZPIN - Módulos para Pintura | 303980/ 397647 | SS-767/2024 | M23 | 15525151 | NOTA ZS | Diversos | PINTURA - EXECUÇÃO DE PLANOS DE PINTURA | PLANEJAMENTO ENCERRADO | C - POSTERGÁVEL | 0,00% | ZONA B | Setor 1 | 0,00% | 2026-07-02 |  |  | SISTEMA B - TUBULAÇÕES |
| 60 | 1.1.3.2.3.1 | Tratamento de Superfície | 39h | 2027-02-15 | 2027-02-17 | 57 | 0d |  | HIDROJATISTA-OFF [200%] | 78h |  |  | ESTRUTURAL |  | 303980/ 397647 | SS-767/2024 |  |  |  |  |  |  |  | 0,00% | ZONA B |  | 0,00% | 2026-07-02 |  |  | SISTEMA B - TUBULAÇÕES |
| 61 | 1.1.3.2.3.2 | Pintura | 39h | 2027-02-19 | 2027-02-21 | 58, 60 | 64.41d | 0d | PINTOR ESC-OFF [200%] | 78h |  |  | ESTRUTURAL |  | 303980/ 397647 | SS-767/2024 |  |  |  |  |  |  |  | 0,00% | ZONA B |  | 0,00% | 2026-07-02 |  |  | SISTEMA B - TUBULAÇÕES |
| 62 | 1.1.3.2.4 | **APLICAÇÃO SISTEMA DE PINTURA AÇO INOX - ALTA TEMPERATURA** | 4.18d | 2027-02-17 | 2027-02-21 |  | 0d |  |  | 8h | PINT-PLANO | PPGM-I | ESTRUTURAL | ZPIN - Módulos para Pintura | 303980/ 397647 | SS-767/2024 | M23 | 15525151 | NOTA ZS | Diversos | PINTURA - EXECUÇÃO DE PLANOS DE PINTURA | PLANEJAMENTO ENCERRADO | C - POSTERGÁVEL | 0,00% | ZONA B | Setor 1 | 0,00% | 2026-07-02 |  |  | SISTEMA B - TUBULAÇÕES |
| 63 | 1.1.3.2.4.1 | Tratamento de Superfície | 2h | 2027-02-17 | 2027-02-17 | 60 | 0d |  | HIDROJATISTA-OFF [200%] | 4h |  |  | ESTRUTURAL |  | 303980/ 397647 | SS-767/2024 |  |  |  |  |  |  |  | 0,00% | ZONA B |  | 0,00% | 2026-07-02 |  |  | SISTEMA B - TUBULAÇÕES |
| 64 | 1.1.3.2.4.2 | Pintura | 2h | 2027-02-21 | 2027-02-21 | 61, 63 | 64.41d | 0d | PINTOR ESC-OFF [200%] | 4h |  |  | ESTRUTURAL |  | 303980/ 397647 | SS-767/2024 |  |  |  |  |  |  |  | 0,00% | ZONA B |  | 0,00% | 2026-07-02 |  |  | SISTEMA B - TUBULAÇÕES |
| 65 | 1.1.3.2.5 | **APLICAÇÃO SISTEMA DE PINTURA AÇO INOX - TEMP. AMBIENTE** | 7.06d | 2027-02-17 | 2027-02-24 |  | 0d |  |  | 204h | PINT-PLANO | PPGM-I | ESTRUTURAL | ZPIN - Módulos para Pintura | 303980/ 397647 | SS-767/2024 | M23 | 15525151 | NOTA ZS | Diversos | PINTURA - EXECUÇÃO DE PLANOS DE PINTURA | PLANEJAMENTO ENCERRADO | C - POSTERGÁVEL | 0,00% | ZONA B | Setor 1 | 0,00% | 2026-07-02 |  |  | SISTEMA B - TUBULAÇÕES |
| 66 | 1.1.3.2.5.1 | Tratamento de Superfície | 51h | 2027-02-17 | 2027-02-20 | 63 | 0d |  | HIDROJATISTA-OFF [200%] | 102h |  |  | ESTRUTURAL |  | 303980/ 397647 | SS-767/2024 |  |  |  |  |  |  |  | 0,00% | ZONA B |  | 0,00% | 2026-07-02 |  |  | SISTEMA B - TUBULAÇÕES |
| 67 | 1.1.3.2.5.2 | Pintura | 51h | 2027-02-21 | 2027-02-24 | 64, 66 | 64.41d | 0d | PINTOR ESC-OFF [200%] | 102h |  |  | ESTRUTURAL |  | 303980/ 397647 | SS-767/2024 |  |  |  |  |  |  |  | 0,00% | ZONA B |  | 0,00% | 2026-07-02 |  |  | SISTEMA B - TUBULAÇÕES |
| 68 | 1.1.3.2.6 | **APLICAÇÃO SISTEMA DE PINTURA AÇO CARBONO - TEMP. AMBIENTE** | 37.82d | 2027-03-12 | 2027-04-19 |  | 0d |  |  | 2206h | PINT-PLANO | PPGM-I | ESTRUTURAL | ZPIN - Módulos para Pintura | 303980/ 397647 | SS-767/2024 | M23 | 15525151 | NOTA ZS | Diversos | PINTURA - EXECUÇÃO DE PLANOS DE PINTURA | PLANEJAMENTO ENCERRADO | C - POSTERGÁVEL | 0,00% | ZONA B | Setor 1 | 0,00% | 2026-07-02 |  |  | SISTEMA C - ESTRUTURAS |
| 69 | 1.1.3.2.6.1 | Tratamento de Superfície | 551h | 2027-03-12 | 2027-04-13 | 75 | 0d |  | HIDROJATISTA-OFF [200%] | 1102h |  |  | ESTRUTURAL |  | 303980/ 397647 | SS-767/2024 |  |  |  |  |  |  |  | 0,00% | ZONA B |  | 0,00% | 2026-07-02 |  |  | SISTEMA C - ESTRUTURAS |
| 70 | 1.1.3.2.6.2 | Pintura | 92h | 2027-04-13 | 2027-04-19 | 76, 69 | 21.18d | 0d | PINTOR ESC-OFF [1200%] | 1104h |  |  | ESTRUTURAL |  | 303980/ 397647 | SS-767/2024 |  |  |  |  |  |  |  | 0,00% | ZONA B |  | 0,00% | 2026-07-02 |  |  | SISTEMA C - ESTRUTURAS |
| 71 | 1.1.3.2.7 | **APLICAÇÃO SISTEMA DE PINTURA AÇO CARBONO - TEMP. AMBIENTE** | 13.18d | 2027-02-20 | 2027-03-05 |  | 0d |  |  | 718h | PINT-PLANO | PPGM-I | ESTRUTURAL | ZPIN - Módulos para Pintura | 303980/ 397647 | SS-767/2024 | M23 | 15525151 | NOTA ZS | Diversos | PINTURA - EXECUÇÃO DE PLANOS DE PINTURA | PLANEJAMENTO ENCERRADO | C - POSTERGÁVEL | 0,00% | ZONA B | Setor 1 | 0,00% | 2026-07-02 |  |  | SISTEMA D - SUPORTES |
| 72 | 1.1.3.2.7.1 | Tratamento de Superfície | 179h | 2027-02-20 | 2027-03-03 | 66 | 0d |  | HIDROJATISTA-OFF [200%] | 358h |  |  | ESTRUTURAL |  | 303980/ 397647 | SS-767/2024 |  |  |  |  |  |  |  | 0,00% | ZONA B |  | 0,00% | 2026-07-02 |  |  | SISTEMA D - SUPORTES |
| 73 | 1.1.3.2.7.2 | Pintura | 45h | 2027-03-03 | 2027-03-05 | 67, 72 | 57.94d | 6.65d | PINTOR ESC-OFF [800%] | 360h |  |  | ESTRUTURAL |  | 303980/ 397647 | SS-767/2024 |  |  |  |  |  |  |  | 0,00% | ZONA B |  | 0,00% | 2026-07-02 |  |  | SISTEMA D - SUPORTES |

| ID | WBS | Task | Type | Duration | Start | Finish | Predecessors | Total slack | Free slack | Resources | Work | Disciplina | Gerência Executante | Empresa Executante | Área/Sistema | Registro | Nº SS | Módulo | Nota/Item/Medida | Origem | TAG | Serviço Padrão | Status Planner | Prioridade do Serviço | % Previsto Calculado Prazo | Zona [Plano Pintura] | Sistema [Plano Pintura] | Piso/Setor | % Previsto Calculado Trabalho | Data de Status | Quant. m² | Farol |
| --- | --- | --- | --- | --- | --- | --- | --- | --- | --- | --- | --- | --- | --- | --- | --- | --- | --- | --- | --- | --- | --- | --- | --- | --- | --- | --- | --- | --- | --- | --- | --- | --- |
| 74 | 1.1.3.2.8 | **APLICAÇÃO SISTEMA DE PINTURA AÇO CARBONO - TEMP. AMBIENTE** |  | 11.59d | 2027-03-03 | 2027-03-14 |  | 0d |  |  | 628h | PINT-PLANO | PPGM-I | ESTRUTURAL | ZPIN - Módulos para Pintura | 303980/ 397647 | SS-767/2024 | M23 | 15525151 | NOTA ZS | Diversos | PINTURA - EXECUÇÃO DE PLANOS DE PINTURA | PLANEJAMENTO ENCERRADO | C - POSTERGÁVEL | 0,00% | ZONA B | SISTEMA E - EQUIPAMENTOS | Setor 1 | 0,00% | 2026-07-02 |  |  |
| 75 | 1.1.3.2.8.1 | Tratamento de Superfície |  | 158h | 2027-03-03 | 2027-03-12 | 72 | 0d |  | HIDROJATISTA-OFF [200%] | 316h |  |  | ESTRUTURAL |  | 303980/ 397647 | SS-767/2024 |  |  |  |  |  |  |  | 0,00% | ZONA B | SISTEMA E - EQUIPAMENTOS |  | 0,00% | 2026-07-02 |  |  |
| 76 | 1.1.3.2.8.2 | Pintura |  | 39h | 2027-03-12 | 2027-03-14 | 73, 75 | 51.29d | 0d | PINTOR ESC-OFF [800%] | 312h |  |  | ESTRUTURAL |  | 303980/ 397647 | SS-767/2024 |  |  |  |  |  |  |  | 0,00% | ZONA B | SISTEMA E - EQUIPAMENTOS |  | 0,00% | 2026-07-02 |  |  |
| 77 | 1.1.3.2.9 | **APLICAÇÃO SISTEMA DE PINTURA AÇO CARBONO - TEMP. AMBIENTE** |  | 7.12d | 2027-04-13 | 2027-04-21 |  | 0d |  |  | 232h | PINT-PLANO | PPGM-I | ESTRUTURAL | ZPIN - Módulos para Pintura | 303980/ 397647 | SS-767/2024 | M23 | 15525151 | NOTA ZS | Diversos | PINTURA - EXECUÇÃO DE PLANOS DE PINTURA | PLANEJAMENTO ENCERRADO | C - POSTERGÁVEL | 0,00% | ZONA B | SISTEMA F - GUARDA CORPO | Setor 1 | 0,00% | 2026-07-02 |  |  |
| 78 | 1.1.3.2.9.1 | Tratamento de Superfície |  | 58h | 2027-04-13 | 2027-04-17 | 69 | 0d |  | HIDROJATISTA-OFF [200%] | 116h |  |  | ESTRUTURAL |  | 303980/ 397647 | SS-767/2024 |  |  |  |  |  |  |  | 0,00% | ZONA B | SISTEMA F - GUARDA CORPO |  | 0,00% | 2026-07-02 |  |  |
| 79 | 1.1.3.2.9.2 | Pintura |  | 29h | 2027-04-19 | 2027-04-21 | 70, 78 | 21.18d | 0d | PINTOR ESC-OFF [400%] | 116h |  |  | ESTRUTURAL |  | 303980/ 397647 | SS-767/2024 |  |  |  |  |  |  |  | 0,00% | ZONA B | SISTEMA F - GUARDA CORPO |  | 0,00% | 2026-07-02 |  |  |
| 80 | 1.1.3.2.10 | **APLICAÇÃO SISTEMA DE PINTURA AÇO CARBONO - TEMP. AMBIENTE** |  | 4.12d | 2027-04-17 | 2027-04-21 |  | 0d |  |  | 28h | PINT-PLANO | PPGM-I | ESTRUTURAL | ZPIN - Módulos para Pintura | 303980/ 397647 | SS-767/2024 | M23 | 15525151 | NOTA ZS | Diversos | PINTURA - EXECUÇÃO DE PLANOS DE PINTURA | PLANEJAMENTO ENCERRADO | C - POSTERGÁVEL | 0,00% | ZONA B | SISTEMA G - ESCADAS | Setor 1 | 0,00% | 2026-07-02 |  |  |
| 81 | 1.1.3.2.10.1 | Tratamento de Superfície |  | 7h | 2027-04-17 | 2027-04-17 | 78 | 0d |  | HIDROJATISTA-OFF [200%] | 14h |  |  | ESTRUTURAL |  | 303980/ 397647 | SS-767/2024 |  |  |  |  |  |  |  | 0,00% | ZONA B | SISTEMA G - ESCADAS |  | 0,00% | 2026-07-02 |  |  |
| 82 | 1.1.3.2.10.2 | Pintura |  | 7h | 2027-04-21 | 2027-04-21 | 79, 81 | 21.18d | 0d | PINTOR ESC-OFF [200%] | 14h |  |  | ESTRUTURAL |  | 303980/ 397647 | SS-767/2024 |  |  |  |  |  |  |  | 0,00% | ZONA B | SISTEMA G - ESCADAS |  | 0,00% | 2026-07-02 |  |  |
| 83 | 1.1.3.2.11 | **APLICAÇÃO SISTEMA DE PINTURA AÇO CARBONO - TEMP. AMBIENTE** |  | 7.35d | 2027-04-17 | 2027-04-25 |  | 0d |  |  | 248h | PINT-PLANO | PPGM-I | ESTRUTURAL | ZPIN - Módulos para Pintura | 303980/ 397647 | SS-767/2024 | M23 | 15525151 | NOTA ZS | Diversos | PINTURA - EXECUÇÃO DE PLANOS DE PINTURA | PLANEJAMENTO ENCERRADO | C - POSTERGÁVEL | 0,00% | ZONA B | SISTEMA H - ANTEPARAS | Setor 1 | 0,00% | 2026-07-02 |  |  |
| 84 | 1.1.3.2.11.1 | Tratamento de Superfície |  | 62h | 2027-04-17 | 2027-04-21 | 81 | 0d |  | HIDROJATISTA-OFF [200%] | 124h |  |  | ESTRUTURAL |  | 303980/ 397647 | SS-767/2024 |  |  |  |  |  |  |  | 0,00% | ZONA B | SISTEMA H - ANTEPARAS |  | 0,00% | 2026-07-02 |  |  |
| 85 | 1.1.3.2.11.2 | Pintura |  | 62h | 2027-04-21 | 2027-04-25 | 82, 84 | 21.18d |  | PINTOR ESC-OFF [200%] | 124h |  |  | ESTRUTURAL |  | 303980/ 397647 | SS-767/2024 |  |  |  |  |  |  |  | 0,00% | ZONA B | SISTEMA H - ANTEPARAS |  | 0,00% | 2026-07-02 |  |  |
| 86 | 1.1.3.2.12 | **APLICAÇÃO SISTEMA DE PINTURA AÇO CARBONO - TEMP. AMBIENTE** |  | 31.12d | 2027-04-21 | 2027-05-22 |  | 0d |  |  | 1694h | PINT-PLANO | PPGM-I | ESTRUTURAL | ZPIN - Módulos para Pintura | 303980/ 397647 | SS-767/2024 | M23 | 15525151 | NOTA ZS | Diversos | PINTURA - EXECUÇÃO DE PLANOS DE PINTURA | PLANEJAMENTO ENCERRADO | C - POSTERGÁVEL | 0,00% | ZONA B | SISTEMA I - PISO | Setor 1 | 0,00% | 2026-07-02 |  |  |
| 87 | 1.1.3.2.12.1 | Tratamento de Superfície |  | 423h | 2027-04-21 | 2027-05-16 | 84 | 0d |  | HIDROJATISTA-OFF [200%] | 846h |  |  | ESTRUTURAL |  | 303980/ 397647 | SS-767/2024 |  |  |  |  |  |  |  | 0,00% | ZONA B | SISTEMA I - PISO |  | 0,00% | 2026-07-02 |  |  |
| 88 | 1.1.3.2.12.2 | Pintura |  | 106h | 2027-05-16 | 2027-05-22 | 85, 87 | 0d |  | PINTOR ESC-OFF [800%] | 848h |  |  | ESTRUTURAL |  | 303980/ 397647 | SS-767/2024 |  |  |  |  |  |  |  | 0,00% | ZONA B | SISTEMA I - PISO |  | 0,00% | 2026-07-02 |  |  |
| 89 | 1.1.3.3 | **PRESERVAÇÃO** |  | 26.47d | 2027-02-21 | 2027-03-20 |  | 63.41d |  |  | 970h |  |  | ESTRUTURAL |  | 303980/ 397647 | SS-767/2024 |  |  |  |  |  |  |  | 0,00% | ZONA B | SISTEMA J - PRESERVAÇÃO |  | 0,00% | 2026-07-02 | 97.1 |  |
| 90 | 1.1.3.3.1 | APLICAÇÃO SISTEMA DE PRESERVAÇAO AÇO CARBONO - TEMP. AMBIENTE |  | 90h | 2027-03-14 | 2027-03-20 | 55, 58, 73, 76 | 63.41d |  | PINTOR ESC-OFF [800%] | 720h | PINT-PLANO | PPGM-I | ESTRUTURAL | ZPIN - Módulos para Pintura | 303980/ 397647 | SS-767/2024 | M23 | 15525151 | NOTA ZS | Diversos | PINTURA - EXECUÇÃO DE PLANOS DE PINTURA | PLANEJAMENTO ENCERRADO | C - POSTERGÁVEL | 0,00% | ZONA B | SISTEMA J - PRESERVAÇÃO | Setor 1 | 0,00% | 2026-07-02 | 72.35 |  |
| 91 | 1.1.3.3.2 | APLICAÇÃO SISTEMA DE PRESERVAÇÃO COBRE-NÍQUEL - TEMP. AMBIENTE |  | 61h | 2027-02-21 | 2027-02-25 | 61 | 86.29d |  | PINTOR ESC-OFF [200%] | 122h | PINT-PLANO | PPGM-I | ESTRUTURAL | ZPIN - Módulos para Pintura | 303980/ 397647 | SS-767/2024 | M23 | 15525151 | NOTA ZS | Diversos | PINTURA - EXECUÇÃO DE PLANOS DE PINTURA | PLANEJAMENTO ENCERRADO | C - POSTERGÁVEL | 0,00% | ZONA B | SISTEMA J - PRESERVAÇÃO | Setor 1 | 0,00% | 2026-07-02 | 12.11 |  |
| 92 | 1.1.3.3.3 | APLICAÇÃO SISTEMA DE PRESERVAÇÃO AÇO INOX - TEMP. AMBIENTE |  | 39h | 2027-02-24 | 2027-02-27 | 64, 67 | 83d | 0d | PINTOR ESC-OFF [200%] | 78h | PINT-PLANO | PPGM-I | ESTRUTURAL | ZPIN - Módulos para Pintura | 303980/ 397647 | SS-767/2024 | M23 | 15525151 | NOTA ZS | Diversos | PINTURA - EXECUÇÃO DE PLANOS DE PINTURA | PLANEJAMENTO ENCERRADO | C - POSTERGÁVEL | 0,00% | ZONA B | SISTEMA J - PRESERVAÇÃO | Setor 1 | 0,00% | 2026-07-02 | 7.73 |  |
| 93 | 1.1.3.3.4 | APLICAÇÃO SISTEMA DE PRESERVAÇÃO SUPER DUPLEX - TEMP. AMBIENTE |  | 25h | 2027-02-27 | 2027-02-28 | 92 | 83d |  | PINTOR ESC-OFF [200%] | 50h | PINT-PLANO | PPGM-I | ESTRUTURAL | ZPIN - Módulos para Pintura | 303980/ 397647 | SS-767/2024 | M23 | 15525151 | NOTA ZS | Diversos | PINTURA - EXECUÇÃO DE PLANOS DE PINTURA | PLANEJAMENTO ENCERRADO | C - POSTERGÁVEL | 0,00% | ZONA B | SISTEMA J - PRESERVAÇÃO | Setor 1 | 0,00% | 2026-07-02 | 4.91 |  |
| 94 | 1.1.3.4 | **DESMONTAGEM DE ANDAIMES** |  | 2.91d | 2027-05-22 | 2027-05-25 |  | 0d |  |  | 96h |  |  | ESTRUTURAL |  | 303980/ 397647 | SS-767/2024 |  |  |  |  |  |  |  | 0,00% | ZONA B |  |  | 0,00% | 2026-07-02 |  |  |
| 95 | 1.1.3.4.1 | DESMONTAGEM DE ANDAIMES - ZONA B |  | 24h | 2027-05-22 | 2027-05-25 | 87, 88, 90, 91, 92, 93 | 0d |  | MONTADOR ANDAIME-OFF [400%] | 96h |  |  | ESTRUTURAL |  | 303980/ 397647 | SS-767/2024 |  |  |  |  |  |  |  | 0,00% | ZONA B |  |  | 0,00% | 2026-07-02 |  |  |
| 96 | 1.1.4 | EMISSÃO DOS RELATÓRIOS | milestone | 0h | 2027-05-25 | 2027-05-25 | 95 | 0d |  |  |  |  |  | ESTRUTURAL |  | 303980/ 397647 | SS-767/2024 |  |  |  |  |  |  |  | 0,00% |  |  |  | 0,00% | 2026-07-02 |  |  |
| 97 | 1.1.5 | **ZONA C** |  | 108.03d | 2026-08-25 | 2026-12-11 |  | 134.74d |  |  | 6662h | PINT-PLANO | PPGM-I | ESTRUTURAL | ZPIN - Módulos para Pintura | 303980/ 397647 | SS-767/2024 | M23 | 15525151 | NOTA ZS | Diversos | PINTURA - EXECUÇÃO DE PLANOS DE PINTURA | PLANEJAMENTO ENCERRADO | C - POSTERGÁVEL | 0,00% | ZONA C |  | Setor 1 | 0,00% | 2026-07-02 | 149.99 | -1 |
| 98 | 1.1.5.1 | **MONTAGEM DO ACESSO** |  | 5.82d | 2026-08-25 | 2026-08-31 |  | 134.29d |  |  | 192h |  |  | ESTRUTURAL |  | 303980/ 397647 | SS-767/2024 |  |  |  |  |  |  |  | 0,00% | ZONA C |  |  | 0,00% | 2026-07-02 |  |  |
| 99 | 1.1.5.1.1 | MONTAGEM DE ANDAIMES - ZONA C |  | 48h | 2026-08-25 | 2026-08-31 | 51 | 134.29d | 0d | MONTADOR ANDAIME-OFF [400%] | 192h |  |  | ESTRUTURAL |  | 303980/ 397647 | SS-767/2024 |  |  |  |  |  |  |  | 0,00% | ZONA C |  |  | 0,00% | 2026-07-02 |  |  |

| ID | WBS | Task | Duration | Start | Finish | Predecessors | Total slack | Free slack | Resources | Work | Empresa Executante | Registro | Nº SS | % Previsto Calculado Prazo | Zona [Plano Pintura] | % Previsto Calculado Trabalho | Data de Status | Disciplina | Gerência Executante | Área/Sistema | Módulo | Nota/Item/Medida | Origem | TAG | Serviço Padrão | Status Planner | Prioridade do Serviço | Sistema [Plano Pintura] | Piso/Setor |
| --- | --- | --- | --- | --- | --- | --- | --- | --- | --- | --- | --- | --- | --- | --- | --- | --- | --- | --- | --- | --- | --- | --- | --- | --- | --- | --- | --- | --- | --- |
| 100 | 1.1.5.2 | **PINTURA** | 99.41d | 2026-08-31 | 2026-12-08 |  | 134.62d |  |  | 6374h | ESTRUTURAL | 303980/ 397647 | SS-767/2024 | 0,00% | ZONA C | 0,00% | 2026-07-02 |  |  |  |  |  |  |  |  |  |  |  |  |
| 101 | 1.1.5.2.1 | **APLICAÇÃO SISTEMA DE PINTURA AÇO CARBONO - ALTA TEMPERATURA** | 19.47d | 2026-08-31 | 2026-09-19 |  | 134.62d |  |  | 1058h | ESTRUTURAL | 303980/ 397647 | SS-767/2024 | 0,00% | ZONA C | 0,00% | 2026-07-02 | PINT-PLANO | PPGM-I | ZPIN - Módulos para Pintura | M23 | 15525151 | NOTA ZS | Diversos | PINTURA - EXECUÇÃO DE PLANOS DE PINTURA | PLANEJAMENTO ENCERRADO | C - POSTERGÁVEL | SISTEMA B - TUBULAÇÕES | Setor 1 |
| 102 | 1.1.5.2.1.1 | Tratamento de Superfície | 265h | 2026-08-31 | 2026-09-16 | 99 | 134.62d | 0d | HIDROJATISTA-OFF [200%] | 530h | ESTRUTURAL | 303980/ 397647 | SS-767/2024 | 0,00% | ZONA C | 0,00% | 2026-07-02 |  |  |  |  |  |  |  |  |  |  | SISTEMA B - TUBULAÇÕES |  |
| 103 | 1.1.5.2.1.2 | Pintura | 66h | 2026-09-16 | 2026-09-19 | 102 | 171.09d | 0d | PINTOR ESC-OFF [800%] | 528h | ESTRUTURAL | 303980/ 397647 | SS-767/2024 | 0,00% | ZONA C | 0,00% | 2026-07-02 |  |  |  |  |  |  |  |  |  |  | SISTEMA B - TUBULAÇÕES |  |
| 104 | 1.1.5.2.2 | **APLICAÇÃO SISTEMA DE PINTURA AÇO CARBONO - TEMP. AMBIENTE** | 6.24d | 2026-09-16 | 2026-09-22 |  | 134.62d |  |  | 160h | ESTRUTURAL | 303980/ 397647 | SS-767/2024 | 0,00% | ZONA C | 0,00% | 2026-07-02 | PINT-PLANO | PPGM-I | ZPIN - Módulos para Pintura | M23 | 15525151 | NOTA ZS | Diversos | PINTURA - EXECUÇÃO DE PLANOS DE PINTURA | PLANEJAMENTO ENCERRADO | C - POSTERGÁVEL | SISTEMA B - TUBULAÇÕES | Setor 1 |
| 105 | 1.1.5.2.2.1 | Tratamento de Superfície | 40h | 2026-09-16 | 2026-09-18 | 102 | 134.62d | 0d | HIDROJATISTA-OFF [200%] | 80h | ESTRUTURAL | 303980/ 397647 | SS-767/2024 | 0,00% | ZONA C | 0,00% | 2026-07-02 |  |  |  |  |  |  |  |  |  |  | SISTEMA B - TUBULAÇÕES |  |
| 106 | 1.1.5.2.2.2 | Pintura | 40h | 2026-09-19 | 2026-09-22 | 103, 105 | 171.09d | 0.06d | PINTOR ESC-OFF [200%] | 80h | ESTRUTURAL | 303980/ 397647 | SS-767/2024 | 0,00% | ZONA C | 0,00% | 2026-07-02 |  |  |  |  |  |  |  |  |  |  | SISTEMA B - TUBULAÇÕES |  |
| 107 | 1.1.5.2.3 | **APLICAÇÃO SISTEMA DE PINTURA COBRE-NÍQUEL - TEMP. AMBIENTE** | 7.88d | 2026-09-18 | 2026-09-26 |  | 134.62d |  |  | 268h | ESTRUTURAL | 303980/ 397647 | SS-767/2024 | 0,00% | ZONA C | 0,00% | 2026-07-02 | PINT-PLANO | PPGM-I | ZPIN - Módulos para Pintura | M23 | 15525151 | NOTA ZS | Diversos | PINTURA - EXECUÇÃO DE PLANOS DE PINTURA | PLANEJAMENTO ENCERRADO | C - POSTERGÁVEL | SISTEMA B - TUBULAÇÕES | Setor 1 |
| 108 | 1.1.5.2.3.1 | Tratamento de Superfície | 67h | 2026-09-18 | 2026-09-22 | 105 | 134.62d | 0d | HIDROJATISTA-OFF [200%] | 134h | ESTRUTURAL | 303980/ 397647 | SS-767/2024 | 0,00% | ZONA C | 0,00% | 2026-07-02 |  |  |  |  |  |  |  |  |  |  | SISTEMA B - TUBULAÇÕES |  |
| 109 | 1.1.5.2.3.2 | Pintura | 67h | 2026-09-22 | 2026-09-26 | 106, 108 | 171.03d | 0d | PINTOR ESC-OFF [200%] | 134h | ESTRUTURAL | 303980/ 397647 | SS-767/2024 | 0,00% | ZONA C | 0,00% | 2026-07-02 |  |  |  |  |  |  |  |  |  |  | SISTEMA B - TUBULAÇÕES |  |
| 110 | 1.1.5.2.4 | **APLICAÇÃO SISTEMA DE PINTURA AÇO INOX - ALTA TEMPERATURA** | 6.47d | 2026-09-22 | 2026-09-28 |  | 134.62d |  |  | 172h | ESTRUTURAL | 303980/ 397647 | SS-767/2024 | 0,00% | ZONA C | 0,00% | 2026-07-02 | PINT-PLANO | PPGM-I | ZPIN - Módulos para Pintura | M23 | 15525151 | NOTA ZS | Diversos | PINTURA - EXECUÇÃO DE PLANOS DE PINTURA | PLANEJAMENTO ENCERRADO | C - POSTERGÁVEL | SISTEMA B - TUBULAÇÕES | Setor 1 |
| 111 | 1.1.5.2.4.1 | Tratamento de Superfície | 43h | 2026-09-22 | 2026-09-24 | 108 | 134.62d | 0d | HIDROJATISTA-OFF [200%] | 86h | ESTRUTURAL | 303980/ 397647 | SS-767/2024 | 0,00% | ZONA C | 0,00% | 2026-07-02 |  |  |  |  |  |  |  |  |  |  | SISTEMA B - TUBULAÇÕES |  |
| 112 | 1.1.5.2.4.2 | Pintura | 43h | 2026-09-26 | 2026-09-28 | 109, 111 | 171.03d | 0d | PINTOR ESC-OFF [200%] | 86h | ESTRUTURAL | 303980/ 397647 | SS-767/2024 | 0,00% | ZONA C | 0,00% | 2026-07-02 |  |  |  |  |  |  |  |  |  |  | SISTEMA B - TUBULAÇÕES |  |
| 113 | 1.1.5.2.5 | **APLICAÇÃO SISTEMA DE PINTURA SUPER DUPLEX - TEMP. AMBIENTE** | 4.06d | 2026-09-24 | 2026-09-28 |  | 134.62d |  |  | 8h | ESTRUTURAL | 303980/ 397647 | SS-767/2024 | 0,00% | ZONA C | 0,00% | 2026-07-02 | PINT-PLANO | PPGM-I | ZPIN - Módulos para Pintura | M23 | 15525151 | NOTA ZS | Diversos | PINTURA - EXECUÇÃO DE PLANOS DE PINTURA | PLANEJAMENTO ENCERRADO | C - POSTERGÁVEL | SISTEMA B - TUBULAÇÕES | Setor 1 |
| 114 | 1.1.5.2.5.1 | Tratamento de Superfície | 2h | 2026-09-24 | 2026-09-25 | 111 | 134.62d | 0d | HIDROJATISTA-OFF [200%] | 4h | ESTRUTURAL | 303980/ 397647 | SS-767/2024 | 0,00% | ZONA C | 0,00% | 2026-07-02 |  |  |  |  |  |  |  |  |  |  | SISTEMA B - TUBULAÇÕES |  |
| 115 | 1.1.5.2.5.2 | Pintura | 2h | 2026-09-28 | 2026-09-28 | 112, 114 | 171.03d | 0d | PINTOR ESC-OFF [200%] | 4h | ESTRUTURAL | 303980/ 397647 | SS-767/2024 | 0,00% | ZONA C | 0,00% | 2026-07-02 |  |  |  |  |  |  |  |  |  |  | SISTEMA B - TUBULAÇÕES |  |
| 116 | 1.1.5.2.6 | **APLICAÇÃO SISTEMA DE PINTURA AÇO CARBONO - TEMP. AMBIENTE** | 29.41d | 2026-10-10 | 2026-11-08 |  | 134.62d |  |  | 1600h | ESTRUTURAL | 303980/ 397647 | SS-767/2024 | 0,00% | ZONA C | 0,00% | 2026-07-02 | PINT-PLANO | PPGM-I | ZPIN - Módulos para Pintura | M23 | 15525151 | NOTA ZS | Diversos | PINTURA - EXECUÇÃO DE PLANOS DE PINTURA | PLANEJAMENTO ENCERRADO | C - POSTERGÁVEL | SISTEMA C - ESTRUTURAS | Setor 1 |
| 117 | 1.1.5.2.6.1 | Tratamento de Superfície | 400h | 2026-10-10 | 2026-11-03 | 126 | 134.62d | 0d | HIDROJATISTA-OFF [200%] | 800h | ESTRUTURAL | 303980/ 397647 | SS-767/2024 | 0,00% | ZONA C | 0,00% | 2026-07-02 |  |  |  |  |  |  |  |  |  |  | SISTEMA C - ESTRUTURAS |  |
| 118 | 1.1.5.2.6.2 | Pintura | 100h | 2026-11-03 | 2026-11-08 | 127, 117 | 151.44d | 0d | PINTOR ESC-OFF [800%] | 800h | ESTRUTURAL | 303980/ 397647 | SS-767/2024 | 0,00% | ZONA C | 0,00% | 2026-07-02 |  |  |  |  |  |  |  |  |  |  | SISTEMA C - ESTRUTURAS |  |
| 119 | 1.1.5.2.7 | **APLICAÇÃO SISTEMA DE PINTURA AÇO CARBONO - TEMP. AMBIENTE** | 10.35d | 2026-09-25 | 2026-10-05 |  | 134.62d |  |  | 352h | ESTRUTURAL | 303980/ 397647 | SS-767/2024 | 0,00% | ZONA C | 0,00% | 2026-07-02 | PINT-PLANO | PPGM-I | ZPIN - Módulos para Pintura | M23 | 15525151 | NOTA ZS | Diversos | PINTURA - EXECUÇÃO DE PLANOS DE PINTURA | PLANEJAMENTO ENCERRADO | C - POSTERGÁVEL | SISTEMA D - SUPORTES | Setor 1 |
| 120 | 1.1.5.2.7.1 | Tratamento de Superfície | 88h | 2026-09-25 | 2026-09-30 | 114 | 134.62d | 0d | HIDROJATISTA-OFF [200%] | 176h | ESTRUTURAL | 303980/ 397647 | SS-767/2024 | 0,00% | ZONA C | 0,00% | 2026-07-02 |  |  |  |  |  |  |  |  |  |  | SISTEMA D - SUPORTES |  |
| 121 | 1.1.5.2.7.2 | Pintura | 88h | 2026-09-30 | 2026-10-05 | 115, 120 | 169.79d | 0.59d | PINTOR ESC-OFF [200%] | 176h | ESTRUTURAL | 303980/ 397647 | SS-767/2024 | 0,00% | ZONA C | 0,00% | 2026-07-02 |  |  |  |  |  |  |  |  |  |  | SISTEMA D - SUPORTES |  |
| 122 | 1.1.5.2.8 | **APLICAÇÃO SISTEMA DE PINTURA AÇO CARBONO - TEMP. AMBIENTE** | 11.53d | 2026-09-30 | 2026-10-11 |  | 134.62d |  |  | 392h | ESTRUTURAL | 303980/ 397647 | SS-767/2024 | 0,00% | ZONA C | 0,00% | 2026-07-02 | PINT-PLANO | PPGM-I | ZPIN - Módulos para Pintura | M23 | 15525151 | NOTA ZS | Diversos | PINTURA - EXECUÇÃO DE PLANOS DE PINTURA | PLANEJAMENTO ENCERRADO | C - POSTERGÁVEL | SISTEMA E - EQUIPAMENTOS | Setor 1 |
| 123 | 1.1.5.2.8.1 | Tratamento de Superfície | 98h | 2026-09-30 | 2026-10-05 | 120 | 134.62d | 0d | HIDROJATISTA-OFF [200%] | 196h | ESTRUTURAL | 303980/ 397647 | SS-767/2024 | 0,00% | ZONA C | 0,00% | 2026-07-02 |  |  |  |  |  |  |  |  |  |  | SISTEMA E - EQUIPAMENTOS |  |
| 124 | 1.1.5.2.8.2 | Pintura | 98h | 2026-10-05 | 2026-10-11 | 121, 123 | 169.21d | 0d | PINTOR ESC-OFF [200%] | 196h | ESTRUTURAL | 303980/ 397647 | SS-767/2024 | 0,00% | ZONA C | 0,00% | 2026-07-02 |  |  |  |  |  |  |  |  |  |  | SISTEMA E - EQUIPAMENTOS |  |

| ID | WBS | Task | Type | Duration | Start | Finish | Predecessors | Total slack | Free slack | Resources | Work | Disciplina | Gerência Executante | Empresa Executante | Área/Sistema | Registro | Nº SS | Módulo | Nota/Item/Medida | Origem | TAG | Serviço Padrão | Status Planner | Prioridade do Serviço | % Previsto Calculado Prazo | Zona [Plano Pintura] | Sistema [Plano Pintura] | Piso/Setor | % Previsto Calculado Trabalho | Data de Status | Quant. m² | % da Etapa Concluída | QT SS's/REG. | RTI's Vencimento | Farol |
| --- | --- | --- | --- | --- | --- | --- | --- | --- | --- | --- | --- | --- | --- | --- | --- | --- | --- | --- | --- | --- | --- | --- | --- | --- | --- | --- | --- | --- | --- | --- | --- | --- | --- | --- | --- |
| 125 | 1.1.5.2.9 | **APLICAÇÃO SISTEMA DE PINTURA AÇO INOX - ALTA TEMPERATURA** |  | 10.29d | 2026-10-05 | 2026-10-16 |  | 134.62d |  |  | 308h | PINT-PLANO | PPGM-I | ESTRUTURAL | ZPIN - Módulos para Pintura | 303980/ 397647 | SS-767/2024 | M23 | 15525151 | NOTA ZS | Diversos | PINTURA - EXECUÇÃO DE PLANOS DE PINTURA | PLANEJAMENTO ENCERRADO | C - POSTERGÁVEL | 0,00% | ZONA C | SISTEMA E - EQUIPAMENTOS | Setor 1 | 0,00% | 2026-07-02 |  |  |  |  |  |
| 126 | 1.1.5.2.9.1 | Tratamento de Superfície |  | 77h | 2026-10-05 | 2026-10-10 | 123 | 134.62d | 0d | HIDROJATISTA-OFF [200%] | 154h |  |  | ESTRUTURAL |  | 303980/ 397647 | SS-767/2024 |  |  |  |  |  |  |  | 0,00% | ZONA C | SISTEMA E - EQUIPAMENTOS |  | 0,00% | 2026-07-02 |  |  |  |  |  |
| 127 | 1.1.5.2.9.2 | Pintura |  | 77h | 2026-10-11 | 2026-10-16 | 124, 126 | 169.21d | 0d | PINTOR ESC-OFF [200%] | 154h |  |  | ESTRUTURAL |  | 303980/ 397647 | SS-767/2024 |  |  |  |  |  |  |  | 0,00% | ZONA C | SISTEMA E - EQUIPAMENTOS |  | 0,00% | 2026-07-02 |  |  |  |  |  |
| 128 | 1.1.5.2.10 | **APLICAÇÃO SISTEMA DE PINTURA AÇO CARBONO - TEMP. AMBIENTE** |  | 10.53d | 2026-11-03 | 2026-11-13 |  | 134.62d |  |  | 316h | PINT-PLANO | PPGM-I | ESTRUTURAL | ZPIN - Módulos para Pintura | 303980/ 397647 | SS-767/2024 | M23 | 15525151 | NOTA ZS | Diversos | PINTURA - EXECUÇÃO DE PLANOS DE PINTURA | PLANEJAMENTO ENCERRADO | C - POSTERGÁVEL | 0,00% | ZONA C | SISTEMA F - GUARDA CORPO | Setor 1 | 0,00% | 2026-07-02 |  |  |  |  |  |
| 129 | 1.1.5.2.10.1 | Tratamento de Superfície |  | 79h | 2026-11-03 | 2026-11-07 | 117 | 134.62d | 0d | HIDROJATISTA-OFF [200%] | 158h |  |  | ESTRUTURAL |  | 303980/ 397647 | SS-767/2024 |  |  |  |  |  |  |  | 0,00% | ZONA C | SISTEMA F - GUARDA CORPO |  | 0,00% | 2026-07-02 |  |  |  |  |  |
| 130 | 1.1.5.2.10.2 | Pintura |  | 79h | 2026-11-08 | 2026-11-13 | 118, 129 | 151.44d | 0d | PINTOR ESC-OFF [200%] | 158h |  |  | ESTRUTURAL |  | 303980/ 397647 | SS-767/2024 |  |  |  |  |  |  |  | 0,00% | ZONA C | SISTEMA F - GUARDA CORPO |  | 0,00% | 2026-07-02 |  |  |  |  |  |
| 131 | 1.1.5.2.11 | **APLICAÇÃO SISTEMA DE PINTURA AÇO CARBONO - TEMP. AMBIENTE** |  | 7.76d | 2026-11-07 | 2026-11-15 |  | 134.62d |  |  | 128h | PINT-PLANO | PPGM-I | ESTRUTURAL | ZPIN - Módulos para Pintura | 303980/ 397647 | SS-767/2024 | M23 | 15525151 | NOTA ZS | Diversos | PINTURA - EXECUÇÃO DE PLANOS DE PINTURA | PLANEJAMENTO ENCERRADO | C - POSTERGÁVEL | 0,00% | ZONA C | SISTEMA G - ESCADAS | Setor 1 | 0,00% | 2026-07-02 |  |  |  |  |  |
| 132 | 1.1.5.2.11.1 | Tratamento de Superfície |  | 32h | 2026-11-07 | 2026-11-09 | 129 | 134.62d | 0d | HIDROJATISTA-OFF [200%] | 64h |  |  | ESTRUTURAL |  | 303980/ 397647 | SS-767/2024 |  |  |  |  |  |  |  | 0,00% | ZONA C | SISTEMA G - ESCADAS |  | 0,00% | 2026-07-02 |  |  |  |  |  |
| 133 | 1.1.5.2.11.2 | Pintura |  | 32h | 2026-11-13 | 2026-11-15 | 130, 132 | 151.44d | 0d | PINTOR ESC-OFF [200%] | 64h |  |  | ESTRUTURAL |  | 303980/ 397647 | SS-767/2024 |  |  |  |  |  |  |  | 0,00% | ZONA C | SISTEMA G - ESCADAS |  | 0,00% | 2026-07-02 |  |  |  |  |  |
| 134 | 1.1.5.2.12 | **APLICAÇÃO SISTEMA DE PINTURA AÇO CARBONO - TEMP. AMBIENTE** |  | 6.82d | 2026-11-09 | 2026-11-16 |  | 134.62d |  |  | 64h | PINT-PLANO | PPGM-I | ESTRUTURAL | ZPIN - Módulos para Pintura | 303980/ 397647 | SS-767/2024 | M23 | 15525151 | NOTA ZS | Diversos | PINTURA - EXECUÇÃO DE PLANOS DE PINTURA | PLANEJAMENTO ENCERRADO | C - POSTERGÁVEL | 0,00% | ZONA C | SISTEMA H - ANTEPARAS | Setor 1 | 0,00% | 2026-07-02 |  |  |  |  |  |
| 135 | 1.1.5.2.12.1 | Tratamento de Superfície |  | 16h | 2026-11-09 | 2026-11-10 | 132 | 134.62d | 0d | HIDROJATISTA-OFF [200%] | 32h |  |  | ESTRUTURAL |  | 303980/ 397647 | SS-767/2024 |  |  |  |  |  |  |  | 0,00% | ZONA C | SISTEMA H - ANTEPARAS |  | 0,00% | 2026-07-02 |  |  |  |  |  |
| 136 | 1.1.5.2.12.2 | Pintura |  | 16h | 2026-11-15 | 2026-11-16 | 133, 135 | 151.44d | 16.82d | PINTOR ESC-OFF [200%] | 32h |  |  | ESTRUTURAL |  | 303980/ 397647 | SS-767/2024 |  |  |  |  |  |  |  | 0,00% | ZONA C | SISTEMA H - ANTEPARAS |  | 0,00% | 2026-07-02 |  |  |  |  |  |
| 137 | 1.1.5.2.13 | **APLICAÇÃO SISTEMA DE PINTURA AÇO CARBONO - TEMP. AMBIENTE** |  | 28.41d | 2026-11-10 | 2026-12-08 |  | 134.62d |  |  | 1548h | PINT-PLANO | PPGM-I | ESTRUTURAL | ZPIN - Módulos para Pintura | 303980/ 397647 | SS-767/2024 | M23 | 15525151 | NOTA ZS | Diversos | PINTURA - EXECUÇÃO DE PLANOS DE PINTURA | PLANEJAMENTO ENCERRADO | C - POSTERGÁVEL | 0,00% | ZONA C | SISTEMA I - PISO | Setor 1 | 0,00% | 2026-07-02 |  |  |  |  |  |
| 138 | 1.1.5.2.13.1 | Tratamento de Superfície |  | 386h | 2026-11-10 | 2026-12-03 | 135 | 134.62d | 0d | HIDROJATISTA-OFF [200%] | 772h |  |  | ESTRUTURAL |  | 303980/ 397647 | SS-767/2024 |  |  |  |  |  |  |  | 0,00% | ZONA C | SISTEMA I - PISO |  | 0,00% | 2026-07-02 |  |  |  |  |  |
| 139 | 1.1.5.2.13.2 | Pintura |  | 97h | 2026-12-03 | 2026-12-08 | 136, 138 | 134.62d | 0.38d | PINTOR ESC-OFF [800%] | 776h |  |  | ESTRUTURAL |  | 303980/ 397647 | SS-767/2024 |  |  |  |  |  |  |  | 0,00% | ZONA C | SISTEMA I - PISO |  | 0,00% | 2026-07-02 |  |  |  |  |  |
| 140 | 1.1.5.3 | **PRESERVAÇÃO** |  | 24.24d | 2026-09-26 | 2026-10-20 |  | 183.97d |  |  |  |  |  | ESTRUTURAL |  | 303980/ 397647 | SS-767/2024 |  |  |  |  |  |  |  | 0,00% | ZONA C | SISTEMA J - PRESERVAÇÃO |  | 0,00% | 2026-07-02 | 149.99 |  |  |  |  |
| 141 | 1.1.5.3.1 | APLICAÇÃO SISTEMA DE PRESERVAÇAO AÇO CARBONO - ALTA TEMPERATURA |  | 150h | 2026-10-11 | 2026-10-20 | 103, 106, 121, 124 | 183.97d | 49.74d |  |  | PINT-PLANO | PPGM-I | ESTRUTURAL | ZPIN - Módulos para Pintura | 303980/ 397647 | SS-767/2024 | M23 | 15525151 | NOTA ZS | Diversos | PINTURA - EXECUÇÃO DE PLANOS DE PINTURA | PLANEJAMENTO ENCERRADO | C - POSTERGÁVEL | 0,00% | ZONA C | SISTEMA J - PRESERVAÇÃO | Setor 1 | 0,00% | 2026-07-02 | 119.73 |  |  |  |  |
| 142 | 1.1.5.3.2 | APLICAÇÃO SISTEMA DE PRESERVAÇÃO COBRE-NÍQUEL - TEMP. AMBIENTE |  | 87h | 2026-09-26 | 2026-10-01 | 109 | 203.09d | 68.85d |  |  | PINT-PLANO | PPGM-I | ESTRUTURAL | ZPIN - Módulos para Pintura | 303980/ 397647 | SS-767/2024 | M23 | 15525151 | NOTA ZS | Diversos | PINTURA - EXECUÇÃO DE PLANOS DE PINTURA | PLANEJAMENTO ENCERRADO | C - POSTERGÁVEL | 0,00% | ZONA C | SISTEMA J - PRESERVAÇÃO | Setor 1 | 0,00% | 2026-07-02 | 17.4 |  |  |  |  |
| 143 | 1.1.5.3.3 | APLICAÇÃO SISTEMA DE PRESERVAÇÃO AÇO INOX - ALTA TEMPERATURA |  | 48h | 2026-10-16 | 2026-10-19 | 112, 127 | 185.44d | 51.21d |  |  | PINT-PLANO | PPGM-I | ESTRUTURAL | ZPIN - Módulos para Pintura | 303980/ 397647 | SS-767/2024 | M23 | 15525151 | NOTA ZS | Diversos | PINTURA - EXECUÇÃO DE PLANOS DE PINTURA | PLANEJAMENTO ENCERRADO | C - POSTERGÁVEL | 0,00% | ZONA C | SISTEMA J - PRESERVAÇÃO | Setor 1 | 0,00% | 2026-07-02 | 9.64 |  |  |  |  |
| 144 | 1.1.5.3.4 | APLICAÇÃO SISTEMA DE PRESERVAÇÃO SUPER DUPLEX - TEMP. AMBIENTE |  | 16h | 2026-09-28 | 2026-09-29 | 115 | 204.62d | 70.38d |  |  | PINT-PLANO | PPGM-I | ESTRUTURAL | ZPIN - Módulos para Pintura | 303980/ 397647 | SS-767/2024 | M23 | 15525151 | NOTA ZS | Diversos | PINTURA - EXECUÇÃO DE PLANOS DE PINTURA | PLANEJAMENTO ENCERRADO | C - POSTERGÁVEL | 0,00% | ZONA C | SISTEMA J - PRESERVAÇÃO | Setor 1 | 0,00% | 2026-07-02 | 3.22 |  |  |  |  |
| 145 | 1.1.5.4 | **DESMONTAGEM DE ANDAIMES** |  | 2.41d | 2026-12-09 | 2026-12-11 |  | 134.24d |  |  | 96h |  |  | ESTRUTURAL |  | 303980/ 397647 | SS-767/2024 |  |  |  |  |  |  |  | 0,00% | ZONA C |  |  | 0,00% | 2026-07-02 |  |  |  |  |  |
| 146 | 1.1.5.4.1 | DESMONTAGEM DE ANDAIMES - ZONA C |  | 24h | 2026-12-09 | 2026-12-11 | 141, 142, 143, 144, 139 | 134.24d | 0d | MONTADOR ANDAIME-OFF [400%] | 96h |  |  | ESTRUTURAL |  | 303980/ 397647 | SS-767/2024 |  |  |  |  |  |  |  | 0,00% | ZONA C |  |  | 0,00% | 2026-07-02 |  |  |  |  |  |
| 147 | 1.1.6 | EMISSÃO DOS RELATÓRIOS | milestone | 0h | 2026-12-11 | 2026-12-11 | 146 | 134.74d |  |  |  |  |  | ESTRUTURAL |  | 303980/ 397647 | SS-767/2024 |  |  |  |  |  |  |  | 0,00% |  |  |  | 0,00% | 2026-07-02 |  | 0,00% | 1 |  |  |
| 148 | 1.199 | **SS-768/2024 - Registro: 302199 - Plano de Pintura para Módulo 27 - Helideck Área** |  | 206.06d | 2026-08-18 | 2027-04-11 |  | 44.09d |  |  | 15152h | PINT-PLANO | PPGM-I | ESTRUTURAL | ZPIN - MÓDULOS DA PLATAFORMA | 302199 | SS-768/2024 | M27 | 15294358 | NOTA ZS | Plano de Pintura para Módulo 27 - Helideck Área | PINTURA - EXECUÇÃO DE PLANOS DE PINTURA | POSTAGEM BOOK APROVADO MIO | A - NÃO POSTERGÁVEL (Carro Chefe) | 0,00% |  |  | HELIDECK | 0,00% | 2026-07-02 | 17.01 | 0,00% | 3 | 2024-06-19 | -1 |
| 149 | 1.2.1 | **ZONA A** |  | 29.97d | 2026-08-18 | 2026-09-17 |  | 44.18d |  |  | 1966h |  |  | ESTRUTURAL |  | 302199 | SS-768/2024 |  |  |  |  |  |  |  | 0,00% | ZONA A |  |  | 0,00% | 2026-07-02 | 9.65 |  |  |  |  |
| 150 | 1.2.1.1 | **MONTAGEM DO ACESSO** |  | 3.15d | 2026-08-18 | 2026-08-21 |  | 44.18d |  |  | 112h |  |  | ESTRUTURAL |  | 302199 | SS-768/2024 |  |  |  |  |  |  |  | 0,00% | ZONA A |  |  | 0,00% | 2026-07-02 |  |  |  |  |  |
| 151 | 1.2.1.1.1 | MONTAGEM DE ANDAIMES - ZONA A |  | 28h | 2026-08-18 | 2026-08-21 |  | 44.18d | 0d | MONTADOR ANDAIME-OFF [400%] | 112h |  |  | ESTRUTURAL |  | 302199 | SS-768/2024 |  |  |  |  |  |  |  | 0,00% | ZONA A |  |  | 0,00% | 2026-07-02 |  |  |  |  |  |

| ID | WBS | Task | Duration | Start | Finish | Predecessors | Total slack | Free slack | Resources | Work | Disciplina | Gerência Executante | Empresa Executante | Área/Sistema | Registro | Nº SS | Módulo | Nota/Item/Medida | Origem | TAG | Serviço Padrão | Status Planner | Prioridade do Serviço | % Previsto Calculado Prazo | Zona [Plano Pintura] | Piso/Setor | % Previsto Calculado Trabalho | RTI's Vencimento | Data de Status | Farol | Sistema [Plano Pintura] | Quant. m² |
| --- | --- | --- | --- | --- | --- | --- | --- | --- | --- | --- | --- | --- | --- | --- | --- | --- | --- | --- | --- | --- | --- | --- | --- | --- | --- | --- | --- | --- | --- | --- | --- | --- |
| 152 | 1.2.1.2 | **PINTURA** | 26.82d | 2026-08-21 | 2026-09-17 |  | 44.18d |  |  | 1702h | PINT-PLANO | PPGM-I | ESTRUTURAL | ZPIN - MÓDULOS DA PLATAFORMA | 302199 | SS-768/2024 | M27 | 15294358 | NOTA ZS | Plano de Pintura para Módulo 27 - Helideck Área | PINTURA - EXECUÇÃO DE PLANOS DE PINTURA | POSTAGEM BOOK APROVADO MIO | A - NÃO POSTERGÁVEL (Carro Chefe) | 0,00% | ZONA A | HELIDECK | 0,00% | 2024-06-19 | 2026-07-02 | -1 |  |  |
| 153 | 1.2.1.2.1 | **APLICAÇÃO SISTEMA DE PINTURA COBRE-NÍQUEL - TEMP. AMBIENTE** | 3.41d | 2026-08-21 | 2026-08-24 |  | 44.18d |  |  | 116h | PINT-PLANO | PPGM-I | ESTRUTURAL | ZPIN - MÓDULOS DA PLATAFORMA | 302199 | SS-768/2024 | M27 | 15294358 | NOTA ZS | Plano de Pintura para Módulo 27 - Helideck Área | PINTURA - EXECUÇÃO DE PLANOS DE PINTURA | POSTAGEM BOOK APROVADO MIO | A - NÃO POSTERGÁVEL (Carro Chefe) | 0,00% | ZONA A | HELIDECK | 0,00% | 2024-06-19 | 2026-07-02 |  | SISTEMA B - TUBULAÇÕES |  |
| 154 | 1.2.1.2.1.1 | Tratamento de Superfície | 29h | 2026-08-21 | 2026-08-23 | 151 | 44.18d | 0d | HIDROJATISTA-OFF [200%] | 58h |  |  | ESTRUTURAL |  | 302199 | SS-768/2024 |  |  |  |  |  |  |  | 0,00% | ZONA A |  | 0,00% |  | 2026-07-02 |  | SISTEMA B - TUBULAÇÕES |  |
| 155 | 1.2.1.2.1.2 | Pintura | 29h | 2026-08-23 | 2026-08-24 | 154 | 233d | 0d | PINTOR ESC-OFF [200%] | 58h |  |  | ESTRUTURAL |  | 302199 | SS-768/2024 |  |  |  |  |  |  |  | 0,00% | ZONA A |  | 0,00% |  | 2026-07-02 |  | SISTEMA B - TUBULAÇÕES |  |
| 156 | 1.2.1.2.2 | **APLICAÇÃO SISTEMA DE PINTURA AÇO CARBONO - TEMP. AMBIENTE** | 18.18d | 2026-08-24 | 2026-09-11 |  | 44.18d |  |  | 990h | PINT-PLANO | PPGM-I | ESTRUTURAL | ZPIN - MÓDULOS DA PLATAFORMA | 302199 | SS-768/2024 | M27 | 15294358 | NOTA ZS | Plano de Pintura para Módulo 27 - Helideck Área | PINTURA - EXECUÇÃO DE PLANOS DE PINTURA | POSTAGEM BOOK APROVADO MIO | A - NÃO POSTERGÁVEL (Carro Chefe) | 0,00% | ZONA A | HELIDECK | 0,00% | 2024-06-19 | 2026-07-02 |  | SISTEMA C - ESTRUTURAS |  |
| 157 | 1.2.1.2.2.1 | Tratamento de Superfície | 247h | 2026-08-24 | 2026-09-07 | 163 | 44.18d | 0d | HIDROJATISTA-OFF [200%] | 494h |  |  | ESTRUTURAL |  | 302199 | SS-768/2024 |  |  |  |  |  |  |  | 0,00% | ZONA A |  | 0,00% |  | 2026-07-02 |  | SISTEMA C - ESTRUTURAS |  |
| 158 | 1.2.1.2.2.2 | Pintura | 62h | 2026-09-07 | 2026-09-11 | 164, 157 | 220.18d | 0d | PINTOR ESC-OFF [800%] | 496h |  |  | ESTRUTURAL |  | 302199 | SS-768/2024 |  |  |  |  |  |  |  | 0,00% | ZONA A |  | 0,00% |  | 2026-07-02 |  | SISTEMA C - ESTRUTURAS |  |
| 159 | 1.2.1.2.3 | **APLICAÇÃO SISTEMA DE PINTURA AÇO CARBONO - TEMP. AMBIENTE** | 2.53d | 2026-08-23 | 2026-08-25 |  | 44.18d |  |  | 56h | PINT-PLANO | PPGM-I | ESTRUTURAL | ZPIN - MÓDULOS DA PLATAFORMA | 302199 | SS-768/2024 | M27 | 15294358 | NOTA ZS | Plano de Pintura para Módulo 27 - Helideck Área | PINTURA - EXECUÇÃO DE PLANOS DE PINTURA | POSTAGEM BOOK APROVADO MIO | A - NÃO POSTERGÁVEL (Carro Chefe) | 0,00% | ZONA A | HELIDECK | 0,00% | 2024-06-19 | 2026-07-02 |  | SISTEMA D - SUPORTES |  |
| 160 | 1.2.1.2.3.1 | Tratamento de Superfície | 14h | 2026-08-23 | 2026-08-23 | 154 | 44.18d | 0d | HIDROJATISTA-OFF [200%] | 28h |  |  | ESTRUTURAL |  | 302199 | SS-768/2024 |  |  |  |  |  |  |  | 0,00% | ZONA A |  | 0,00% |  | 2026-07-02 |  | SISTEMA D - SUPORTES |  |
| 161 | 1.2.1.2.3.2 | Pintura | 14h | 2026-08-24 | 2026-08-25 | 155, 160 | 233d | 0d | PINTOR ESC-OFF [200%] | 28h |  |  | ESTRUTURAL |  | 302199 | SS-768/2024 |  |  |  |  |  |  |  | 0,00% | ZONA A |  | 0,00% |  | 2026-07-02 |  | SISTEMA D - SUPORTES |  |
| 162 | 1.2.1.2.4 | **APLICAÇÃO SISTEMA DE PINTURA COBRE-NÍQUEL - TEMP. AMBIENTE** | 2.12d | 2026-08-23 | 2026-08-26 |  | 44.18d |  |  | 28h | PINT-PLANO | PPGM-I | ESTRUTURAL | ZPIN - MÓDULOS DA PLATAFORMA | 302199 | SS-768/2024 | M27 | 15294358 | NOTA ZS | Plano de Pintura para Módulo 27 - Helideck Área | PINTURA - EXECUÇÃO DE PLANOS DE PINTURA | POSTAGEM BOOK APROVADO MIO | A - NÃO POSTERGÁVEL (Carro Chefe) | 0,00% | ZONA A | HELIDECK | 0,00% | 2024-06-19 | 2026-07-02 |  | SISTEMA E - EQUIPAMENTOS |  |
| 163 | 1.2.1.2.4.1 | Tratamento de Superfície | 7h | 2026-08-23 | 2026-08-24 | 160 | 44.18d | 0d | HIDROJATISTA-OFF [200%] | 14h |  |  | ESTRUTURAL |  | 302199 | SS-768/2024 |  |  |  |  |  |  |  | 0,00% | ZONA A |  | 0,00% |  | 2026-07-02 |  | SISTEMA E - EQUIPAMENTOS |  |
| 164 | 1.2.1.2.4.2 | Pintura | 7h | 2026-08-25 | 2026-08-26 | 161, 163 | 233d | 1.35d | PINTOR ESC-OFF [200%] | 14h |  |  | ESTRUTURAL |  | 302199 | SS-768/2024 |  |  |  |  |  |  |  | 0,00% | ZONA A |  | 0,00% |  | 2026-07-02 |  | SISTEMA E - EQUIPAMENTOS |  |
| 165 | 1.2.1.2.5 | **APLICAÇÃO SISTEMA DE PINTURA AÇO CARBONO - TEMP. AMBIENTE** | 6.35d | 2026-09-07 | 2026-09-14 |  | 44.18d |  |  | 184h | PINT-PLANO | PPGM-I | ESTRUTURAL | ZPIN - MÓDULOS DA PLATAFORMA | 302199 | SS-768/2024 | M27 | 15294358 | NOTA ZS | Plano de Pintura para Módulo 27 - Helideck Área | PINTURA - EXECUÇÃO DE PLANOS DE PINTURA | POSTAGEM BOOK APROVADO MIO | A - NÃO POSTERGÁVEL (Carro Chefe) | 0,00% | ZONA A | HELIDECK | 0,00% | 2024-06-19 | 2026-07-02 |  | SISTEMA F - GUARDA CORPO |  |
| 166 | 1.2.1.2.5.1 | Tratamento de Superfície | 46h | 2026-09-07 | 2026-09-10 | 157 | 44.18d | 0d | HIDROJATISTA-OFF [200%] | 92h |  |  | ESTRUTURAL |  | 302199 | SS-768/2024 |  |  |  |  |  |  |  | 0,00% | ZONA A |  | 0,00% |  | 2026-07-02 |  | SISTEMA F - GUARDA CORPO |  |
| 167 | 1.2.1.2.5.2 | Pintura | 46h | 2026-09-11 | 2026-09-14 | 158, 166 | 220.18d | 0d | PINTOR ESC-OFF [200%] | 92h |  |  | ESTRUTURAL |  | 302199 | SS-768/2024 |  |  |  |  |  |  |  | 0,00% | ZONA A |  | 0,00% |  | 2026-07-02 |  | SISTEMA F - GUARDA CORPO |  |
| 168 | 1.2.1.2.6 | **APLICAÇÃO SISTEMA DE PINTURA AÇO CARBONO - TEMP. AMBIENTE** | 4.82d | 2026-09-10 | 2026-09-15 |  | 44.18d |  |  | 80h | PINT-PLANO | PPGM-I | ESTRUTURAL | ZPIN - MÓDULOS DA PLATAFORMA | 302199 | SS-768/2024 | M27 | 15294358 | NOTA ZS | Plano de Pintura para Módulo 27 - Helideck Área | PINTURA - EXECUÇÃO DE PLANOS DE PINTURA | POSTAGEM BOOK APROVADO MIO | A - NÃO POSTERGÁVEL (Carro Chefe) | 0,00% | ZONA A | HELIDECK | 0,00% | 2024-06-19 | 2026-07-02 |  | SISTEMA G - ESCADAS |  |
| 169 | 1.2.1.2.6.1 | Tratamento de Superfície | 20h | 2026-09-10 | 2026-09-11 | 166 | 44.18d | 0d | HIDROJATISTA-OFF [200%] | 40h |  |  | ESTRUTURAL |  | 302199 | SS-768/2024 |  |  |  |  |  |  |  | 0,00% | ZONA A |  | 0,00% |  | 2026-07-02 |  | SISTEMA G - ESCADAS |  |
| 170 | 1.2.1.2.6.2 | Pintura | 20h | 2026-09-14 | 2026-09-15 | 167, 169 | 220.18d | 0d | PINTOR ESC-OFF [200%] | 40h |  |  | ESTRUTURAL |  | 302199 | SS-768/2024 |  |  |  |  |  |  |  | 0,00% | ZONA A |  | 0,00% |  | 2026-07-02 |  | SISTEMA G - ESCADAS |  |
| 171 | 1.2.1.2.7 | **APLICAÇÃO SISTEMA DE PINTURA AÇO CARBONO - TEMP. AMBIENTE** | 5.47d | 2026-09-11 | 2026-09-17 |  | 44.18d |  |  | 248h | PINT-PLANO | PPGM-I | ESTRUTURAL | ZPIN - MÓDULOS DA PLATAFORMA | 302199 | SS-768/2024 | M27 | 15294358 | NOTA ZS | Plano de Pintura para Módulo 27 - Helideck Área | PINTURA - EXECUÇÃO DE PLANOS DE PINTURA | POSTAGEM BOOK APROVADO MIO | A - NÃO POSTERGÁVEL (Carro Chefe) | 0,00% | ZONA A | HELIDECK | 0,00% | 2024-06-19 | 2026-07-02 |  | SISTEMA I - PISO |  |
| 172 | 1.2.1.2.7.1 | Tratamento de Superfície | 62h | 2026-09-11 | 2026-09-15 | 169 | 44.18d | 0d | HIDROJATISTA-OFF [200%] | 124h |  |  | ESTRUTURAL |  | 302199 | SS-768/2024 |  |  |  |  |  |  |  | 0,00% | ZONA A |  | 0,00% |  | 2026-07-02 |  | SISTEMA I - PISO |  |
| 173 | 1.2.1.2.7.2 | Pintura | 31h | 2026-09-15 | 2026-09-17 | 170, 172 | 220.18d |  | PINTOR ESC-OFF [400%] | 124h |  |  | ESTRUTURAL |  | 302199 | SS-768/2024 |  |  |  |  |  |  |  | 0,00% | ZONA A |  | 0,00% |  | 2026-07-02 |  | SISTEMA I - PISO |  |
| 174 | 1.2.1.3 | **PRESERVAÇÃO** | 2.82d | 2026-08-25 | 2026-08-28 |  | 238.12d |  |  | 96h |  |  | ESTRUTURAL |  | 302199 | SS-768/2024 |  |  |  |  |  |  |  | 0,00% | ZONA A |  | 0,00% |  | 2026-07-02 |  | SISTEMA J - PRESERVAÇÃO | 9.65 |
| 175 | 1.2.1.3.1 | APLICAÇÃO SISTEMA DE PRESERVAÇAO AÇO CARBONO - TEMP. AMBIENTE | 30h | 2026-08-25 | 2026-08-27 | 161 | 238.12d | 0d | PINTOR ESC-OFF [200%] | 60h | PINT-PLANO | PPGM-I | ESTRUTURAL | ZPIN - MÓDULOS DA PLATAFORMA | 302199 | SS-768/2024 | M27 | 15294358 | NOTA ZS | Plano de Pintura para Módulo 27 - Helideck Área | PINTURA - EXECUÇÃO DE PLANOS DE PINTURA | POSTAGEM BOOK APROVADO MIO | A - NÃO POSTERGÁVEL (Carro Chefe) | 0,00% | ZONA A | HELIDECK | 0,00% | 2024-06-19 | 2026-07-02 |  | SISTEMA J - PRESERVAÇÃO | 5.97 |
| 176 | 1.2.1.3.2 | APLICAÇÃO SISTEMA DE PRESERVAÇÃO COBRE-NÍQUEL - TEMP. AMBIENTE | 18h | 2026-08-27 | 2026-08-28 | 155, 164, 175 | 238.12d | 0d | PINTOR ESC-OFF [200%] | 36h | PINT-PLANO | PPGM-I | ESTRUTURAL | ZPIN - MÓDULOS DA PLATAFORMA | 302199 | SS-768/2024 | M27 | 15294358 | NOTA ZS | Plano de Pintura para Módulo 27 - Helideck Área | PINTURA - EXECUÇÃO DE PLANOS DE PINTURA | POSTAGEM BOOK APROVADO MIO | A - NÃO POSTERGÁVEL (Carro Chefe) | 0,00% | ZONA A | HELIDECK | 0,00% | 2024-06-19 | 2026-07-02 |  | SISTEMA J - PRESERVAÇÃO | 3.68 |

| ID | WBS | Task | Type | Duration | Start | Finish | Predecessors | Total slack | Free slack | Resources | Work | Empresa Executante | Registro | Nº SS | % Previsto Calculado Prazo | Zona [Plano Pintura] | % Previsto Calculado Trabalho | Data de Status | Quant. m² | Disciplina | Gerência Executante | Área/Sistema | Módulo | Nota/Item/Medida | Origem | TAG | Serviço Padrão | Status Planner | Prioridade do Serviço | Piso/Setor | RTI's Vencimento | Farol | Sistema [Plano Pintura] |
| --- | --- | --- | --- | --- | --- | --- | --- | --- | --- | --- | --- | --- | --- | --- | --- | --- | --- | --- | --- | --- | --- | --- | --- | --- | --- | --- | --- | --- | --- | --- | --- | --- | --- |
| 177 | 1.2.1.4 | **DESMONTAGEM DE ANDAIMES** |  | 1.82d | 2026-08-28 | 2026-08-30 |  | 238.12d |  |  | 56h | ESTRUTURAL | 302199 | SS-768/2024 | 0,00% | ZONA A | 0,00% | 2026-07-02 |  |  |  |  |  |  |  |  |  |  |  |  |  |  |  |
| 178 | 1.2.1.4.1 | DESMONTAGEM DE ANDAIMES - ZONA A |  | 14h | 2026-08-28 | 2026-08-30 | 176 | 238.12d | 0d | MONTADOR ANDAIME-OFF [400%] | 56h | ESTRUTURAL | 302199 | SS-768/2024 | 0,00% | ZONA A | 0,00% | 2026-07-02 |  |  |  |  |  |  |  |  |  |  |  |  |  |  |  |
| 179 | 1.2.2 | EMISSÃO DOS RELATÓRIOS | milestone | 0h | 2026-08-30 | 2026-08-30 | 178 | 238.12d |  |  |  | ESTRUTURAL | 302199 | SS-768/2024 | 0,00% |  | 0,00% | 2026-07-02 |  |  |  |  |  |  |  |  |  |  |  |  |  |  |  |
| 180 | 1.2.3 | **ZONA B** |  | 50.24d | 2026-08-21 | 2026-10-10 |  | 66.26d |  |  | 1592h | ESTRUTURAL | 302199 | SS-768/2024 | 0,00% | ZONA B | 0,00% | 2026-07-02 | 1.37 |  |  |  |  |  |  |  |  |  |  |  |  |  |  |
| 181 | 1.2.3.1 | **MONTAGEM DO ACESSO** |  | 2.91d | 2026-08-21 | 2026-08-24 |  | 66.26d |  |  | 96h | ESTRUTURAL | 302199 | SS-768/2024 | 0,00% | ZONA B | 0,00% | 2026-07-02 |  |  |  |  |  |  |  |  |  |  |  |  |  |  |  |
| 182 | 1.2.3.1.1 | MONTAGEM DE ANDAIMES - ZONA B |  | 24h | 2026-08-21 | 2026-08-24 | 151 | 66.26d | 0d | MONTADOR ANDAIME-OFF [400%] | 96h | ESTRUTURAL | 302199 | SS-768/2024 | 0,00% | ZONA B | 0,00% | 2026-07-02 |  |  |  |  |  |  |  |  |  |  |  |  |  |  |  |
| 183 | 1.2.3.2 | **PINTURA** |  | 25.24d | 2026-09-15 | 2026-10-10 |  | 44.18d |  |  | 1434h | ESTRUTURAL | 302199 | SS-768/2024 | 0,00% | ZONA B | 0,00% | 2026-07-02 |  | PINT-PLANO | PPGM-I | ZPIN - MÓDULOS DA PLATAFORMA | M27 | 15294358 | NOTA ZS | Plano de Pintura para Módulo 27 - Helideck Área | PINTURA - EXECUÇÃO DE PLANOS DE PINTURA | POSTAGEM BOOK APROVADO MIO | A - NÃO POSTERGÁVEL (Carro Chefe) | HELIDECK | 2024-06-19 | -1 |  |
| 184 | 1.2.3.2.1 | **APLICAÇÃO SISTEMA DE PINTURA AÇO CARBONO - TEMP. AMBIENTE** |  | 1.76d | 2026-09-15 | 2026-09-17 |  | 44.18d |  |  | 60h | ESTRUTURAL | 302199 | SS-768/2024 | 0,00% | ZONA B | 0,00% | 2026-07-02 |  | PINT-PLANO | PPGM-I | ZPIN - MÓDULOS DA PLATAFORMA | M27 | 15294358 | NOTA ZS | Plano de Pintura para Módulo 27 - Helideck Área | PINTURA - EXECUÇÃO DE PLANOS DE PINTURA | POSTAGEM BOOK APROVADO MIO | A - NÃO POSTERGÁVEL (Carro Chefe) | HELIDECK | 2024-06-19 |  | SISTEMA B - TUBULAÇÕES |
| 185 | 1.2.3.2.1.1 | Tratamento de Superfície |  | 15h | 2026-09-15 | 2026-09-16 | 172, 182 | 44.18d | 0d | HIDROJATISTA-OFF [200%] | 30h | ESTRUTURAL | 302199 | SS-768/2024 | 0,00% | ZONA B | 0,00% | 2026-07-02 |  |  |  |  |  |  |  |  |  |  |  |  |  |  | SISTEMA B - TUBULAÇÕES |
| 186 | 1.2.3.2.1.2 | Pintura |  | 15h | 2026-09-16 | 2026-09-17 | 185 | 208.12d | 0d | PINTOR ESC-OFF [200%] | 30h | ESTRUTURAL | 302199 | SS-768/2024 | 0,00% | ZONA B | 0,00% | 2026-07-02 |  |  |  |  |  |  |  |  |  |  |  |  |  |  | SISTEMA B - TUBULAÇÕES |
| 187 | 1.2.3.2.2 | **APLICAÇÃO SISTEMA DE PINTURA COBRE-NÍQUEL - TEMP. AMBIENTE** |  | 1.18d | 2026-09-16 | 2026-09-17 |  | 44.18d |  |  | 20h | ESTRUTURAL | 302199 | SS-768/2024 | 0,00% | ZONA B | 0,00% | 2026-07-02 |  | PINT-PLANO | PPGM-I | ZPIN - MÓDULOS DA PLATAFORMA | M27 | 15294358 | NOTA ZS | Plano de Pintura para Módulo 27 - Helideck Área | PINTURA - EXECUÇÃO DE PLANOS DE PINTURA | POSTAGEM BOOK APROVADO MIO | A - NÃO POSTERGÁVEL (Carro Chefe) | HELIDECK | 2024-06-19 |  | SISTEMA B - TUBULAÇÕES |
| 188 | 1.2.3.2.2.1 | Tratamento de Superfície |  | 5h | 2026-09-16 | 2026-09-16 | 185 | 44.18d | 0d | HIDROJATISTA-OFF [200%] | 10h | ESTRUTURAL | 302199 | SS-768/2024 | 0,00% | ZONA B | 0,00% | 2026-07-02 |  |  |  |  |  |  |  |  |  |  |  |  |  |  | SISTEMA B - TUBULAÇÕES |
| 189 | 1.2.3.2.2.2 | Pintura |  | 5h | 2026-09-17 | 2026-09-17 | 186, 188 | 208.12d | 0d | PINTOR ESC-OFF [200%] | 10h | ESTRUTURAL | 302199 | SS-768/2024 | 0,00% | ZONA B | 0,00% | 2026-07-02 |  |  |  |  |  |  |  |  |  |  |  |  |  |  | SISTEMA B - TUBULAÇÕES |
| 190 | 1.2.3.2.3 | **APLICAÇÃO SISTEMA DE PINTURA AÇO INOX - ALTA TEMPERATURA** |  | 1d | 2026-09-16 | 2026-09-17 |  | 44.18d |  |  | 8h | ESTRUTURAL | 302199 | SS-768/2024 | 0,00% | ZONA B | 0,00% | 2026-07-02 |  | PINT-PLANO | PPGM-I | ZPIN - MÓDULOS DA PLATAFORMA | M27 | 15294358 | NOTA ZS | Plano de Pintura para Módulo 27 - Helideck Área | PINTURA - EXECUÇÃO DE PLANOS DE PINTURA | POSTAGEM BOOK APROVADO MIO | A - NÃO POSTERGÁVEL (Carro Chefe) | HELIDECK | 2024-06-19 |  | SISTEMA B - TUBULAÇÕES |
| 191 | 1.2.3.2.3.1 | Tratamento de Superfície |  | 2h | 2026-09-16 | 2026-09-16 | 188 | 44.18d | 0d | HIDROJATISTA-OFF [200%] | 4h | ESTRUTURAL | 302199 | SS-768/2024 | 0,00% | ZONA B | 0,00% | 2026-07-02 |  |  |  |  |  |  |  |  |  |  |  |  |  |  | SISTEMA B - TUBULAÇÕES |
| 192 | 1.2.3.2.3.2 | Pintura |  | 2h | 2026-09-17 | 2026-09-17 | 189, 191 | 208.12d | 11.35d | PINTOR ESC-OFF [200%] | 4h | ESTRUTURAL | 302199 | SS-768/2024 | 0,00% | ZONA B | 0,00% | 2026-07-02 |  |  |  |  |  |  |  |  |  |  |  |  |  |  | SISTEMA B - TUBULAÇÕES |
| 193 | 1.2.3.2.4 | **APLICAÇÃO SISTEMA DE PINTURA AÇO CARBONO - TEMP. AMBIENTE** |  | 18.41d | 2026-09-16 | 2026-10-05 |  | 44.18d |  |  | 818h | ESTRUTURAL | 302199 | SS-768/2024 | 0,00% | ZONA B | 0,00% | 2026-07-02 |  | PINT-PLANO | PPGM-I | ZPIN - MÓDULOS DA PLATAFORMA | M27 | 15294358 | NOTA ZS | Plano de Pintura para Módulo 27 - Helideck Área | PINTURA - EXECUÇÃO DE PLANOS DE PINTURA | POSTAGEM BOOK APROVADO MIO | A - NÃO POSTERGÁVEL (Carro Chefe) | HELIDECK | 2024-06-19 |  | SISTEMA C - ESTRUTURAS |
| 194 | 1.2.3.2.4.1 | Tratamento de Superfície |  | 205h | 2026-09-16 | 2026-09-28 | 191 | 44.18d | 0d | HIDROJATISTA-OFF [200%] | 410h | ESTRUTURAL | 302199 | SS-768/2024 | 0,00% | ZONA B | 0,00% | 2026-07-02 |  |  |  |  |  |  |  |  |  |  |  |  |  |  | SISTEMA C - ESTRUTURAS |
| 195 | 1.2.3.2.4.2 | Pintura |  | 102h | 2026-09-29 | 2026-10-05 | 198, 194 | 196.76d | 0d | PINTOR ESC-OFF [400%] | 408h | ESTRUTURAL | 302199 | SS-768/2024 | 0,00% | ZONA B | 0,00% | 2026-07-02 |  |  |  |  |  |  |  |  |  |  |  |  |  |  | SISTEMA C - ESTRUTURAS |
| 196 | 1.2.3.2.5 | **APLICAÇÃO SISTEMA DE PINTURA AÇO CARBONO - TEMP. AMBIENTE** |  | 0.35d | 2026-09-28 | 2026-09-29 |  | 44.18d |  |  | 12h | ESTRUTURAL | 302199 | SS-768/2024 | 0,00% | ZONA B | 0,00% | 2026-07-02 |  | PINT-PLANO | PPGM-I | ZPIN - MÓDULOS DA PLATAFORMA | M27 | 15294358 | NOTA ZS | Plano de Pintura para Módulo 27 - Helideck Área | PINTURA - EXECUÇÃO DE PLANOS DE PINTURA | POSTAGEM BOOK APROVADO MIO | A - NÃO POSTERGÁVEL (Carro Chefe) | HELIDECK | 2024-06-19 |  | SISTEMA D - SUPORTES |
| 197 | 1.2.3.2.5.1 | Tratamento de Superfície |  | 3h | 2026-09-28 | 2026-09-28 | 194 | 44.18d | 0d | HIDROJATISTA-OFF [200%] | 6h | ESTRUTURAL | 302199 | SS-768/2024 | 0,00% | ZONA B | 0,00% | 2026-07-02 |  |  |  |  |  |  |  |  |  |  |  |  |  |  | SISTEMA D - SUPORTES |
| 198 | 1.2.3.2.5.2 | Pintura |  | 3h | 2026-09-28 | 2026-09-29 | 192, 197 | 196.76d | 0d | PINTOR ESC-OFF [200%] | 6h | ESTRUTURAL | 302199 | SS-768/2024 | 0,00% | ZONA B | 0,00% | 2026-07-02 |  |  |  |  |  |  |  |  |  |  |  |  |  |  | SISTEMA D - SUPORTES |
| 199 | 1.2.3.2.6 | **APLICAÇÃO SISTEMA DE PINTURA AÇO CARBONO - TEMP. AMBIENTE** |  | 8.24d | 2026-09-28 | 2026-10-07 |  | 44.18d |  |  | 140h | ESTRUTURAL | 302199 | SS-768/2024 | 0,00% | ZONA B | 0,00% | 2026-07-02 |  | PINT-PLANO | PPGM-I | ZPIN - MÓDULOS DA PLATAFORMA | M27 | 15294358 | NOTA ZS | Plano de Pintura para Módulo 27 - Helideck Área | PINTURA - EXECUÇÃO DE PLANOS DE PINTURA | POSTAGEM BOOK APROVADO MIO | A - NÃO POSTERGÁVEL (Carro Chefe) | HELIDECK | 2024-06-19 |  | SISTEMA F - GUARDA CORPO |
| 200 | 1.2.3.2.6.1 | Tratamento de Superfície |  | 35h | 2026-09-28 | 2026-10-01 | 197 | 44.18d | 0d | HIDROJATISTA-OFF [200%] | 70h | ESTRUTURAL | 302199 | SS-768/2024 | 0,00% | ZONA B | 0,00% | 2026-07-02 |  |  |  |  |  |  |  |  |  |  |  |  |  |  | SISTEMA F - GUARDA CORPO |
| 201 | 1.2.3.2.6.2 | Pintura |  | 35h | 2026-10-05 | 2026-10-07 | 195, 200 | 196.76d | 0d | PINTOR ESC-OFF [200%] | 70h | ESTRUTURAL | 302199 | SS-768/2024 | 0,00% | ZONA B | 0,00% | 2026-07-02 |  |  |  |  |  |  |  |  |  |  |  |  |  |  | SISTEMA F - GUARDA CORPO |

| ID | WBS | Task | Type | Duration | Start | Finish | Predecessors | Total slack | Free slack | Resources | Work | Disciplina | Gerência Executante | Empresa Executante | Área/Sistema | Registro | Nº SS | Módulo | Nota/Item/Medida | Origem | TAG | Serviço Padrão | Status Planner | Prioridade do Serviço | % Previsto Calculado Prazo | Zona [Plano Pintura] | Sistema [Plano Pintura] | Piso/Setor | % Previsto Calculado Trabalho | RTI's Vencimento | Data de Status | Quant. m² | Farol |
| --- | --- | --- | --- | --- | --- | --- | --- | --- | --- | --- | --- | --- | --- | --- | --- | --- | --- | --- | --- | --- | --- | --- | --- | --- | --- | --- | --- | --- | --- | --- | --- | --- | --- |
| 202 | 1.2.3.2.7 | **APLICAÇÃO SISTEMA DE PINTURA AÇO CARBONO - TEMP. AMBIENTE** |  | 7.59d | 2026-10-01 | 2026-10-08 |  | 44.18d |  |  | 96h | PINT-PLANO | PPGM-I | ESTRUTURAL | ZPIN - MÓDULOS DA PLATAFORMA | 302199 | SS-768/2024 | M27 | 15294358 | NOTA ZS | Plano de Pintura para Módulo 27 - Helideck Área | PINTURA - EXECUÇÃO DE PLANOS DE PINTURA | POSTAGEM BOOK APROVADO MIO | A - NÃO POSTERGÁVEL (Carro Chefe) | 0,00% | ZONA B | SISTEMA G - ESCADAS | HELIDECK | 0,00% | 2024-06-19 | 2026-07-02 |  |  |
| 203 | 1.2.3.2.7.1 | Tratamento de Superfície |  | 24h | 2026-10-01 | 2026-10-02 | 200 | 44.18d | 0d | HIDROJATISTA-OFF [200%] | 48h |  |  | ESTRUTURAL |  | 302199 | SS-768/2024 |  |  |  |  |  |  |  | 0,00% | ZONA B | SISTEMA G - ESCADAS |  | 0,00% |  | 2026-07-02 |  |  |
| 204 | 1.2.3.2.7.2 | Pintura |  | 24h | 2026-10-07 | 2026-10-08 | 201, 203 | 196.76d | 0d | PINTOR ESC-OFF [200%] | 48h |  |  | ESTRUTURAL |  | 302199 | SS-768/2024 |  |  |  |  |  |  |  | 0,00% | ZONA B | SISTEMA G - ESCADAS |  | 0,00% |  | 2026-07-02 |  |  |
| 205 | 1.2.3.2.8 | **APLICAÇÃO SISTEMA DE PINTURA AÇO CARBONO - TEMP. AMBIENTE** |  | 8.24d | 2026-10-02 | 2026-10-10 |  | 44.18d |  |  | 280h | PINT-PLANO | PPGM-I | ESTRUTURAL | ZPIN - MÓDULOS DA PLATAFORMA | 302199 | SS-768/2024 | M27 | 15294358 | NOTA ZS | Plano de Pintura para Módulo 27 - Helideck Área | PINTURA - EXECUÇÃO DE PLANOS DE PINTURA | POSTAGEM BOOK APROVADO MIO | A - NÃO POSTERGÁVEL (Carro Chefe) | 0,00% | ZONA B | SISTEMA I - PISO | HELIDECK | 0,00% | 2024-06-19 | 2026-07-02 |  |  |
| 206 | 1.2.3.2.8.1 | Tratamento de Superfície |  | 70h | 2026-10-02 | 2026-10-06 | 203 | 44.18d | 0d | HIDROJATISTA-OFF [200%] | 140h |  |  | ESTRUTURAL |  | 302199 | SS-768/2024 |  |  |  |  |  |  |  | 0,00% | ZONA B | SISTEMA I - PISO |  | 0,00% |  | 2026-07-02 |  |  |
| 207 | 1.2.3.2.8.2 | Pintura |  | 35h | 2026-10-08 | 2026-10-10 | 204, 206 | 196.76d |  | PINTOR ESC-OFF [400%] | 140h |  |  | ESTRUTURAL |  | 302199 | SS-768/2024 |  |  |  |  |  |  |  | 0,00% | ZONA B | SISTEMA I - PISO |  | 0,00% |  | 2026-07-02 |  |  |
| 208 | 1.2.3.3 | **PRESERVAÇÃO** |  | 0.41d | 2026-09-29 | 2026-09-29 |  | 206.18d |  |  | 14h |  |  | ESTRUTURAL |  | 302199 | SS-768/2024 |  |  |  |  |  |  |  | 0,00% | ZONA B | SISTEMA J - PRESERVAÇÃO |  | 0,00% |  | 2026-07-02 | 1.37 |  |
| 209 | 1.2.3.3.1 | APLICAÇÃO SISTEMA DE PRESERVAÇAO AÇO CARBONO - TEMP. AMBIENTE |  | 5h | 2026-09-29 | 2026-09-29 | 186, 198 | 206.18d | 0d | PINTOR ESC-OFF [200%] | 10h | PINT-PLANO | PPGM-I | ESTRUTURAL | ZPIN - MÓDULOS DA PLATAFORMA | 302199 | SS-768/2024 | M27 | 15294358 | NOTA ZS | Plano de Pintura para Módulo 27 - Helideck Área | PINTURA - EXECUÇÃO DE PLANOS DE PINTURA | POSTAGEM BOOK APROVADO MIO | A - NÃO POSTERGÁVEL (Carro Chefe) | 0,00% | ZONA B | SISTEMA J - PRESERVAÇÃO | HELIDECK | 0,00% | 2024-06-19 | 2026-07-02 | 1.05 |  |
| 210 | 1.2.3.3.2 | APLICAÇÃO SISTEMA DE PRESERVAÇÃO AÇO INOX - ALTA TEMPERATURA |  | 2h | 2026-09-29 | 2026-09-29 | 189, 192, 209 | 206.18d | 0d | PINTOR ESC-OFF [200%] | 4h | PINT-PLANO | PPGM-I | ESTRUTURAL | ZPIN - MÓDULOS DA PLATAFORMA | 302199 | SS-768/2024 | M27 | 15294358 | NOTA ZS | Plano de Pintura para Módulo 27 - Helideck Área | PINTURA - EXECUÇÃO DE PLANOS DE PINTURA | POSTAGEM BOOK APROVADO MIO | A - NÃO POSTERGÁVEL (Carro Chefe) | 0,00% | ZONA B | SISTEMA J - PRESERVAÇÃO | HELIDECK | 0,00% | 2024-06-19 | 2026-07-02 | 0.32 |  |
| 211 | 1.2.3.4 | **DESMONTAGEM DE ANDAIMES** |  | 1.21d | 2026-09-29 | 2026-09-30 |  | 206.18d |  |  | 48h |  |  | ESTRUTURAL |  | 302199 | SS-768/2024 |  |  |  |  |  |  |  | 0,00% | ZONA B |  |  | 0,00% |  | 2026-07-02 |  |  |
| 212 | 1.2.3.4.1 | DESMONTAGEM DE ANDAIMES - ZONA B |  | 12h | 2026-09-29 | 2026-09-30 | 210 | 206.18d | 0d | MONTADOR ANDAIME-OFF [400%] | 48h |  |  | ESTRUTURAL |  | 302199 | SS-768/2024 |  |  |  |  |  |  |  | 0,00% | ZONA B |  |  | 0,00% |  | 2026-07-02 |  |  |
| 213 | 1.2.4 | EMISSÃO DOS RELATÓRIOS | milestone | 0h | 2026-09-30 | 2026-09-30 | 212 | 206.68d |  |  |  |  |  | ESTRUTURAL |  | 302199 | SS-768/2024 |  |  |  |  |  |  |  | 0,00% |  |  |  | 0,00% |  | 2026-07-02 |  |  |
| 214 | 1.2.5 | **ZONA C** |  | 69.06d | 2026-08-24 | 2026-11-01 |  | 87.03d |  |  | 1456h | PINT-PLANO | PPGM-I | ESTRUTURAL | ZPIN - MÓDULOS DA PLATAFORMA | 302199 | SS-768/2024 | M27 | 15294358 | NOTA ZS | Plano de Pintura para Módulo 27 - Helideck Área | PINTURA - EXECUÇÃO DE PLANOS DE PINTURA | POSTAGEM BOOK APROVADO MIO | A - NÃO POSTERGÁVEL (Carro Chefe) | 0,00% | ZONA C |  | HELIDECK | 0,00% | 2024-06-19 | 2026-07-02 | 1.29 | -1 |
| 215 | 1.2.5.1 | **MONTAGEM DO ACESSO** |  | 0.35d | 2026-08-24 | 2026-08-24 |  | 87.03d |  |  | 24h |  |  | ESTRUTURAL |  | 302199 | SS-768/2024 |  |  |  |  |  |  |  | 0,00% | ZONA C |  |  | 0,00% |  | 2026-07-02 |  |  |
| 216 | 1.2.5.1.1 | MONTAGEM DE ANDAIMES - ZONA C |  | 6h | 2026-08-24 | 2026-08-24 | 182 | 87.03d | 0d | MONTADOR ANDAIME-OFF [400%] | 24h |  |  | ESTRUTURAL |  | 302199 | SS-768/2024 |  |  |  |  |  |  |  | 0,00% | ZONA C |  |  | 0,00% |  | 2026-07-02 |  |  |
| 217 | 1.2.5.2 | **PINTURA** |  | 25.18d | 2026-10-06 | 2026-10-31 |  | 44.18d |  |  | 1408h |  |  | ESTRUTURAL |  | 302199 | SS-768/2024 |  |  |  |  |  |  |  | 0,00% | ZONA C |  |  | 0,00% |  | 2026-07-02 |  |  |
| 218 | 1.2.5.2.1 | **APLICAÇÃO SISTEMA DE PINTURA AÇO CARBONO - TEMP. AMBIENTE** |  | 4.12d | 2026-10-06 | 2026-10-10 |  | 44.18d |  |  | 140h | PINT-PLANO | PPGM-I | ESTRUTURAL | ZPIN - MÓDULOS DA PLATAFORMA | 302199 | SS-768/2024 | M27 | 15294358 | NOTA ZS | Plano de Pintura para Módulo 27 - Helideck Área | PINTURA - EXECUÇÃO DE PLANOS DE PINTURA | POSTAGEM BOOK APROVADO MIO | A - NÃO POSTERGÁVEL (Carro Chefe) | 0,00% | ZONA C | SISTEMA B - TUBULAÇÕES | HELIDECK | 0,00% | 2024-06-19 | 2026-07-02 |  |  |
| 219 | 1.2.5.2.1.1 | Tratamento de Superfície |  | 35h | 2026-10-06 | 2026-10-08 | 216, 206 | 44.18d | 0d | HIDROJATISTA-OFF [200%] | 70h |  |  | ESTRUTURAL |  | 302199 | SS-768/2024 |  |  |  |  |  |  |  | 0,00% | ZONA C | SISTEMA B - TUBULAÇÕES |  | 0,00% |  | 2026-07-02 |  |  |
| 220 | 1.2.5.2.1.2 | Pintura |  | 35h | 2026-10-08 | 2026-10-10 | 219 | 190.97d | 0d | PINTOR ESC-OFF [200%] | 70h |  |  | ESTRUTURAL |  | 302199 | SS-768/2024 |  |  |  |  |  |  |  | 0,00% | ZONA C | SISTEMA B - TUBULAÇÕES |  | 0,00% |  | 2026-07-02 |  |  |
| 221 | 1.2.5.2.2 | **APLICAÇÃO SISTEMA DE PINTURA AÇO CARBONO - TEMP. AMBIENTE** |  | 22.53d | 2026-10-09 | 2026-10-31 |  | 175.03d |  |  | 1228h | PINT-PLANO | PPGM-I | ESTRUTURAL | ZPIN - MÓDULOS DA PLATAFORMA | 302199 | SS-768/2024 | M27 | 15294358 | NOTA ZS | Plano de Pintura para Módulo 27 - Helideck Área | PINTURA - EXECUÇÃO DE PLANOS DE PINTURA | POSTAGEM BOOK APROVADO MIO | A - NÃO POSTERGÁVEL (Carro Chefe) | 0,00% | ZONA C | SISTEMA C - ESTRUTURAS | HELIDECK | 0,00% | 2024-06-19 | 2026-07-02 |  |  |
| 222 | 1.2.5.2.2.1 | Tratamento de Superfície |  | 306h | 2026-10-09 | 2026-10-27 | 225 | 175.03d | 0d | HIDROJATISTA-OFF [200%] | 612h |  |  | ESTRUTURAL |  | 302199 | SS-768/2024 |  |  |  |  |  |  |  | 0,00% | ZONA C | SISTEMA C - ESTRUTURAS |  | 0,00% |  | 2026-07-02 |  |  |
| 223 | 1.2.5.2.2.2 | Pintura |  | 77h | 2026-10-27 | 2026-10-31 | 226, 222 | 175.03d | 0d | PINTOR ESC-OFF [800%] | 616h |  |  | ESTRUTURAL |  | 302199 | SS-768/2024 |  |  |  |  |  |  |  | 0,00% | ZONA C | SISTEMA C - ESTRUTURAS |  | 0,00% |  | 2026-07-02 |  |  |
| 224 | 1.2.5.2.3 | **APLICAÇÃO SISTEMA DE PINTURA AÇO CARBONO - TEMP. AMBIENTE** |  | 2.65d | 2026-10-08 | 2026-10-11 |  | 44.18d |  |  | 40h | PINT-PLANO | PPGM-I | ESTRUTURAL | ZPIN - MÓDULOS DA PLATAFORMA | 302199 | SS-768/2024 | M27 | 15294358 | NOTA ZS | Plano de Pintura para Módulo 27 - Helideck Área | PINTURA - EXECUÇÃO DE PLANOS DE PINTURA | POSTAGEM BOOK APROVADO MIO | A - NÃO POSTERGÁVEL (Carro Chefe) | 0,00% | ZONA C | SISTEMA D - SUPORTES | HELIDECK | 0,00% | 2024-06-19 | 2026-07-02 |  |  |
| 225 | 1.2.5.2.3.1 | Tratamento de Superfície |  | 10h | 2026-10-08 | 2026-10-09 | 219 | 44.18d | 0d | HIDROJATISTA-OFF [200%] | 20h |  |  | ESTRUTURAL |  | 302199 | SS-768/2024 |  |  |  |  |  |  |  | 0,00% | ZONA C | SISTEMA D - SUPORTES |  | 0,00% |  | 2026-07-02 |  |  |
| 226 | 1.2.5.2.3.2 | Pintura |  | 10h | 2026-10-10 | 2026-10-11 | 220, 225 | 190.97d | 0d | PINTOR ESC-OFF [200%] | 20h |  |  | ESTRUTURAL |  | 302199 | SS-768/2024 |  |  |  |  |  |  |  | 0,00% | ZONA C | SISTEMA D - SUPORTES |  | 0,00% |  | 2026-07-02 |  |  |

| ID | WBS | Task | Type | Duration | Start | Finish | Predecessors | Total slack | Free slack | Resources | Work | Empresa Executante | Registro | Nº SS | % Previsto Calculado Prazo | Zona [Plano Pintura] | Sistema [Plano Pintura] | % Previsto Calculado Trabalho | Data de Status | Quant. m² | Disciplina | Gerência Executante | Área/Sistema | Módulo | Nota/Item/Medida | Origem | TAG | Serviço Padrão | Status Planner | Prioridade do Serviço | Piso/Setor | RTI's Vencimento | Farol |
| --- | --- | --- | --- | --- | --- | --- | --- | --- | --- | --- | --- | --- | --- | --- | --- | --- | --- | --- | --- | --- | --- | --- | --- | --- | --- | --- | --- | --- | --- | --- | --- | --- | --- |
| 227 | 1.2.5.3 | **PRESERVAÇÃO** |  | 0.35d | 2026-10-11 | 2026-10-11 |  | 195.15d |  |  | 12h | ESTRUTURAL | 302199 | SS-768/2024 | 0,00% | ZONA C | SISTEMA J - PRESERVAÇÃO | 0,00% | 2026-07-02 | 1.29 |  |  |  |  |  |  |  |  |  |  |  |  |  |
| 228 | 1.2.5.3.1 | APLICAÇÃO SISTEMA DE PRESERVAÇAO AÇO CARBONO - TEMP. AMBIENTE |  | 6h | 2026-10-11 | 2026-10-11 | 220, 226 | 195.15d | 20.12d | PINTOR ESC-OFF [200%] | 12h | ESTRUTURAL | 302199 | SS-768/2024 | 0,00% | ZONA C | SISTEMA J - PRESERVAÇÃO | 0,00% | 2026-07-02 | 1.29 | PINT-PLANO | PPGM-I | ZPIN - MÓDULOS DA PLATAFORMA | M27 | 15294358 | NOTA ZS | Plano de Pintura para Módulo 27 - Helideck Área | PINTURA - EXECUÇÃO DE PLANOS DE PINTURA | POSTAGEM BOOK APROVADO MIO | A - NÃO POSTERGÁVEL (Carro Chefe) | HELIDECK | 2024-06-19 |  |
| 229 | 1.2.5.4 | **DESMONTAGEM DE ANDAIMES** |  | 0.68d | 2026-10-31 | 2026-11-01 |  | 175.03d |  |  | 12h | ESTRUTURAL | 302199 | SS-768/2024 | 0,00% | ZONA C |  | 0,00% | 2026-07-02 |  |  |  |  |  |  |  |  |  |  |  |  |  |  |
| 230 | 1.2.5.4.1 | DESMONTAGEM DE ANDAIMES - ZONA C |  | 3h | 2026-10-31 | 2026-11-01 | 223, 228 | 175.03d | 0d | MONTADOR ANDAIME-OFF [400%] | 12h | ESTRUTURAL | 302199 | SS-768/2024 | 0,00% | ZONA C |  | 0,00% | 2026-07-02 |  |  |  |  |  |  |  |  |  |  |  |  |  |  |
| 231 | 1.2.6 | EMISSÃO DOS RELATÓRIOS | milestone | 0h | 2026-11-01 | 2026-11-01 | 230 | 175.03d |  |  |  | ESTRUTURAL | 302199 | SS-768/2024 | 0,00% |  |  | 0,00% | 2026-07-02 |  |  |  |  |  |  |  |  |  |  |  |  |  |  |
| 232 | 1.2.7 | **ZONA D** |  | 77.09d | 2026-08-24 | 2026-11-09 |  | 88.71d |  |  | 1850h | ESTRUTURAL | 302199 | SS-768/2024 | 0,00% | ZONA D |  | 0,00% | 2026-07-02 | 1.6 | PINT-PLANO | PPGM-I | ZPIN - MÓDULOS DA PLATAFORMA | M27 | 15294358 | NOTA ZS | Plano de Pintura para Módulo 27 - Helideck Área | PINTURA - EXECUÇÃO DE PLANOS DE PINTURA | POSTAGEM BOOK APROVADO MIO | A - NÃO POSTERGÁVEL (Carro Chefe) | HELIDECK | 2024-06-19 | -1 |
| 233 | 1.2.7.1 | **MONTAGEM DO ACESSO** |  | 0.97d | 2026-08-24 | 2026-08-25 |  | 88.71d |  |  | 32h | ESTRUTURAL | 302199 | SS-768/2024 | 0,00% | ZONA D |  | 0,00% | 2026-07-02 |  |  |  |  |  |  |  |  |  |  |  |  |  |  |
| 234 | 1.2.7.1.1 | MONTAGEM DE ANDAIMES - ZONA D |  | 8h | 2026-08-24 | 2026-08-25 | 216 | 88.71d | 0d | MONTADOR ANDAIME-OFF [400%] | 32h | ESTRUTURAL | 302199 | SS-768/2024 | 0,00% | ZONA D |  | 0,00% | 2026-07-02 |  |  |  |  |  |  |  |  |  |  |  |  |  |  |
| 235 | 1.2.7.2 | **PINTURA** |  | 31.59d | 2026-10-09 | 2026-11-09 |  | 44.18d |  |  | 1786h | ESTRUTURAL | 302199 | SS-768/2024 | 0,00% | ZONA D |  | 0,00% | 2026-07-02 |  |  |  |  |  |  |  |  |  |  |  |  |  |  |
| 236 | 1.2.7.2.1 | **APLICAÇÃO SISTEMA DE PINTURA AÇO CARBONO - TEMP. AMBIENTE** |  | 4.35d | 2026-10-09 | 2026-10-13 |  | 44.18d |  |  | 148h | ESTRUTURAL | 302199 | SS-768/2024 | 0,00% | ZONA D | SISTEMA B - TUBULAÇÕES | 0,00% | 2026-07-02 |  | PINT-PLANO | PPGM-I | ZPIN - MÓDULOS DA PLATAFORMA | M27 | 15294358 | NOTA ZS | Plano de Pintura para Módulo 27 - Helideck Área | PINTURA - EXECUÇÃO DE PLANOS DE PINTURA | POSTAGEM BOOK APROVADO MIO | A - NÃO POSTERGÁVEL (Carro Chefe) | HELIDECK | 2024-06-19 |  |
| 237 | 1.2.7.2.1.1 | Tratamento de Superfície |  | 37h | 2026-10-09 | 2026-10-11 | 234, 225 | 44.18d | 0d | HIDROJATISTA-OFF [200%] | 74h | ESTRUTURAL | 302199 | SS-768/2024 | 0,00% | ZONA D | SISTEMA B - TUBULAÇÕES | 0,00% | 2026-07-02 |  |  |  |  |  |  |  |  |  |  |  |  |  |  |
| 238 | 1.2.7.2.1.2 | Pintura |  | 37h | 2026-10-11 | 2026-10-13 | 237 | 185.82d | 0d | PINTOR ESC-OFF [200%] | 74h | ESTRUTURAL | 302199 | SS-768/2024 | 0,00% | ZONA D | SISTEMA B - TUBULAÇÕES | 0,00% | 2026-07-02 |  |  |  |  |  |  |  |  |  |  |  |  |  |  |
| 239 | 1.2.7.2.2 | **APLICAÇÃO SISTEMA DE PINTURA AÇO CARBONO - TEMP. AMBIENTE** |  | 26.71d | 2026-10-12 | 2026-11-07 |  | 44.18d |  |  | 1454h | ESTRUTURAL | 302199 | SS-768/2024 | 0,00% | ZONA D | SISTEMA C - ESTRUTURAS | 0,00% | 2026-07-02 |  | PINT-PLANO | PPGM-I | ZPIN - MÓDULOS DA PLATAFORMA | M27 | 15294358 | NOTA ZS | Plano de Pintura para Módulo 27 - Helideck Área | PINTURA - EXECUÇÃO DE PLANOS DE PINTURA | POSTAGEM BOOK APROVADO MIO | A - NÃO POSTERGÁVEL (Carro Chefe) | HELIDECK | 2024-06-19 |  |
| 240 | 1.2.7.2.2.1 | Tratamento de Superfície |  | 363h | 2026-10-12 | 2026-11-02 | 243 | 44.18d | 0d | HIDROJATISTA-OFF [200%] | 726h | ESTRUTURAL | 302199 | SS-768/2024 | 0,00% | ZONA D | SISTEMA C - ESTRUTURAS | 0,00% | 2026-07-02 |  |  |  |  |  |  |  |  |  |  |  |  |  |  |
| 241 | 1.2.7.2.2.2 | Pintura |  | 91h | 2026-11-02 | 2026-11-07 | 244, 240 | 166.65d | 0d | PINTOR ESC-OFF [800%] | 728h | ESTRUTURAL | 302199 | SS-768/2024 | 0,00% | ZONA D | SISTEMA C - ESTRUTURAS | 0,00% | 2026-07-02 |  |  |  |  |  |  |  |  |  |  |  |  |  |  |
| 242 | 1.2.7.2.3 | **APLICAÇÃO SISTEMA DE PINTURA AÇO CARBONO - TEMP. AMBIENTE** |  | 2.82d | 2026-10-11 | 2026-10-14 |  | 44.18d |  |  | 44h | ESTRUTURAL | 302199 | SS-768/2024 | 0,00% | ZONA D | SISTEMA D - SUPORTES | 0,00% | 2026-07-02 |  | PINT-PLANO | PPGM-I | ZPIN - MÓDULOS DA PLATAFORMA | M27 | 15294358 | NOTA ZS | Plano de Pintura para Módulo 27 - Helideck Área | PINTURA - EXECUÇÃO DE PLANOS DE PINTURA | POSTAGEM BOOK APROVADO MIO | A - NÃO POSTERGÁVEL (Carro Chefe) | HELIDECK | 2024-06-19 |  |
| 243 | 1.2.7.2.3.1 | Tratamento de Superfície |  | 11h | 2026-10-11 | 2026-10-12 | 237 | 44.18d | 0d | HIDROJATISTA-OFF [200%] | 22h | ESTRUTURAL | 302199 | SS-768/2024 | 0,00% | ZONA D | SISTEMA D - SUPORTES | 0,00% | 2026-07-02 |  |  |  |  |  |  |  |  |  |  |  |  |  |  |
| 244 | 1.2.7.2.3.2 | Pintura |  | 11h | 2026-10-13 | 2026-10-14 | 238, 243 | 185.82d | 0d | PINTOR ESC-OFF [200%] | 22h | ESTRUTURAL | 302199 | SS-768/2024 | 0,00% | ZONA D | SISTEMA D - SUPORTES | 0,00% | 2026-07-02 |  |  |  |  |  |  |  |  |  |  |  |  |  |  |
| 245 | 1.2.7.2.4 | **APLICAÇÃO SISTEMA DE PINTURA AÇO CARBONO - TEMP. AMBIENTE** |  | 7.41d | 2026-11-02 | 2026-11-09 |  | 44.18d |  |  | 140h | ESTRUTURAL | 302199 | SS-768/2024 | 0,00% | ZONA D | SISTEMA F - GUARDA CORPO | 0,00% | 2026-07-02 |  | PINT-PLANO | PPGM-I | ZPIN - MÓDULOS DA PLATAFORMA | M27 | 15294358 | NOTA ZS | Plano de Pintura para Módulo 27 - Helideck Área | PINTURA - EXECUÇÃO DE PLANOS DE PINTURA | POSTAGEM BOOK APROVADO MIO | A - NÃO POSTERGÁVEL (Carro Chefe) | HELIDECK | 2024-06-19 |  |
| 246 | 1.2.7.2.4.1 | Tratamento de Superfície |  | 35h | 2026-11-02 | 2026-11-04 | 240 | 44.18d | 0d | HIDROJATISTA-OFF [200%] | 70h | ESTRUTURAL | 302199 | SS-768/2024 | 0,00% | ZONA D | SISTEMA F - GUARDA CORPO | 0,00% | 2026-07-02 |  |  |  |  |  |  |  |  |  |  |  |  |  |  |
| 247 | 1.2.7.2.4.2 | Pintura |  | 35h | 2026-11-07 | 2026-11-09 | 241, 246 | 166.65d |  | PINTOR ESC-OFF [200%] | 70h | ESTRUTURAL | 302199 | SS-768/2024 | 0,00% | ZONA D | SISTEMA F - GUARDA CORPO | 0,00% | 2026-07-02 |  |  |  |  |  |  |  |  |  |  |  |  |  |  |
| 248 | 1.2.7.3 | **PRESERVAÇÃO** |  | 0.47d | 2026-10-14 | 2026-10-14 |  | 192.03d |  |  | 16h | ESTRUTURAL | 302199 | SS-768/2024 | 0,00% | ZONA D | SISTEMA J - PRESERVAÇÃO | 0,00% | 2026-07-02 | 1.6 |  |  |  |  |  |  |  |  |  |  |  |  |  |
| 249 | 1.2.7.3.1 | APLICAÇÃO SISTEMA DE PRESERVAÇAO AÇO CARBONO - TEMP. AMBIENTE |  | 8h | 2026-10-14 | 2026-10-14 | 238, 244 | 192.03d | 20.76d | PINTOR ESC-OFF [200%] | 16h | ESTRUTURAL | 302199 | SS-768/2024 | 0,00% | ZONA D | SISTEMA J - PRESERVAÇÃO | 0,00% | 2026-07-02 | 1.6 | PINT-PLANO | PPGM-I | ZPIN - MÓDULOS DA PLATAFORMA | M27 | 15294358 | NOTA ZS | Plano de Pintura para Módulo 27 - Helideck Área | PINTURA - EXECUÇÃO DE PLANOS DE PINTURA | POSTAGEM BOOK APROVADO MIO | A - NÃO POSTERGÁVEL (Carro Chefe) | HELIDECK | 2024-06-19 |  |
| 250 | 1.2.7.4 | **DESMONTAGEM DE ANDAIMES** |  | 0.24d | 2026-11-04 | 2026-11-04 |  | 171.26d |  |  | 16h | ESTRUTURAL | 302199 | SS-768/2024 | 0,00% | ZONA D |  | 0,00% | 2026-07-02 |  |  |  |  |  |  |  |  |  |  |  |  |  |  |
| 251 | 1.2.7.4.1 | DESMONTAGEM DE ANDAIMES - ZONA D |  | 4h | 2026-11-04 | 2026-11-04 | 246, 249 | 171.26d | 0d | MONTADOR ANDAIME-OFF [400%] | 16h | ESTRUTURAL | 302199 | SS-768/2024 | 0,00% | ZONA D |  | 0,00% | 2026-07-02 |  |  |  |  |  |  |  |  |  |  |  |  |  |  |
| 252 | 1.2.8 | EMISSÃO DOS RELATÓRIOS | milestone | 0h | 2026-11-04 | 2026-11-04 | 251 | 171.76d |  |  |  | ESTRUTURAL | 302199 | SS-768/2024 | 0,00% |  |  | 0,00% | 2026-07-02 |  |  |  |  |  |  |  |  |  |  |  |  |  |  |

| ID | WBS | Task | Type | Duration | Start | Finish | Predecessors | Total slack | Free slack | Resources | Work | Disciplina | Gerência Executante | Empresa Executante | Área/Sistema | Registro | Nº SS | Módulo | Nota/Item/Medida | Origem | TAG | Serviço Padrão | Status Planner | Prioridade do Serviço | % Previsto Calculado Prazo | Zona [Plano Pintura] | Piso/Setor | % Previsto Calculado Trabalho | RTI's Vencimento | Data de Status | Farol | Quant. m² | Sistema [Plano Pintura] | % da Etapa Concluída | QT SS's/REG. |
| --- | --- | --- | --- | --- | --- | --- | --- | --- | --- | --- | --- | --- | --- | --- | --- | --- | --- | --- | --- | --- | --- | --- | --- | --- | --- | --- | --- | --- | --- | --- | --- | --- | --- | --- | --- |
| 253 | 1.2.9 | **ZONA E** |  | 97.79d | 2026-08-25 | 2026-12-01 |  | 95.26d |  |  | 1586h | PINT-PLANO | PPGM-I | ESTRUTURAL | ZPIN - MÓDULOS DA PLATAFORMA | 302199 | SS-768/2024 | M27 | 15294358 | NOTA ZS | Plano de Pintura para Módulo 27 - Helideck Área | PINTURA - EXECUÇÃO DE PLANOS DE PINTURA | POSTAGEM BOOK APROVADO MIO | A - NÃO POSTERGÁVEL (Carro Chefe) | 0,00% | ZONA E | HELIDECK | 0,00% | 2024-06-19 | 2026-07-02 | -1 | 0.74 |  |  |  |
| 254 | 1.2.9.1 | **MONTAGEM DO ACESSO** |  | 2.06d | 2026-08-25 | 2026-08-27 |  | 112.88d |  |  | 72h |  |  | ESTRUTURAL |  | 302199 | SS-768/2024 |  |  |  |  |  |  |  | 0,00% | ZONA E |  | 0,00% |  | 2026-07-02 |  |  |  |  |  |
| 255 | 1.2.9.1.1 | MONTAGEM DE ANDAIMES - ZONA E |  | 18h | 2026-08-25 | 2026-08-27 | 234 | 112.88d | 0d | MONTADOR ANDAIME-OFF [400%] | 72h |  |  | ESTRUTURAL |  | 302199 | SS-768/2024 |  |  |  |  |  |  |  | 0,00% | ZONA E |  | 0,00% |  | 2026-07-02 |  |  |  |  |  |
| 256 | 1.2.9.2 | **PINTURA** |  | 26d | 2026-11-04 | 2026-11-30 |  | 44.18d |  |  | 1470h |  |  | ESTRUTURAL |  | 302199 | SS-768/2024 |  |  |  |  |  |  |  | 0,00% | ZONA E |  | 0,00% |  | 2026-07-02 |  |  |  |  |  |
| 257 | 1.2.9.2.1 | **APLICAÇÃO SISTEMA DE PINTURA AÇO CARBONO - TEMP. AMBIENTE** |  | 1.06d | 2026-11-04 | 2026-11-05 |  | 44.18d |  |  | 36h | PINT-PLANO | PPGM-I | ESTRUTURAL | ZPIN - MÓDULOS DA PLATAFORMA | 302199 | SS-768/2024 | M27 | 15294358 | NOTA ZS | Plano de Pintura para Módulo 27 - Helideck Área | PINTURA - EXECUÇÃO DE PLANOS DE PINTURA | POSTAGEM BOOK APROVADO MIO | A - NÃO POSTERGÁVEL (Carro Chefe) | 0,00% | ZONA E | HELIDECK | 0,00% | 2024-06-19 | 2026-07-02 |  |  | SISTEMA B - TUBULAÇÕES |  |  |
| 258 | 1.2.9.2.1.1 | Tratamento de Superfície |  | 9h | 2026-11-04 | 2026-11-04 | 246, 255 | 44.18d | 0d | HIDROJATISTA-OFF [200%] | 18h |  |  | ESTRUTURAL |  | 302199 | SS-768/2024 |  |  |  |  |  |  |  | 0,00% | ZONA E |  | 0,00% |  | 2026-07-02 |  |  | SISTEMA B - TUBULAÇÕES |  |  |
| 259 | 1.2.9.2.1.2 | Pintura |  | 9h | 2026-11-04 | 2026-11-05 | 258 | 162.03d | 0.47d | PINTOR ESC-OFF [200%] | 18h |  |  | ESTRUTURAL |  | 302199 | SS-768/2024 |  |  |  |  |  |  |  | 0,00% | ZONA E |  | 0,00% |  | 2026-07-02 |  |  | SISTEMA B - TUBULAÇÕES |  |  |
| 260 | 1.2.9.2.2 | **APLICAÇÃO SISTEMA DE PINTURA COBRE-NÍQUEL - TEMP. AMBIENTE** |  | 2d | 2026-11-04 | 2026-11-06 |  | 44.18d |  |  | 68h | PINT-PLANO | PPGM-I | ESTRUTURAL | ZPIN - MÓDULOS DA PLATAFORMA | 302199 | SS-768/2024 | M27 | 15294358 | NOTA ZS | Plano de Pintura para Módulo 27 - Helideck Área | PINTURA - EXECUÇÃO DE PLANOS DE PINTURA | POSTAGEM BOOK APROVADO MIO | A - NÃO POSTERGÁVEL (Carro Chefe) | 0,00% | ZONA E | HELIDECK | 0,00% | 2024-06-19 | 2026-07-02 |  |  | SISTEMA B - TUBULAÇÕES |  |  |
| 261 | 1.2.9.2.2.1 | Tratamento de Superfície |  | 17h | 2026-11-04 | 2026-11-05 | 258 | 44.18d | 0d | HIDROJATISTA-OFF [200%] | 34h |  |  | ESTRUTURAL |  | 302199 | SS-768/2024 |  |  |  |  |  |  |  | 0,00% | ZONA E |  | 0,00% |  | 2026-07-02 |  |  | SISTEMA B - TUBULAÇÕES |  |  |
| 262 | 1.2.9.2.2.2 | Pintura |  | 17h | 2026-11-05 | 2026-11-06 | 259, 261 | 161.56d | 0d | PINTOR ESC-OFF [200%] | 34h |  |  | ESTRUTURAL |  | 302199 | SS-768/2024 |  |  |  |  |  |  |  | 0,00% | ZONA E |  | 0,00% |  | 2026-07-02 |  |  | SISTEMA B - TUBULAÇÕES |  |  |
| 263 | 1.2.9.2.3 | **APLICAÇÃO SISTEMA DE PINTURA AÇO CARBONO - TEMP. AMBIENTE** |  | 22d | 2026-11-06 | 2026-11-28 |  | 44.18d |  |  | 1198h | PINT-PLANO | PPGM-I | ESTRUTURAL | ZPIN - MÓDULOS DA PLATAFORMA | 302199 | SS-768/2024 | M27 | 15294358 | NOTA ZS | Plano de Pintura para Módulo 27 - Helideck Área | PINTURA - EXECUÇÃO DE PLANOS DE PINTURA | POSTAGEM BOOK APROVADO MIO | A - NÃO POSTERGÁVEL (Carro Chefe) | 0,00% | ZONA E | HELIDECK | 0,00% | 2024-06-19 | 2026-07-02 |  |  | SISTEMA C - ESTRUTURAS |  |  |
| 264 | 1.2.9.2.3.1 | Tratamento de Superfície |  | 299h | 2026-11-06 | 2026-11-23 | 267 | 44.18d | 0d | HIDROJATISTA-OFF [200%] | 598h |  |  | ESTRUTURAL |  | 302199 | SS-768/2024 |  |  |  |  |  |  |  | 0,00% | ZONA E |  | 0,00% |  | 2026-07-02 |  |  | SISTEMA C - ESTRUTURAS |  |  |
| 265 | 1.2.9.2.3.2 | Pintura |  | 75h | 2026-11-23 | 2026-11-28 | 268, 264 | 144.97d | 0d | PINTOR ESC-OFF [800%] | 600h |  |  | ESTRUTURAL |  | 302199 | SS-768/2024 |  |  |  |  |  |  |  | 0,00% | ZONA E |  | 0,00% |  | 2026-07-02 |  |  | SISTEMA C - ESTRUTURAS |  |  |
| 266 | 1.2.9.2.4 | **APLICAÇÃO SISTEMA DE PINTURA AÇO CARBONO - TEMP. AMBIENTE** |  | 1.24d | 2026-11-05 | 2026-11-07 |  | 44.18d |  |  | 16h | PINT-PLANO | PPGM-I | ESTRUTURAL | ZPIN - MÓDULOS DA PLATAFORMA | 302199 | SS-768/2024 | M27 | 15294358 | NOTA ZS | Plano de Pintura para Módulo 27 - Helideck Área | PINTURA - EXECUÇÃO DE PLANOS DE PINTURA | POSTAGEM BOOK APROVADO MIO | A - NÃO POSTERGÁVEL (Carro Chefe) | 0,00% | ZONA E | HELIDECK | 0,00% | 2024-06-19 | 2026-07-02 |  |  | SISTEMA D - SUPORTES |  |  |
| 267 | 1.2.9.2.4.1 | Tratamento de Superfície |  | 4h | 2026-11-05 | 2026-11-06 | 261 | 44.18d | 0d | HIDROJATISTA-OFF [200%] | 8h |  |  | ESTRUTURAL |  | 302199 | SS-768/2024 |  |  |  |  |  |  |  | 0,00% | ZONA E |  | 0,00% |  | 2026-07-02 |  |  | SISTEMA D - SUPORTES |  |  |
| 268 | 1.2.9.2.4.2 | Pintura |  | 4h | 2026-11-06 | 2026-11-07 | 262, 267 | 161.56d | 0d | PINTOR ESC-OFF [200%] | 8h |  |  | ESTRUTURAL |  | 302199 | SS-768/2024 |  |  |  |  |  |  |  | 0,00% | ZONA E |  | 0,00% |  | 2026-07-02 |  |  | SISTEMA D - SUPORTES |  |  |
| 269 | 1.2.9.2.5 | **APLICAÇÃO SISTEMA DE PINTURA AÇO CARBONO - TEMP. AMBIENTE** |  | 6.65d | 2026-11-23 | 2026-11-30 |  | 44.18d |  |  | 152h | PINT-PLANO | PPGM-I | ESTRUTURAL | ZPIN - MÓDULOS DA PLATAFORMA | 302199 | SS-768/2024 | M27 | 15294358 | NOTA ZS | Plano de Pintura para Módulo 27 - Helideck Área | PINTURA - EXECUÇÃO DE PLANOS DE PINTURA | POSTAGEM BOOK APROVADO MIO | A - NÃO POSTERGÁVEL (Carro Chefe) | 0,00% | ZONA E | HELIDECK | 0,00% | 2024-06-19 | 2026-07-02 |  |  | SISTEMA F - GUARDA CORPO |  |  |
| 270 | 1.2.9.2.5.1 | Tratamento de Superfície |  | 38h | 2026-11-23 | 2026-11-26 | 264 | 44.18d | 0d | HIDROJATISTA-OFF [200%] | 76h |  |  | ESTRUTURAL |  | 302199 | SS-768/2024 |  |  |  |  |  |  |  | 0,00% | ZONA E |  | 0,00% |  | 2026-07-02 |  |  | SISTEMA F - GUARDA CORPO |  |  |
| 271 | 1.2.9.2.5.2 | Pintura |  | 38h | 2026-11-28 | 2026-11-30 | 265, 270 | 144.97d | 0d | PINTOR ESC-OFF [200%] | 76h |  |  | ESTRUTURAL |  | 302199 | SS-768/2024 |  |  |  |  |  |  |  | 0,00% | ZONA E |  | 0,00% |  | 2026-07-02 |  |  | SISTEMA F - GUARDA CORPO |  |  |
| 272 | 1.2.9.3 | **PRESERVAÇÃO** |  | 0.41d | 2026-11-06 | 2026-11-07 |  | 168.03d |  |  | 8h |  |  | ESTRUTURAL |  | 302199 | SS-768/2024 |  |  |  |  |  |  |  | 0,00% | ZONA E |  | 0,00% |  | 2026-07-02 |  | 0.74 | SISTEMA J - PRESERVAÇÃO |  |  |
| 273 | 1.2.9.3.1 | APLICAÇÃO SISTEMA DE PRESERVAÇAO AÇO CARBONO - TEMP. AMBIENTE |  | 3h | 2026-11-07 | 2026-11-07 | 259, 268 | 168.03d | 23.06d | PINTOR ESC-OFF [200%] | 6h | PINT-PLANO | PPGM-I | ESTRUTURAL | ZPIN - MÓDULOS DA PLATAFORMA | 302199 | SS-768/2024 | M27 | 15294358 | NOTA ZS | Plano de Pintura para Módulo 27 - Helideck Área | PINTURA - EXECUÇÃO DE PLANOS DE PINTURA | POSTAGEM BOOK APROVADO MIO | A - NÃO POSTERGÁVEL (Carro Chefe) | 0,00% | ZONA E | HELIDECK | 0,00% | 2024-06-19 | 2026-07-02 |  | 0.67 | SISTEMA J - PRESERVAÇÃO |  |  |
| 274 | 1.2.9.3.2 | APLICAÇÃO SISTEMA DE PRESERVAÇÃO COBRE-NÍQUEL - TEMP. AMBIENTE |  | 1h | 2026-11-06 | 2026-11-07 | 262 | 168.38d | 23.41d | PINTOR ESC-OFF [200%] | 2h | PINT-PLANO | PPGM-I | ESTRUTURAL | ZPIN - MÓDULOS DA PLATAFORMA | 302199 | SS-768/2024 | M27 | 15294358 | NOTA ZS | Plano de Pintura para Módulo 27 - Helideck Área | PINTURA - EXECUÇÃO DE PLANOS DE PINTURA | POSTAGEM BOOK APROVADO MIO | A - NÃO POSTERGÁVEL (Carro Chefe) | 0,00% | ZONA E | HELIDECK | 0,00% | 2024-06-19 | 2026-07-02 |  | 0.07 | SISTEMA J - PRESERVAÇÃO |  |  |
| 275 | 1.2.9.4 | **DESMONTAGEM DE ANDAIMES** |  | 1.03d | 2026-11-28 | 2026-11-29 |  |  |  |  | 36h |  |  | ESTRUTURAL |  | 302199 | SS-768/2024 |  |  |  |  |  |  |  | 0,00% | ZONA E |  | 0,00% |  | 2026-07-02 |  |  |  |  |  |
| 276 | 1.2.9.4.1 | DESMONTAGEM DE ANDAIMES - ZONA E |  | 9h | 2026-11-30 | 2026-12-01 | 270, 271, 273, 274 | 144.97d | 0d | MONTADOR ANDAIME-OFF [400%] | 36h |  |  | ESTRUTURAL |  | 302199 | SS-768/2024 |  |  |  |  |  |  |  | 0,00% | ZONA E |  | 0,00% |  | 2026-07-02 |  |  |  |  |  |
| 277 | 1.2.10 | EMISSÃO DOS RELATÓRIOS | milestone | 0h | 2026-12-01 | 2026-12-01 | 276 | 144.97d |  |  |  |  |  | ESTRUTURAL |  | 302199 | SS-768/2024 |  |  |  |  |  |  |  | 0,00% |  |  | 0,00% |  | 2026-07-02 |  |  |  | 0,00% | 1 |

| ID | WBS | Task | Type | Duration | Start | Finish | Predecessors | Total slack | Free slack | Resources | Work | Disciplina | Gerência Executante | Empresa Executante | Área/Sistema | Registro | Nº SS | Módulo | Nota/Item/Medida | Origem | TAG | Serviço Padrão | Status Planner | Prioridade do Serviço | % Previsto Calculado Prazo | Zona [Plano Pintura] | Piso/Setor | % Previsto Calculado Trabalho | RTI's Vencimento | Data de Status | Farol | Quant. m² | Sistema [Plano Pintura] | % da Etapa Concluída | QT SS's/REG. |
| --- | --- | --- | --- | --- | --- | --- | --- | --- | --- | --- | --- | --- | --- | --- | --- | --- | --- | --- | --- | --- | --- | --- | --- | --- | --- | --- | --- | --- | --- | --- | --- | --- | --- | --- | --- |
| 278 | 1.2.11 | **ZONA F** |  | 132.74d | 2026-08-27 | 2027-01-07 |  | 107.97d |  |  | 2634h | PINT-PLANO | PPGM-I | ESTRUTURAL | ZPIN - MÓDULOS DA PLATAFORMA | 302199 | SS-768/2024 | M27 | 15294358 | NOTA ZS | Plano de Pintura para Módulo 27 - Helideck Área | PINTURA - EXECUÇÃO DE PLANOS DE PINTURA | POSTAGEM BOOK APROVADO MIO | A - NÃO POSTERGÁVEL (Carro Chefe) | 0,00% | ZONA F | HELIDECK | 0,00% | 2024-06-19 | 2026-07-02 | -1 | 2.36 |  |  |  |
| 279 | 1.2.11.1 | **MONTAGEM DO ACESSO** |  | 2.68d | 2026-08-27 | 2026-08-30 |  | 131.38d |  |  | 80h |  |  | ESTRUTURAL |  | 302199 | SS-768/2024 |  |  |  |  |  |  |  | 0,00% | ZONA F |  | 0,00% |  | 2026-07-02 |  |  |  |  |  |
| 280 | 1.2.11.1.1 | MONTAGEM DE ANDAIMES - ZONA F |  | 20h | 2026-08-27 | 2026-08-30 | 255 | 131.38d | 0d | MONTADOR ANDAIME-OFF [400%] | 80h |  |  | ESTRUTURAL |  | 302199 | SS-768/2024 |  |  |  |  |  |  |  | 0,00% | ZONA F |  | 0,00% |  | 2026-07-02 |  |  |  |  |  |
| 281 | 1.2.11.2 | **PINTURA** |  | 41.35d | 2026-11-26 | 2027-01-06 |  | 44.18d |  |  | 2490h |  |  | ESTRUTURAL |  | 302199 | SS-768/2024 |  |  |  |  |  |  |  | 0,00% | ZONA F |  | 0,00% |  | 2026-07-02 |  |  |  |  |  |
| 282 | 1.2.11.2.1 | **APLICAÇÃO SISTEMA DE PINTURA AÇO CARBONO - TEMP. AMBIENTE** |  | 6d | 2026-11-26 | 2026-12-02 |  | 44.18d |  |  | 204h | PINT-PLANO | PPGM-I | ESTRUTURAL | ZPIN - MÓDULOS DA PLATAFORMA | 302199 | SS-768/2024 | M27 | 15294358 | NOTA ZS | Plano de Pintura para Módulo 27 - Helideck Área | PINTURA - EXECUÇÃO DE PLANOS DE PINTURA | POSTAGEM BOOK APROVADO MIO | A - NÃO POSTERGÁVEL (Carro Chefe) | 0,00% | ZONA F | HELIDECK | 0,00% | 2024-06-19 | 2026-07-02 |  |  | SISTEMA B - TUBULAÇÕES |  |  |
| 283 | 1.2.11.2.1.1 | Tratamento de Superfície |  | 51h | 2026-11-26 | 2026-11-29 | 270, 280 | 44.18d | 0d | HIDROJATISTA-OFF [200%] | 102h |  |  | ESTRUTURAL |  | 302199 | SS-768/2024 |  |  |  |  |  |  |  | 0,00% | ZONA F |  | 0,00% |  | 2026-07-02 |  |  | SISTEMA B - TUBULAÇÕES |  |  |
| 284 | 1.2.11.2.1.2 | Pintura |  | 51h | 2026-11-29 | 2026-12-02 | 283 | 133.5d | 0d | PINTOR ESC-OFF [200%] | 102h |  |  | ESTRUTURAL |  | 302199 | SS-768/2024 |  |  |  |  |  |  |  | 0,00% | ZONA F |  | 0,00% |  | 2026-07-02 |  |  | SISTEMA B - TUBULAÇÕES |  |  |
| 285 | 1.2.11.2.2 | **APLICAÇÃO SISTEMA DE PINTURA AÇO CARBONO - TEMP. AMBIENTE** |  | 33.29d | 2026-11-29 | 2027-01-02 |  | 44.18d |  |  | 1942h | PINT-PLANO | PPGM-I | ESTRUTURAL | ZPIN - MÓDULOS DA PLATAFORMA | 302199 | SS-768/2024 | M27 | 15294358 | NOTA ZS | Plano de Pintura para Módulo 27 - Helideck Área | PINTURA - EXECUÇÃO DE PLANOS DE PINTURA | POSTAGEM BOOK APROVADO MIO | A - NÃO POSTERGÁVEL (Carro Chefe) | 0,00% | ZONA F | HELIDECK | 0,00% | 2024-06-19 | 2026-07-02 |  |  | SISTEMA C - ESTRUTURAS |  |  |
| 286 | 1.2.11.2.2.1 | Tratamento de Superfície |  | 485h | 2026-11-29 | 2026-12-28 | 289 | 44.18d | 0d | HIDROJATISTA-OFF [200%] | 970h |  |  | ESTRUTURAL |  | 302199 | SS-768/2024 |  |  |  |  |  |  |  | 0,00% | ZONA F |  | 0,00% |  | 2026-07-02 |  |  | SISTEMA C - ESTRUTURAS |  |  |
| 287 | 1.2.11.2.2.2 | Pintura |  | 81h | 2026-12-28 | 2027-01-02 | 290, 286 | 107.97d | 0d | PINTOR ESC-OFF [1200%] | 972h |  |  | ESTRUTURAL |  | 302199 | SS-768/2024 |  |  |  |  |  |  |  | 0,00% | ZONA F |  | 0,00% |  | 2026-07-02 |  |  | SISTEMA C - ESTRUTURAS |  |  |
| 288 | 1.2.11.2.3 | **APLICAÇÃO SISTEMA DE PINTURA AÇO CARBONO - TEMP. AMBIENTE** |  | 3.71d | 2026-11-29 | 2026-12-02 |  | 44.18d |  |  | 48h | PINT-PLANO | PPGM-I | ESTRUTURAL | ZPIN - MÓDULOS DA PLATAFORMA | 302199 | SS-768/2024 | M27 | 15294358 | NOTA ZS | Plano de Pintura para Módulo 27 - Helideck Área | PINTURA - EXECUÇÃO DE PLANOS DE PINTURA | POSTAGEM BOOK APROVADO MIO | A - NÃO POSTERGÁVEL (Carro Chefe) | 0,00% | ZONA F | HELIDECK | 0,00% | 2024-06-19 | 2026-07-02 |  |  | SISTEMA D - SUPORTES |  |  |
| 289 | 1.2.11.2.3.1 | Tratamento de Superfície |  | 12h | 2026-11-29 | 2026-11-29 | 283 | 44.18d | 0d | HIDROJATISTA-OFF [200%] | 24h |  |  | ESTRUTURAL |  | 302199 | SS-768/2024 |  |  |  |  |  |  |  | 0,00% | ZONA F |  | 0,00% |  | 2026-07-02 |  |  | SISTEMA D - SUPORTES |  |  |
| 290 | 1.2.11.2.3.2 | Pintura |  | 12h | 2026-12-02 | 2026-12-02 | 284, 289 | 133.5d | 25.53d | PINTOR ESC-OFF [200%] | 24h |  |  | ESTRUTURAL |  | 302199 | SS-768/2024 |  |  |  |  |  |  |  | 0,00% | ZONA F |  | 0,00% |  | 2026-07-02 |  |  | SISTEMA D - SUPORTES |  |  |
| 291 | 1.2.11.2.4 | **APLICAÇÃO SISTEMA DE PINTURA AÇO CARBONO - TEMP. AMBIENTE** |  | 7.59d | 2026-12-28 | 2027-01-04 |  | 44.18d |  |  | 192h | PINT-PLANO | PPGM-I | ESTRUTURAL | ZPIN - MÓDULOS DA PLATAFORMA | 302199 | SS-768/2024 | M27 | 15294358 | NOTA ZS | Plano de Pintura para Módulo 27 - Helideck Área | PINTURA - EXECUÇÃO DE PLANOS DE PINTURA | POSTAGEM BOOK APROVADO MIO | A - NÃO POSTERGÁVEL (Carro Chefe) | 0,00% | ZONA F | HELIDECK | 0,00% | 2024-06-19 | 2026-07-02 |  |  | SISTEMA F - GUARDA CORPO |  |  |
| 292 | 1.2.11.2.4.1 | Tratamento de Superfície |  | 48h | 2026-12-28 | 2026-12-31 | 286 | 44.18d | 0d | HIDROJATISTA-OFF [200%] | 96h |  |  | ESTRUTURAL |  | 302199 | SS-768/2024 |  |  |  |  |  |  |  | 0,00% | ZONA F |  | 0,00% |  | 2026-07-02 |  |  | SISTEMA F - GUARDA CORPO |  |  |
| 293 | 1.2.11.2.4.2 | Pintura |  | 48h | 2027-01-02 | 2027-01-04 | 287, 292 | 107.97d | 0d | PINTOR ESC-OFF [200%] | 96h |  |  | ESTRUTURAL |  | 302199 | SS-768/2024 |  |  |  |  |  |  |  | 0,00% | ZONA F |  | 0,00% |  | 2026-07-02 |  |  | SISTEMA F - GUARDA CORPO |  |  |
| 294 | 1.2.11.2.5 | **APLICAÇÃO SISTEMA DE PINTURA AÇO CARBONO - TEMP. AMBIENTE** |  | 6.29d | 2026-12-31 | 2027-01-06 |  | 44.18d |  |  | 104h | PINT-PLANO | PPGM-I | ESTRUTURAL | ZPIN - MÓDULOS DA PLATAFORMA | 302199 | SS-768/2024 | M27 | 15294358 | NOTA ZS | Plano de Pintura para Módulo 27 - Helideck Área | PINTURA - EXECUÇÃO DE PLANOS DE PINTURA | POSTAGEM BOOK APROVADO MIO | A - NÃO POSTERGÁVEL (Carro Chefe) | 0,00% | ZONA F | HELIDECK | 0,00% | 2024-06-19 | 2026-07-02 |  |  | SISTEMA G - ESCADAS |  |  |
| 295 | 1.2.11.2.5.1 | Tratamento de Superfície |  | 26h | 2026-12-31 | 2027-01-01 | 292 | 44.18d | 0d | HIDROJATISTA-OFF [200%] | 52h |  |  | ESTRUTURAL |  | 302199 | SS-768/2024 |  |  |  |  |  |  |  | 0,00% | ZONA F |  | 0,00% |  | 2026-07-02 |  |  | SISTEMA G - ESCADAS |  |  |
| 296 | 1.2.11.2.5.2 | Pintura |  | 26h | 2027-01-04 | 2027-01-06 | 293, 290, 295 | 107.97d | 0d | PINTOR ESC-OFF [200%] | 52h |  |  | ESTRUTURAL |  | 302199 | SS-768/2024 |  |  |  |  |  |  |  | 0,00% | ZONA F |  | 0,00% |  | 2026-07-02 |  |  | SISTEMA G - ESCADAS |  |  |
| 297 | 1.2.11.3 | **PRESERVAÇÃO** |  | 0.71d | 2026-12-02 | 2026-12-02 |  | 142.62d |  |  | 24h |  |  | ESTRUTURAL |  | 302199 | SS-768/2024 |  |  |  |  |  |  |  | 0,00% | ZONA F |  | 0,00% |  | 2026-07-02 |  | 2.36 | SISTEMA J - PRESERVAÇÃO |  |  |
| 298 | 1.2.11.3.1 | APLICAÇÃO SISTEMA DE PRESERVAÇAO AÇO CARBONO - TEMP. AMBIENTE |  | 12h | 2026-12-02 | 2026-12-02 | 284 | 142.62d | 34.65d | PINTOR ESC-OFF [200%] | 24h | PINT-PLANO | PPGM-I | ESTRUTURAL | ZPIN - MÓDULOS DA PLATAFORMA | 302199 | SS-768/2024 | M27 | 15294358 | NOTA ZS | Plano de Pintura para Módulo 27 - Helideck Área | PINTURA - EXECUÇÃO DE PLANOS DE PINTURA | POSTAGEM BOOK APROVADO MIO | A - NÃO POSTERGÁVEL (Carro Chefe) | 0,00% | ZONA F | HELIDECK | 0,00% | 2024-06-19 | 2026-07-02 |  | 2.36 | SISTEMA J - PRESERVAÇÃO |  |  |
| 299 | 1.2.11.4 | **DESMONTAGEM DE ANDAIMES** |  | 1.09d | 2027-01-06 | 2027-01-07 |  | 107.97d |  |  | 40h |  |  | ESTRUTURAL |  | 302199 | SS-768/2024 |  |  |  |  |  |  |  | 0,00% | ZONA F |  | 0,00% |  | 2026-07-02 |  |  |  |  |  |
| 300 | 1.2.11.4.1 | DESMONTAGEM DE ANDAIMES - ZONA F |  | 10h | 2027-01-06 | 2027-01-07 | 295, 296, 298 | 107.97d | 0d | MONTADOR ANDAIME-OFF [400%] | 40h |  |  | ESTRUTURAL |  | 302199 | SS-768/2024 |  |  |  |  |  |  |  | 0,00% | ZONA F |  | 0,00% |  | 2026-07-02 |  |  |  |  |  |
| 301 | 1.2.12 | EMISSÃO DOS RELATÓRIOS | milestone | 0h | 2027-01-07 | 2027-01-07 | 300 | 107.97d |  |  |  |  |  | ESTRUTURAL |  | 302199 | SS-768/2024 |  |  |  |  |  |  |  | 0,00% |  |  | 0,00% |  | 2026-07-02 |  |  |  | 0,00% | 1 |

| ID | WBS | Task | Type | Duration | Start | Finish | Predecessors | Total slack | Free slack | Resources | Work | Disciplina | Gerência Executante | Empresa Executante | Área/Sistema | Registro | Nº SS | Módulo | Nota/Item/Medida | Origem | TAG | Serviço Padrão | Status Planner | Prioridade do Serviço | % Previsto Calculado Prazo | Zona [Plano Pintura] | Piso/Setor | % Previsto Calculado Trabalho | RTI's Vencimento | Data de Status | Farol | Sistema [Plano Pintura] | % da Etapa Concluída | QT SS's/REG. | Quant. m² |
| --- | --- | --- | --- | --- | --- | --- | --- | --- | --- | --- | --- | --- | --- | --- | --- | --- | --- | --- | --- | --- | --- | --- | --- | --- | --- | --- | --- | --- | --- | --- | --- | --- | --- | --- | --- |
| 302 | 1.2.13 | **ZONA G** |  | 193.94d | 2026-08-30 | 2027-04-11 |  | 44.09d |  |  | 4068h | PINT-PLANO | PPGM-I | ESTRUTURAL | ZPIN - MÓDULOS DA PLATAFORMA | 302199 | SS-768/2024 | M27 | 15294358 | NOTA ZS | Plano de Pintura para Módulo 27 - Helideck Área | PINTURA - EXECUÇÃO DE PLANOS DE PINTURA | POSTAGEM BOOK APROVADO MIO | A - NÃO POSTERGÁVEL (Carro Chefe) | 0,00% | ZONA G | HELIDECK | 0,00% | 2024-06-19 | 2026-07-02 | -1 |  |  |  |  |
| 303 | 1.2.13.1 | **MONTAGEM DO ACESSO** |  | 0.12d | 2026-08-30 | 2026-08-30 |  | 168.26d |  |  | 8h |  |  | ESTRUTURAL |  | 302199 | SS-768/2024 |  |  |  |  |  |  |  | 0,00% | ZONA G |  | 0,00% |  | 2026-07-02 |  |  |  |  |  |
| 304 | 1.2.13.1.1 | MONTAGEM DE ANDAIMES - ZONA G |  | 2h | 2026-08-30 | 2026-08-30 | 280 | 168.26d | 124.09d | MONTADOR ANDAIME-OFF [400%] | 8h |  |  | ESTRUTURAL |  | 302199 | SS-768/2024 |  |  |  |  |  |  |  | 0,00% | ZONA G |  | 0,00% |  | 2026-07-02 |  |  |  |  |  |
| 305 | 1.2.13.2 | **PINTURA** |  | 69.59d | 2027-01-01 | 2027-04-11 |  | 44.18d |  |  | 4056h |  |  | ESTRUTURAL |  | 302199 | SS-768/2024 |  |  |  |  |  |  |  | 0,00% | ZONA G |  | 0,00% |  | 2026-07-02 |  |  |  |  |  |
| 306 | 1.2.13.2.1 | **APLICAÇÃO SISTEMA DE PINTURA AÇO CARBONO - TEMP. AMBIENTE** |  | 69.59d | 2027-01-01 | 2027-04-11 |  | 44.18d |  |  | 4056h | PINT-PLANO | PPGM-I | ESTRUTURAL | ZPIN - MÓDULOS DA PLATAFORMA | 302199 | SS-768/2024 | M27 | 15294358 | NOTA ZS | Plano de Pintura para Módulo 27 - Helideck Área | PINTURA - EXECUÇÃO DE PLANOS DE PINTURA | POSTAGEM BOOK APROVADO MIO | A - NÃO POSTERGÁVEL (Carro Chefe) | 0,00% | ZONA G | HELIDECK | 0,00% | 2024-06-19 | 2026-07-02 |  | SISTEMA C - ESTRUTURAS |  |  |  |
| 307 | 1.2.13.2.1.1 | Tratamento de Pintura |  | 1014h | 2027-01-01 | 2027-04-01 | 295, 304 | 44.18d | 0d | HIDROJATISTA-OFF [200%] | 2028h |  |  | ESTRUTURAL |  | 302199 | SS-768/2024 |  |  |  |  |  |  |  | 0,00% | ZONA G |  | 0,00% |  | 2026-07-02 |  | SISTEMA C - ESTRUTURAS |  |  |  |
| 308 | 1.2.13.2.1.2 | Pintura |  | 169h | 2027-04-01 | 2027-04-11 | 307 | 44.18d | 0.09d | PINTOR ESC-OFF [1200%] | 2028h |  |  | ESTRUTURAL |  | 302199 | SS-768/2024 |  |  |  |  |  |  |  | 0,00% | ZONA G |  | 0,00% |  | 2026-07-02 |  | SISTEMA C - ESTRUTURAS |  |  |  |
| 309 | 1.2.13.3 | **DESMONTAGEM DE ANDAIMES** |  | 0.06d | 2027-04-11 | 2027-04-11 |  | 44.09d |  |  | 4h |  |  | ESTRUTURAL |  | 302199 | SS-768/2024 |  |  |  |  |  |  |  | 0,00% | ZONA G |  | 0,00% |  | 2026-07-02 |  |  |  |  |  |
| 310 | 1.2.13.3.1 | DESMONTAGEM DE ANDAIMES - ZONA G |  | 1h | 2027-04-11 | 2027-04-11 | 308 | 44.09d | 0d | MONTADOR ANDAIME-OFF [400%] | 4h |  |  | ESTRUTURAL |  | 302199 | SS-768/2024 |  |  |  |  |  |  |  | 0,00% | ZONA G |  | 0,00% |  | 2026-07-02 |  |  |  |  |  |
| 311 | 1.2.14 | EMISSÃO DOS RELATÓRIOS | milestone | 0h | 2027-04-11 | 2027-04-11 | 310 | 44.09d |  |  |  |  |  | ESTRUTURAL |  | 302199 | SS-768/2024 |  |  |  |  |  |  |  | 0,00% |  |  | 0,00% |  | 2026-07-02 |  |  | 0,00% | 1 |  |
| 312 | 1.288 | **SS-780/2025 - Registro: 346056 - Tratar e PintarM23 Setor 3** |  | 238.21d | 2026-08-18 | 2027-05-13 |  | 11.38d |  |  | 17746h | PINT-PLANO | PPGM-I | ESTRUTURAL | ZPIN - Módulos para Pintura | 346056 | SS-780/2025 | M23 | 15989387 | NOTA ZS | Plano de Pintura para MóduloM23 Setor 3 | PINTURA - EXECUÇÃO DE PLANOS DE PINTURA | APROVAÇÃO BOOK DE PLANEJAMENTO | D - POSTERGÁVEL (Melhorias) | 0,00% |  | Setor 3 | 0,00% |  | 2026-07-02 | -1 |  | 0,00% | 1 | 251.12 |
| 313 | 1.3.1 | **ZONA A** |  | 115.06d | 2026-08-18 | 2026-12-11 |  | 11.38d |  |  | 8796h | PINT-PLANO | PPGM-I | ESTRUTURAL | ZPIN - Módulos para Pintura | 346056 | SS-780/2025 | M23 | 15989387 | NOTA ZS | Plano de Pintura para MóduloM23 Setor 3 | PINTURA - EXECUÇÃO DE PLANOS DE PINTURA | APROVAÇÃO BOOK DE PLANEJAMENTO | D - POSTERGÁVEL (Melhorias) | 0,00% | ZONA A | Setor 3 | 0,00% |  | 2026-07-02 | -1 |  |  |  | 151.77 |
| 314 | 1.3.1.1 | **MONTAGEM DO ACESSO** |  | 4.12d | 2026-08-18 | 2026-08-22 |  | 11.38d |  |  | 144h |  |  | ESTRUTURAL |  | 346056 | SS-780/2025 |  |  |  |  |  |  |  | 0,00% | ZONA A |  | 0,00% |  | 2026-07-02 |  |  |  |  |  |
| 315 | 1.3.1.1.1 | MONTAGEM DE ANDAIMES - ZONA A |  | 36h | 2026-08-18 | 2026-08-22 |  | 11.38d | 0d | MONTADOR ANDAIME-OFF [400%] | 144h |  |  | ESTRUTURAL |  | 346056 | SS-780/2025 |  |  |  |  |  |  |  | 0,00% | ZONA A |  | 0,00% |  | 2026-07-02 |  |  |  |  |  |
| 316 | 1.3.1.2 | **PINTURA** |  | 108.59d | 2026-08-22 | 2026-12-08 |  | 11.68d |  |  | 7060h |  |  | ESTRUTURAL |  | 346056 | SS-780/2025 |  |  |  |  |  |  |  | 0,00% | ZONA A |  | 0,00% |  | 2026-07-02 |  |  |  |  |  |
| 317 | 1.3.1.2.1 | **APLICAÇÃO SISTEMA DE PINTURA AÇO CARBONO - TEMP. AMBIENTE** |  | 33.82d | 2026-08-22 | 2026-09-25 |  | 11.68d |  |  | 1970h | PINT-PLANO | PPGM-I | ESTRUTURAL | ZPIN - Módulos para Pintura | 346056 | SS-780/2025 | M23 | 15989387 | NOTA ZS | Plano de Pintura para MóduloM23 Setor 3 | PINTURA - EXECUÇÃO DE PLANOS DE PINTURA | APROVAÇÃO BOOK DE PLANEJAMENTO | D - POSTERGÁVEL (Melhorias) | 0,00% | ZONA A | Setor 3 | 0,00% |  | 2026-07-02 |  | SISTEMA B - TUBULAÇÕES |  |  |  |
| 318 | 1.3.1.2.1.1 | Tratamento de Superfície |  | 493h | 2026-08-22 | 2026-09-20 | 315 | 11.68d | 0d | HIDROJATISTA-OFF [200%] | 986h |  |  | ESTRUTURAL |  | 346056 | SS-780/2025 |  |  |  |  |  |  |  | 0,00% | ZONA A |  | 0,00% |  | 2026-07-02 |  | SISTEMA B - TUBULAÇÕES |  |  |  |
| 319 | 1.3.1.2.1.2 | Pintura |  | 82h | 2026-09-20 | 2026-09-25 | 318 | 183.74d | 0d | PINTOR ESC-OFF [1200%] | 984h |  |  | ESTRUTURAL |  | 346056 | SS-780/2025 |  |  |  |  |  |  |  | 0,00% | ZONA A |  | 0,00% |  | 2026-07-02 |  | SISTEMA B - TUBULAÇÕES |  |  |  |
| 320 | 1.3.1.2.2 | **APLICAÇÃO SISTEMA DE PINTURA AÇO CARBONO - ALTA TEMPERATURA** |  | 8.47d | 2026-09-20 | 2026-09-28 |  | 11.68d |  |  | 248h | PINT-PLANO | PPGM-I | ESTRUTURAL | ZPIN - Módulos para Pintura | 346056 | SS-780/2025 | M23 | 15989387 | NOTA ZS | Plano de Pintura para MóduloM23 Setor 3 | PINTURA - EXECUÇÃO DE PLANOS DE PINTURA | APROVAÇÃO BOOK DE PLANEJAMENTO | D - POSTERGÁVEL (Melhorias) | 0,00% | ZONA A | Setor 3 | 0,00% |  | 2026-07-02 |  | SISTEMA B - TUBULAÇÕES |  |  |  |
| 321 | 1.3.1.2.2.1 | Tratamento de Superfície |  | 62h | 2026-09-20 | 2026-09-24 | 318 | 11.68d | 0d | HIDROJATISTA-OFF [200%] | 124h |  |  | ESTRUTURAL |  | 346056 | SS-780/2025 |  |  |  |  |  |  |  | 0,00% | ZONA A |  | 0,00% |  | 2026-07-02 |  | SISTEMA B - TUBULAÇÕES |  |  |  |
| 322 | 1.3.1.2.2.2 | Pintura |  | 62h | 2026-09-25 | 2026-09-28 | 319, 321 | 183.74d | 0d | PINTOR ESC-OFF [200%] | 124h |  |  | ESTRUTURAL |  | 346056 | SS-780/2025 |  |  |  |  |  |  |  | 0,00% | ZONA A |  | 0,00% |  | 2026-07-02 |  | SISTEMA B - TUBULAÇÕES |  |  |  |
| 323 | 1.3.1.2.3 | **APLICAÇÃO SISTEMA DE PINTURA COBRE-NÍQUEL - TEMP. AMBIENTE** |  | 9.06d | 2026-09-24 | 2026-10-03 |  | 11.68d |  |  | 288h | PINT-PLANO | PPGM-I | ESTRUTURAL | ZPIN - Módulos para Pintura | 346056 | SS-780/2025 | M23 | 15989387 | NOTA ZS | Plano de Pintura para MóduloM23 Setor 3 | PINTURA - EXECUÇÃO DE PLANOS DE PINTURA | APROVAÇÃO BOOK DE PLANEJAMENTO | D - POSTERGÁVEL (Melhorias) | 0,00% | ZONA A | Setor 3 | 0,00% |  | 2026-07-02 |  | SISTEMA B - TUBULAÇÕES |  |  |  |
| 324 | 1.3.1.2.3.1 | Tratamento de Superfície |  | 72h | 2026-09-24 | 2026-09-28 | 321 | 11.68d | 0d | HIDROJATISTA-OFF [200%] | 144h |  |  | ESTRUTURAL |  | 346056 | SS-780/2025 |  |  |  |  |  |  |  | 0,00% | ZONA A |  | 0,00% |  | 2026-07-02 |  | SISTEMA B - TUBULAÇÕES |  |  |  |
| 325 | 1.3.1.2.3.2 | Pintura |  | 72h | 2026-09-28 | 2026-10-03 | 322, 324 | 183.74d | 0d | PINTOR ESC-OFF [200%] | 144h |  |  | ESTRUTURAL |  | 346056 | SS-780/2025 |  |  |  |  |  |  |  | 0,00% | ZONA A |  | 0,00% |  | 2026-07-02 |  | SISTEMA B - TUBULAÇÕES |  |  |  |

| ID | WBS | Task | Type | Duration | Start | Finish | Predecessors | Total slack | Free slack | Resources | Work | Disciplina | Gerência Executante | Empresa Executante | Área/Sistema | Registro | Nº SS | Módulo | Nota/Item/Medida | Origem | TAG | Serviço Padrão | Status Planner | Prioridade do Serviço | % Previsto Calculado Prazo | Zona [Plano Pintura] | Sistema [Plano Pintura] | Piso/Setor | % Previsto Calculado Trabalho | Data de Status | Quant. m² |
| --- | --- | --- | --- | --- | --- | --- | --- | --- | --- | --- | --- | --- | --- | --- | --- | --- | --- | --- | --- | --- | --- | --- | --- | --- | --- | --- | --- | --- | --- | --- | --- |
| 326 | 1.3.1.2.4 | **APLICAÇÃO SISTEMA DE PINTURA AÇO INOX - TEMP. AMBIENTE** |  | 7.06d | 2026-09-28 | 2026-10-05 |  | 11.68d |  |  | 152h | PINT-PLANO | PPGM-I | ESTRUTURAL | ZPIN - Módulos para Pintura | 346056 | SS-780/2025 | M23 | 15989387 | NOTA ZS | Plano de Pintura para MóduloM23 Setor 3 | PINTURA - EXECUÇÃO DE PLANOS DE PINTURA | APROVAÇÃO BOOK DE PLANEJAMENTO | D - POSTERGÁVEL (Melhorias) | 0,00% | ZONA A | SISTEMA B - TUBULAÇÕES | Setor 3 | 0,00% | 2026-07-02 |  |
| 327 | 1.3.1.2.4.1 | Tratamento de Superfície |  | 38h | 2026-09-28 | 2026-09-30 | 324 | 11.68d | 0d | HIDROJATISTA-OFF [200%] | 76h |  |  | ESTRUTURAL |  | 346056 | SS-780/2025 |  |  |  |  |  |  |  | 0,00% | ZONA A | SISTEMA B - TUBULAÇÕES |  | 0,00% | 2026-07-02 |  |
| 328 | 1.3.1.2.4.2 | Pintura |  | 38h | 2026-10-03 | 2026-10-05 | 325, 327 | 183.74d | 0d | PINTOR ESC-OFF [200%] | 76h |  |  | ESTRUTURAL |  | 346056 | SS-780/2025 |  |  |  |  |  |  |  | 0,00% | ZONA A | SISTEMA B - TUBULAÇÕES |  | 0,00% | 2026-07-02 |  |
| 329 | 1.3.1.2.5 | **APLICAÇÃO SISTEMA DE PINTURA AÇO INOX - ALTA TEMPERATURA** |  | 5.65d | 2026-09-30 | 2026-10-06 |  | 11.68d |  |  | 56h | PINT-PLANO | PPGM-I | ESTRUTURAL | ZPIN - Módulos para Pintura | 346056 | SS-780/2025 | M23 | 15989387 | NOTA ZS | Plano de Pintura para MóduloM23 Setor 3 | PINTURA - EXECUÇÃO DE PLANOS DE PINTURA | APROVAÇÃO BOOK DE PLANEJAMENTO | D - POSTERGÁVEL (Melhorias) | 0,00% | ZONA A | SISTEMA B - TUBULAÇÕES | Setor 3 | 0,00% | 2026-07-02 |  |
| 330 | 1.3.1.2.5.1 | Tratamento de Superfície |  | 14h | 2026-09-30 | 2026-10-01 | 327 | 11.68d | 0d | HIDROJATISTA-OFF [200%] | 28h |  |  | ESTRUTURAL |  | 346056 | SS-780/2025 |  |  |  |  |  |  |  | 0,00% | ZONA A | SISTEMA B - TUBULAÇÕES |  | 0,00% | 2026-07-02 |  |
| 331 | 1.3.1.2.5.2 | Pintura |  | 14h | 2026-10-05 | 2026-10-06 | 328, 330 | 183.74d | 8.59d | PINTOR ESC-OFF [200%] | 28h |  |  | ESTRUTURAL |  | 346056 | SS-780/2025 |  |  |  |  |  |  |  | 0,00% | ZONA A | SISTEMA B - TUBULAÇÕES |  | 0,00% | 2026-07-02 |  |
| 332 | 1.3.1.2.6 | **APLICAÇÃO SISTEMA DE PINTURA AÇO CARBONO - TEMP. AMBIENTE** |  | 25.29d | 2026-10-16 | 2026-11-10 |  | 11.68d |  |  | 1376h | PINT-PLANO | PPGM-I | ESTRUTURAL | ZPIN - Módulos para Pintura | 346056 | SS-780/2025 | M23 | 15989387 | NOTA ZS | Plano de Pintura para MóduloM23 Setor 3 | PINTURA - EXECUÇÃO DE PLANOS DE PINTURA | APROVAÇÃO BOOK DE PLANEJAMENTO | D - POSTERGÁVEL (Melhorias) | 0,00% | ZONA A | SISTEMA C - ESTRUTURAS | Setor 3 | 0,00% | 2026-07-02 |  |
| 333 | 1.3.1.2.6.1 | Tratamento de Superfície |  | 344h | 2026-10-16 | 2026-11-05 | 339 | 11.68d | 0d | HIDROJATISTA-OFF [200%] | 688h |  |  | ESTRUTURAL |  | 346056 | SS-780/2025 |  |  |  |  |  |  |  | 0,00% | ZONA A | SISTEMA C - ESTRUTURAS |  | 0,00% | 2026-07-02 |  |
| 334 | 1.3.1.2.6.2 | Pintura |  | 86h | 2026-11-05 | 2026-11-10 | 340, 333 | 159.09d | 23.71d | PINTOR ESC-OFF [800%] | 688h |  |  | ESTRUTURAL |  | 346056 | SS-780/2025 |  |  |  |  |  |  |  | 0,00% | ZONA A | SISTEMA C - ESTRUTURAS |  | 0,00% | 2026-07-02 |  |
| 335 | 1.3.1.2.7 | **APLICAÇÃO SISTEMA DE PINTURA AÇO CARBONO - TEMP. AMBIENTE** |  | 16.76d | 2026-10-01 | 2026-10-18 |  | 11.68d |  |  | 912h | PINT-PLANO | PPGM-I | ESTRUTURAL | ZPIN - Módulos para Pintura | 346056 | SS-780/2025 | M23 | 15989387 | NOTA ZS | Plano de Pintura para MóduloM23 Setor 3 | PINTURA - EXECUÇÃO DE PLANOS DE PINTURA | APROVAÇÃO BOOK DE PLANEJAMENTO | D - POSTERGÁVEL (Melhorias) | 0,00% | ZONA A | SISTEMA D - SUPORTES | Setor 3 | 0,00% | 2026-07-02 |  |
| 336 | 1.3.1.2.7.1 | Tratamento de Superfície |  | 228h | 2026-10-01 | 2026-10-14 | 330 | 11.68d | 0d | HIDROJATISTA-OFF [200%] | 456h |  |  | ESTRUTURAL |  | 346056 | SS-780/2025 |  |  |  |  |  |  |  | 0,00% | ZONA A | SISTEMA D - SUPORTES |  | 0,00% | 2026-07-02 |  |
| 337 | 1.3.1.2.7.2 | Pintura |  | 57h | 2026-10-14 | 2026-10-18 | 331, 336 | 175.15d | 0d | PINTOR ESC-OFF [800%] | 456h |  |  | ESTRUTURAL |  | 346056 | SS-780/2025 |  |  |  |  |  |  |  | 0,00% | ZONA A | SISTEMA D - SUPORTES |  | 0,00% | 2026-07-02 |  |
| 338 | 1.3.1.2.8 | **APLICAÇÃO SISTEMA DE PINTURA AÇO CARBONO - TEMP. AMBIENTE** |  | 4.76d | 2026-10-14 | 2026-10-19 |  | 11.68d |  |  | 96h | PINT-PLANO | PPGM-I | ESTRUTURAL | ZPIN - Módulos para Pintura | 346056 | SS-780/2025 | M23 | 15989387 | NOTA ZS | Plano de Pintura para MóduloM23 Setor 3 | PINTURA - EXECUÇÃO DE PLANOS DE PINTURA | APROVAÇÃO BOOK DE PLANEJAMENTO | D - POSTERGÁVEL (Melhorias) | 0,00% | ZONA A | SISTEMA E - EQUIPAMENTOS | Setor 3 | 0,00% | 2026-07-02 |  |
| 339 | 1.3.1.2.8.1 | Tratamento de Superfície |  | 24h | 2026-10-14 | 2026-10-16 | 336 | 11.68d | 0d | HIDROJATISTA-OFF [200%] | 48h |  |  | ESTRUTURAL |  | 346056 | SS-780/2025 |  |  |  |  |  |  |  | 0,00% | ZONA A | SISTEMA E - EQUIPAMENTOS |  | 0,00% | 2026-07-02 |  |
| 340 | 1.3.1.2.8.2 | Pintura |  | 24h | 2026-10-18 | 2026-10-19 | 337, 339 | 175.15d | 0d | PINTOR ESC-OFF [200%] | 48h |  |  | ESTRUTURAL |  | 346056 | SS-780/2025 |  |  |  |  |  |  |  | 0,00% | ZONA A | SISTEMA E - EQUIPAMENTOS |  | 0,00% | 2026-07-02 |  |
| 341 | 1.3.1.2.9 | **APLICAÇÃO SISTEMA DE PINTURA AÇO CARBONO - TEMP. AMBIENTE** |  | 33.59d | 2026-11-05 | 2026-12-08 |  | 11.68d |  |  | 1962h | PINT-PLANO | PPGM-I | ESTRUTURAL | ZPIN - Módulos para Pintura | 346056 | SS-780/2025 | M23 | 15989387 | NOTA ZS | Plano de Pintura para MóduloM23 Setor 3 | PINTURA - EXECUÇÃO DE PLANOS DE PINTURA | APROVAÇÃO BOOK DE PLANEJAMENTO | D - POSTERGÁVEL (Melhorias) | 0,00% | ZONA A | SISTEMA I - PISO | Setor 3 | 0,00% | 2026-07-02 |  |
| 342 | 1.3.1.2.9.1 | Tratamento de Superfície |  | 489h | 2026-11-05 | 2026-12-04 | 333 | 11.68d | 0d | HIDROJATISTA-OFF [200%] | 978h |  |  | ESTRUTURAL |  | 346056 | SS-780/2025 |  |  |  |  |  |  |  | 0,00% | ZONA A | SISTEMA I - PISO |  | 0,00% | 2026-07-02 |  |
| 343 | 1.3.1.2.9.2 | Pintura |  | 82h | 2026-12-04 | 2026-12-08 | 334, 342 | 135.38d | 0.29d | PINTOR ESC-OFF [1200%] | 984h |  |  | ESTRUTURAL |  | 346056 | SS-780/2025 |  |  |  |  |  |  |  | 0,00% | ZONA A | SISTEMA I - PISO |  | 0,00% | 2026-07-02 |  |
| 344 | 1.3.1.3 | **PRESERVAÇÃO** |  | 31.35d | 2026-09-28 | 2026-10-30 |  | 175.15d |  |  | 1520h |  |  | ESTRUTURAL |  | 346056 | SS-780/2025 |  |  |  |  |  |  |  | 0,00% | ZONA A | SISTEMA J - PRESERVAÇÃO |  | 0,00% | 2026-07-02 | 151.77 |
| 345 | 1.3.1.3.1 | APLICAÇÃO SISTEMA DE PRESERVAÇAO AÇO CARBONO - TEMP. AMBIENTE |  | 182h | 2026-10-19 | 2026-10-30 | 318, 337, 340 | 175.15d | 40.06d | PINTOR ESC-OFF [800%] | 1456h | PINT-PLANO | PPGM-I | ESTRUTURAL | ZPIN - Módulos para Pintura | 346056 | SS-780/2025 | M23 | 15989387 | NOTA ZS | Plano de Pintura para MóduloM23 Setor 3 | PINTURA - EXECUÇÃO DE PLANOS DE PINTURA | APROVAÇÃO BOOK DE PLANEJAMENTO | D - POSTERGÁVEL (Melhorias) | 0,00% | ZONA A | SISTEMA J - PRESERVAÇÃO | Setor 3 | 0,00% | 2026-07-02 | 145.47 |
| 346 | 1.3.1.3.2 | APLICAÇÃO SISTEMA DE PRESERVAÇAO AÇO CARBONO - ALTA TEMPERATURA |  | 2h | 2026-09-28 | 2026-09-28 | 322 | 206.38d | 71.29d | PINTOR ESC-OFF [200%] | 4h | PINT-PLANO | PPGM-I | ESTRUTURAL | ZPIN - Módulos para Pintura | 346056 | SS-780/2025 | M23 | 15989387 | NOTA ZS | Plano de Pintura para MóduloM23 Setor 3 | PINTURA - EXECUÇÃO DE PLANOS DE PINTURA | APROVAÇÃO BOOK DE PLANEJAMENTO | D - POSTERGÁVEL (Melhorias) | 0,00% | ZONA A | SISTEMA J - PRESERVAÇÃO | Setor 3 | 0,00% | 2026-07-02 | 0.36 |
| 347 | 1.3.1.3.3 | APLICAÇÃO SISTEMA DE PRESERVAÇÃO COBRE-NÍQUEL - TEMP. AMBIENTE |  | 30h | 2026-10-05 | 2026-10-07 | 325, 328 | 198.26d | 63.18d | PINTOR ESC-OFF [200%] | 60h | PINT-PLANO | PPGM-I | ESTRUTURAL | ZPIN - Módulos para Pintura | 346056 | SS-780/2025 | M23 | 15989387 | NOTA ZS | Plano de Pintura para MóduloM23 Setor 3 | PINTURA - EXECUÇÃO DE PLANOS DE PINTURA | APROVAÇÃO BOOK DE PLANEJAMENTO | D - POSTERGÁVEL (Melhorias) | 0,00% | ZONA A | SISTEMA J - PRESERVAÇÃO | Setor 3 | 0,00% | 2026-07-02 | 5.94 |
| 348 | 1.3.1.4 | **DESMONTAGEM DE ANDAIMES** |  | 2.06d | 2026-12-09 | 2026-12-11 |  | 135.09d |  |  | 72h |  |  | ESTRUTURAL |  | 346056 | SS-780/2025 |  |  |  |  |  |  |  | 0,00% | ZONA A |  |  | 0,00% | 2026-07-02 |  |
| 349 | 1.3.1.4.1 | DESMONTAGEM DE ANDAIMES - ZONA A |  | 18h | 2026-12-09 | 2026-12-11 | 343, 342, 345, 346, 347 | 135.09d | 0d | MONTADOR ANDAIME-OFF [400%] | 72h |  |  | ESTRUTURAL |  | 346056 | SS-780/2025 |  |  |  |  |  |  |  | 0,00% | ZONA A |  |  | 0,00% | 2026-07-02 |  |
| 350 | 1.3.2 | EMISSÃO DOS RELATÓRIOS | milestone | 0h | 2026-12-11 | 2026-12-11 | 349 | 135.09d |  |  |  |  |  | ESTRUTURAL |  | 346056 | SS-780/2025 |  |  |  |  |  |  |  | 0,00% |  |  |  | 0,00% | 2026-07-02 |  |

| ID | WBS | Task | Duration | Start | Finish | Predecessors | Total slack | Free slack | Resources | Work | Disciplina | Gerência Executante | Empresa Executante | Área/Sistema | Registro | Nº SS | Módulo | Nota/Item/Medida | Origem | TAG | Serviço Padrão | Status Planner | Prioridade do Serviço | % Previsto Calculado Prazo | Zona [Plano Pintura] | Piso/Setor | % Previsto Calculado Trabalho | Data de Status | Farol | Quant. m² | Sistema [Plano Pintura] |
| --- | --- | --- | --- | --- | --- | --- | --- | --- | --- | --- | --- | --- | --- | --- | --- | --- | --- | --- | --- | --- | --- | --- | --- | --- | --- | --- | --- | --- | --- | --- | --- |
| 351 | 1.3.3 | **ZONA B** | 234.09d | 2026-08-22 | 2027-05-13 |  | 11.94d |  |  | 8950h | PINT-PLANO | PPGM-I | ESTRUTURAL | ZPIN - Módulos para Pintura | 346056 | SS-780/2025 | M23 | 15989387 | NOTA ZS | Plano de Pintura para MóduloM23 Setor 3 | PINTURA - EXECUÇÃO DE PLANOS DE PINTURA | APROVAÇÃO BOOK DE PLANEJAMENTO | D - POSTERGÁVEL (Melhorias) | 0,00% | ZONA B | Setor 3 | 0,00% | 2026-07-02 | -1 | 99.35 |  |
| 352 | 1.3.3.1 | **MONTAGEM DO ACESSO** | 2.91d | 2026-08-22 | 2026-08-25 |  | 112.47d |  |  | 96h |  |  | ESTRUTURAL |  | 346056 | SS-780/2025 |  |  |  |  |  |  |  | 0,00% | ZONA B |  | 0,00% | 2026-07-02 |  |  |  |
| 353 | 1.3.3.1.1 | MONTAGEM DE ANDAIMES - ZONA B | 24h | 2026-08-22 | 2026-08-25 | 315 | 112.47d | 100.85d | MONTADOR ANDAIME-OFF [400%] | 96h |  |  | ESTRUTURAL |  | 346056 | SS-780/2025 |  |  |  |  |  |  |  | 0,00% | ZONA B |  | 0,00% | 2026-07-02 |  |  |  |
| 354 | 1.3.3.2 | **PINTURA** | 128.88d | 2026-12-04 | 2027-05-12 |  | 11.68d |  |  | 7810h |  |  | ESTRUTURAL |  | 346056 | SS-780/2025 |  |  |  |  |  |  |  | 0,00% | ZONA B |  | 0,00% | 2026-07-02 |  |  |  |
| 355 | 1.3.3.2.1 | **APLICAÇÃO SISTEMA DE PINTURA AÇO CARBONO - TEMP. AMBIENTE** | 6.88d | 2026-12-04 | 2026-12-11 |  | 11.68d |  |  | 312h | PINT-PLANO | PPGM-I | ESTRUTURAL | ZPIN - Módulos para Pintura | 346056 | SS-780/2025 | M23 | 15989387 | NOTA ZS | Plano de Pintura para MóduloM23 Setor 3 | PINTURA - EXECUÇÃO DE PLANOS DE PINTURA | APROVAÇÃO BOOK DE PLANEJAMENTO | D - POSTERGÁVEL (Melhorias) | 0,00% | ZONA B | Setor 3 | 0,00% | 2026-07-02 |  |  | SISTEMA B - TUBULAÇÕES |
| 356 | 1.3.3.2.1.1 | Tratamento de Superfície | 78h | 2026-12-04 | 2026-12-08 | 342, 353 | 11.68d | 0d | HIDROJATISTA-OFF [200%] | 156h |  |  | ESTRUTURAL |  | 346056 | SS-780/2025 |  |  |  |  |  |  |  | 0,00% | ZONA B |  | 0,00% | 2026-07-02 |  |  | SISTEMA B - TUBULAÇÕES |
| 357 | 1.3.3.2.1.2 | Pintura | 39h | 2026-12-08 | 2026-12-11 | 356 | 101.09d | 0d | PINTOR ESC-OFF [400%] | 156h |  |  | ESTRUTURAL |  | 346056 | SS-780/2025 |  |  |  |  |  |  |  | 0,00% | ZONA B |  | 0,00% | 2026-07-02 |  |  | SISTEMA B - TUBULAÇÕES |
| 358 | 1.3.3.2.2 | **APLICAÇÃO SISTEMA DE PINTURA AÇO CARBONO - ALTA TEMPERATURA** | 2.41d | 2026-12-08 | 2026-12-11 |  | 11.68d |  |  | 8h | PINT-PLANO | PPGM-I | ESTRUTURAL | ZPIN - Módulos para Pintura | 346056 | SS-780/2025 | M23 | 15989387 | NOTA ZS | Plano de Pintura para MóduloM23 Setor 3 | PINTURA - EXECUÇÃO DE PLANOS DE PINTURA | APROVAÇÃO BOOK DE PLANEJAMENTO | D - POSTERGÁVEL (Melhorias) | 0,00% | ZONA B | Setor 3 | 0,00% | 2026-07-02 |  |  | SISTEMA B - TUBULAÇÕES |
| 359 | 1.3.3.2.2.1 | Tratamento de Superfície | 2h | 2026-12-08 | 2026-12-08 | 356 | 11.68d | 0d | HIDROJATISTA-OFF [200%] | 4h |  |  | ESTRUTURAL |  | 346056 | SS-780/2025 |  |  |  |  |  |  |  | 0,00% | ZONA B |  | 0,00% | 2026-07-02 |  |  | SISTEMA B - TUBULAÇÕES |
| 360 | 1.3.3.2.2.2 | Pintura | 2h | 2026-12-11 | 2026-12-11 | 357, 359 | 101.09d | 0d | PINTOR ESC-OFF [200%] | 4h |  |  | ESTRUTURAL |  | 346056 | SS-780/2025 |  |  |  |  |  |  |  | 0,00% | ZONA B |  | 0,00% | 2026-07-02 |  |  | SISTEMA B - TUBULAÇÕES |
| 361 | 1.3.3.2.3 | **APLICAÇÃO SISTEMA DE PINTURA COBRE-NÍQUEL - TEMP. AMBIENTE** | 7.59d | 2026-12-08 | 2026-12-16 |  | 11.68d |  |  | 344h | PINT-PLANO | PPGM-I | ESTRUTURAL | ZPIN - Módulos para Pintura | 346056 | SS-780/2025 | M23 | 15989387 | NOTA ZS | Plano de Pintura para MóduloM23 Setor 3 | PINTURA - EXECUÇÃO DE PLANOS DE PINTURA | APROVAÇÃO BOOK DE PLANEJAMENTO | D - POSTERGÁVEL (Melhorias) | 0,00% | ZONA B | Setor 3 | 0,00% | 2026-07-02 |  |  | SISTEMA B - TUBULAÇÕES |
| 362 | 1.3.3.2.3.1 | Tratamento de Superfície | 86h | 2026-12-08 | 2026-12-13 | 359 | 11.68d | 0d | HIDROJATISTA-OFF [200%] | 172h |  |  | ESTRUTURAL |  | 346056 | SS-780/2025 |  |  |  |  |  |  |  | 0,00% | ZONA B |  | 0,00% | 2026-07-02 |  |  | SISTEMA B - TUBULAÇÕES |
| 363 | 1.3.3.2.3.2 | Pintura | 43h | 2026-12-13 | 2026-12-16 | 360, 362 | 98.32d | 0d | PINTOR ESC-OFF [400%] | 172h |  |  | ESTRUTURAL |  | 346056 | SS-780/2025 |  |  |  |  |  |  |  | 0,00% | ZONA B |  | 0,00% | 2026-07-02 |  |  | SISTEMA B - TUBULAÇÕES |
| 364 | 1.3.3.2.4 | **APLICAÇÃO SISTEMA DE PINTURA AÇO INOX - ALTA TEMPERATURA** | 3.53d | 2026-12-13 | 2026-12-17 |  | 11.68d |  |  | 68h | PINT-PLANO | PPGM-I | ESTRUTURAL | ZPIN - Módulos para Pintura | 346056 | SS-780/2025 | M23 | 15989387 | NOTA ZS | Plano de Pintura para MóduloM23 Setor 3 | PINTURA - EXECUÇÃO DE PLANOS DE PINTURA | APROVAÇÃO BOOK DE PLANEJAMENTO | D - POSTERGÁVEL (Melhorias) | 0,00% | ZONA B | Setor 3 | 0,00% | 2026-07-02 |  |  | SISTEMA B - TUBULAÇÕES |
| 365 | 1.3.3.2.4.1 | Tratamento de Superfície | 17h | 2026-12-13 | 2026-12-14 | 362 | 11.68d | 0d | HIDROJATISTA-OFF [200%] | 34h |  |  | ESTRUTURAL |  | 346056 | SS-780/2025 |  |  |  |  |  |  |  | 0,00% | ZONA B |  | 0,00% | 2026-07-02 |  |  | SISTEMA B - TUBULAÇÕES |
| 366 | 1.3.3.2.4.2 | Pintura | 17h | 2026-12-16 | 2026-12-17 | 363, 365 | 98.32d | 0d | PINTOR ESC-OFF [200%] | 34h |  |  | ESTRUTURAL |  | 346056 | SS-780/2025 |  |  |  |  |  |  |  | 0,00% | ZONA B |  | 0,00% | 2026-07-02 |  |  | SISTEMA B - TUBULAÇÕES |
| 367 | 1.3.3.2.5 | **APLICAÇÃO SISTEMA DE PINTURA AÇO INOX - ALTA TEMPERATURA** | 4.41d | 2026-12-14 | 2026-12-19 |  | 11.68d |  |  | 128h | PINT-PLANO | PPGM-I | ESTRUTURAL | ZPIN - Módulos para Pintura | 346056 | SS-780/2025 | M23 | 15989387 | NOTA ZS | Plano de Pintura para MóduloM23 Setor 3 | PINTURA - EXECUÇÃO DE PLANOS DE PINTURA | APROVAÇÃO BOOK DE PLANEJAMENTO | D - POSTERGÁVEL (Melhorias) | 0,00% | ZONA B | Setor 3 | 0,00% | 2026-07-02 |  |  | SISTEMA B - TUBULAÇÕES |
| 368 | 1.3.3.2.5.1 | Tratamento de Superfície | 32h | 2026-12-14 | 2026-12-16 | 365 | 11.68d | 0d | HIDROJATISTA-OFF [200%] | 64h |  |  | ESTRUTURAL |  | 346056 | SS-780/2025 |  |  |  |  |  |  |  | 0,00% | ZONA B |  | 0,00% | 2026-07-02 |  |  | SISTEMA B - TUBULAÇÕES |
| 369 | 1.3.3.2.5.2 | Pintura | 32h | 2026-12-17 | 2026-12-19 | 366, 368 | 98.32d | 0d | PINTOR ESC-OFF [200%] | 64h |  |  | ESTRUTURAL |  | 346056 | SS-780/2025 |  |  |  |  |  |  |  | 0,00% | ZONA B |  | 0,00% | 2026-07-02 |  |  | SISTEMA B - TUBULAÇÕES |
| 370 | 1.3.3.2.6 | **APLICAÇÃO SISTEMA DE PINTURA AÇO CARBONO - TEMP. AMBIENTE** | 6.35d | 2026-12-20 | 2026-12-26 |  | 11.68d |  |  | 216h | PINT-PLANO | PPGM-I | ESTRUTURAL | ZPIN - Módulos para Pintura | 346056 | SS-780/2025 | M23 | 15989387 | NOTA ZS | Plano de Pintura para MóduloM23 Setor 3 | PINTURA - EXECUÇÃO DE PLANOS DE PINTURA | APROVAÇÃO BOOK DE PLANEJAMENTO | D - POSTERGÁVEL (Melhorias) | 0,00% | ZONA B | Setor 3 | 0,00% | 2026-07-02 |  |  | SISTEMA C - ESTRUTURAS |
| 371 | 1.3.3.2.6.1 | Tratamento de Superfície | 54h | 2026-12-20 | 2026-12-23 | 377 | 11.68d | 0d | HIDROJATISTA-OFF [200%] | 108h |  |  | ESTRUTURAL |  | 346056 | SS-780/2025 |  |  |  |  |  |  |  | 0,00% | ZONA B |  | 0,00% | 2026-07-02 |  |  | SISTEMA C - ESTRUTURAS |
| 372 | 1.3.3.2.6.2 | Pintura | 54h | 2026-12-23 | 2026-12-26 | 378, 371 | 97.68d | 7d | PINTOR ESC-OFF [200%] | 108h |  |  | ESTRUTURAL |  | 346056 | SS-780/2025 |  |  |  |  |  |  |  | 0,00% | ZONA B |  | 0,00% | 2026-07-02 |  |  | SISTEMA C - ESTRUTURAS |
| 373 | 1.3.3.2.7 | **APLICAÇÃO SISTEMA DE PINTURA AÇO CARBONO - TEMP. AMBIENTE** | 6.12d | 2026-12-16 | 2026-12-22 |  | 11.68d |  |  | 208h | PINT-PLANO | PPGM-I | ESTRUTURAL | ZPIN - Módulos para Pintura | 346056 | SS-780/2025 | M23 | 15989387 | NOTA ZS | Plano de Pintura para MóduloM23 Setor 3 | PINTURA - EXECUÇÃO DE PLANOS DE PINTURA | APROVAÇÃO BOOK DE PLANEJAMENTO | D - POSTERGÁVEL (Melhorias) | 0,00% | ZONA B | Setor 3 | 0,00% | 2026-07-02 |  |  | SISTEMA D - SUPORTES |
| 374 | 1.3.3.2.7.1 | Tratamento de Superfície | 52h | 2026-12-16 | 2026-12-19 | 368 | 11.68d | 0d | HIDROJATISTA-OFF [200%] | 104h |  |  | ESTRUTURAL |  | 346056 | SS-780/2025 |  |  |  |  |  |  |  | 0,00% | ZONA B |  | 0,00% | 2026-07-02 |  |  | SISTEMA D - SUPORTES |
| 375 | 1.3.3.2.7.2 | Pintura | 52h | 2026-12-19 | 2026-12-22 | 369, 374 | 97.79d | 0d | PINTOR ESC-OFF [200%] | 104h |  |  | ESTRUTURAL |  | 346056 | SS-780/2025 |  |  |  |  |  |  |  | 0,00% | ZONA B |  | 0,00% | 2026-07-02 |  |  | SISTEMA D - SUPORTES |

| ID | WBS | Task | Type | Duration | Start | Finish | Predecessors | Total slack | Free slack | Resources | Work | Disciplina | Gerência Executante | Empresa Executante | Área/Sistema | Registro | Nº SS | Módulo | Nota/Item/Medida | Origem | TAG | Serviço Padrão | Status Planner | Prioridade do Serviço | % Previsto Calculado Prazo | Zona [Plano Pintura] | Sistema [Plano Pintura] | Piso/Setor | % Previsto Calculado Trabalho | Data de Status | Quant. m² | % da Etapa Concluída | QT SS's/REG. | Farol |
| --- | --- | --- | --- | --- | --- | --- | --- | --- | --- | --- | --- | --- | --- | --- | --- | --- | --- | --- | --- | --- | --- | --- | --- | --- | --- | --- | --- | --- | --- | --- | --- | --- | --- | --- |
| 376 | 1.3.3.2.8 | **APLICAÇÃO SISTEMA DE PINTURA AÇO CARBONO - TEMP. AMBIENTE** |  | 3.29d | 2026-12-19 | 2026-12-23 |  | 11.68d |  |  | 16h | PINT-PLANO | PPGM-I | ESTRUTURAL | ZPIN - Módulos para Pintura | 346056 | SS-780/2025 | M23 | 15989387 | NOTA ZS | Plano de Pintura para MóduloM23 Setor 3 | PINTURA - EXECUÇÃO DE PLANOS DE PINTURA | APROVAÇÃO BOOK DE PLANEJAMENTO | D - POSTERGÁVEL (Melhorias) | 0,00% | ZONA B | SISTEMA E - EQUIPAMENTOS | Setor 3 | 0,00% | 2026-07-02 |  |  |  |  |
| 377 | 1.3.3.2.8.1 | Tratamento de Superfície |  | 4h | 2026-12-19 | 2026-12-20 | 374 | 11.68d | 0d | HIDROJATISTA-OFF [200%] | 8h |  |  | ESTRUTURAL |  | 346056 | SS-780/2025 |  |  |  |  |  |  |  | 0,00% | ZONA B | SISTEMA E - EQUIPAMENTOS |  | 0,00% | 2026-07-02 |  |  |  |  |
| 378 | 1.3.3.2.8.2 | Pintura |  | 4h | 2026-12-22 | 2026-12-23 | 375, 377 | 97.79d | 0d | PINTOR ESC-OFF [200%] | 8h |  |  | ESTRUTURAL |  | 346056 | SS-780/2025 |  |  |  |  |  |  |  | 0,00% | ZONA B | SISTEMA E - EQUIPAMENTOS |  | 0,00% | 2026-07-02 |  |  |  |  |
| 379 | 1.3.3.2.9 | **APLICAÇÃO SISTEMA DE PINTURA AÇO CARBONO - TEMP. AMBIENTE** |  | 15.29d | 2026-12-23 | 2027-01-07 |  | 11.68d |  |  | 694h | PINT-PLANO | PPGM-I | ESTRUTURAL | ZPIN - Módulos para Pintura | 346056 | SS-780/2025 | M23 | 15989387 | NOTA ZS | Plano de Pintura para MóduloM23 Setor 3 | PINTURA - EXECUÇÃO DE PLANOS DE PINTURA | APROVAÇÃO BOOK DE PLANEJAMENTO | D - POSTERGÁVEL (Melhorias) | 0,00% | ZONA B | SISTEMA F - GUARDA CORPO | Setor 3 | 0,00% | 2026-07-02 |  |  |  |  |
| 380 | 1.3.3.2.9.1 | Tratamento de Superfície |  | 173h | 2026-12-23 | 2027-01-02 | 371 | 11.68d | 0d | HIDROJATISTA-OFF [200%] | 346h |  |  | ESTRUTURAL |  | 346056 | SS-780/2025 |  |  |  |  |  |  |  | 0,00% | ZONA B | SISTEMA F - GUARDA CORPO |  | 0,00% | 2026-07-02 |  |  |  |  |
| 381 | 1.3.3.2.9.2 | Pintura |  | 87h | 2027-01-02 | 2027-01-07 | 372, 380 | 90.68d | 0d | PINTOR ESC-OFF [400%] | 348h |  |  | ESTRUTURAL |  | 346056 | SS-780/2025 |  |  |  |  |  |  |  | 0,00% | ZONA B | SISTEMA F - GUARDA CORPO |  | 0,00% | 2026-07-02 |  |  |  |  |
| 382 | 1.3.3.2.10 | **APLICAÇÃO SISTEMA DE PINTURA AÇO CARBONO - TEMP. AMBIENTE** |  | 6.59d | 2027-01-02 | 2027-02-08 |  | 11.68d |  |  | 100h | PINT-PLANO | PPGM-I | ESTRUTURAL | ZPIN - Módulos para Pintura | 346056 | SS-780/2025 | M23 | 15989387 | NOTA ZS | Plano de Pintura para MóduloM23 Setor 3 | PINTURA - EXECUÇÃO DE PLANOS DE PINTURA | APROVAÇÃO BOOK DE PLANEJAMENTO | D - POSTERGÁVEL (Melhorias) | 0,00% | ZONA B | SISTEMA G - ESCADAS | Setor 3 | 0,00% | 2026-07-02 |  |  |  |  |
| 383 | 1.3.3.2.10.1 | Tratamento de Superfície |  | 25h | 2027-01-02 | 2027-01-03 | 380 | 11.68d | 0d | HIDROJATISTA-OFF [200%] | 50h |  |  | ESTRUTURAL |  | 346056 | SS-780/2025 |  |  |  |  |  |  |  | 0,00% | ZONA B | SISTEMA G - ESCADAS |  | 0,00% | 2026-07-02 |  |  |  |  |
| 384 | 1.3.3.2.10.2 | Pintura |  | 25h | 2027-01-07 | 2027-02-08 | 381, 383 | 90.68d | 79d | PINTOR ESC-OFF [200%] | 50h |  |  | ESTRUTURAL |  | 346056 | SS-780/2025 |  |  |  |  |  |  |  | 0,00% | ZONA B | SISTEMA G - ESCADAS |  | 0,00% | 2026-07-02 |  |  |  |  |
| 385 | 1.3.3.2.11 | **APLICAÇÃO SISTEMA DE PINTURA AÇO CARBONO - TEMP. AMBIENTE** |  | 98.12d | 2027-01-03 | 2027-05-12 |  | 11.68d |  |  | 5716h | PINT-PLANO | PPGM-I | ESTRUTURAL | ZPIN - Módulos para Pintura | 346056 | SS-780/2025 | M23 | 15989387 | NOTA ZS | Plano de Pintura para MóduloM23 Setor 3 | PINTURA - EXECUÇÃO DE PLANOS DE PINTURA | APROVAÇÃO BOOK DE PLANEJAMENTO | D - POSTERGÁVEL (Melhorias) | 0,00% | ZONA B | SISTEMA I - PISO | Setor 3 | 0,00% | 2026-07-02 |  |  |  |  |
| 386 | 1.3.3.2.11.1 | Tratamento de Superfície |  | 1430h | 2027-01-03 | 2027-04-28 | 383 | 11.68d | 0d | HIDROJATISTA-OFF [200%] | 2860h |  |  | ESTRUTURAL |  | 346056 | SS-780/2025 |  |  |  |  |  |  |  | 0,00% | ZONA B | SISTEMA I - PISO |  | 0,00% | 2026-07-02 |  |  |  |  |
| 387 | 1.3.3.2.11.2 | Pintura |  | 238h | 2027-04-28 | 2027-05-12 | 384, 386 | 11.68d | 0.24d | PINTOR ESC-OFF [1200%] | 2856h |  |  | ESTRUTURAL |  | 346056 | SS-780/2025 |  |  |  |  |  |  |  | 0,00% | ZONA B | SISTEMA I - PISO |  | 0,00% | 2026-07-02 |  |  |  |  |
| 388 | 1.3.3.3 | **PRESERVAÇÃO** |  | 16.76d | 2026-12-11 | 2026-12-27 |  | 116.79d |  |  | 996h |  |  | ESTRUTURAL |  | 346056 | SS-780/2025 |  |  |  |  |  |  |  | 0,00% | ZONA B | SISTEMA J - PRESERVAÇÃO |  | 0,00% | 2026-07-02 | 99.35 |  |  |  |
| 389 | 1.3.3.3.1 | APLICAÇÃO SISTEMA DE PRESERVAÇAO AÇO CARBONO - TEMP. AMBIENTE |  | 81h | 2026-12-23 | 2026-12-27 | 357, 375, 378 | 116.79d | 105.35d | PINTOR ESC-OFF [400%] | 324h | PINT-PLANO | PPGM-I | ESTRUTURAL | ZPIN - Módulos para Pintura | 346056 | SS-780/2025 | M23 | 15989387 | NOTA ZS | Plano de Pintura para MóduloM23 Setor 3 | PINTURA - EXECUÇÃO DE PLANOS DE PINTURA | APROVAÇÃO BOOK DE PLANEJAMENTO | D - POSTERGÁVEL (Melhorias) | 0,00% | ZONA B | SISTEMA J - PRESERVAÇÃO | Setor 3 | 0,00% | 2026-07-02 | 32.35 |  |  |  |
| 390 | 1.3.3.3.2 | APLICAÇÃO SISTEMA DE PRESERVAÇAO AÇO CARBONO - ALTA TEMPERATURA |  | 6h | 2026-12-11 | 2026-12-11 | 360 | 133.21d | 121.76d | PINTOR ESC-OFF [200%] | 12h | PINT-PLANO | PPGM-I | ESTRUTURAL | ZPIN - Módulos para Pintura | 346056 | SS-780/2025 | M23 | 15989387 | NOTA ZS | Plano de Pintura para MóduloM23 Setor 3 | PINTURA - EXECUÇÃO DE PLANOS DE PINTURA | APROVAÇÃO BOOK DE PLANEJAMENTO | D - POSTERGÁVEL (Melhorias) | 0,00% | ZONA B | SISTEMA J - PRESERVAÇÃO | Setor 3 | 0,00% | 2026-07-02 | 1.11 |  |  |  |
| 391 | 1.3.3.3.3 | APLICAÇÃO SISTEMA DE PRESERVAÇÃO COBRE-NÍQUEL - TEMP. AMBIENTE |  | 136h | 2026-12-16 | 2026-12-24 | 363 | 118.74d | 0d | PINTOR ESC-OFF [400%] | 544h | PINT-PLANO | PPGM-I | ESTRUTURAL | ZPIN - Módulos para Pintura | 346056 | SS-780/2025 | M23 | 15989387 | NOTA ZS | Plano de Pintura para MóduloM23 Setor 3 | PINTURA - EXECUÇÃO DE PLANOS DE PINTURA | APROVAÇÃO BOOK DE PLANEJAMENTO | D - POSTERGÁVEL (Melhorias) | 0,00% | ZONA B | SISTEMA J - PRESERVAÇÃO | Setor 3 | 0,00% | 2026-07-02 | 54.44 |  |  |  |
| 392 | 1.3.3.3.4 | APLICAÇÃO SISTEMA DE PRESERVAÇÃO AÇO INOX - TEMP. AMBIENTE |  | 26h | 2026-12-24 | 2026-12-25 | 391 | 118.74d | 107.29d | PINTOR ESC-OFF [200%] | 52h | PINT-PLANO | PPGM-I | ESTRUTURAL | ZPIN - Módulos para Pintura | 346056 | SS-780/2025 | M23 | 15989387 | NOTA ZS | Plano de Pintura para MóduloM23 Setor 3 | PINTURA - EXECUÇÃO DE PLANOS DE PINTURA | APROVAÇÃO BOOK DE PLANEJAMENTO | D - POSTERGÁVEL (Melhorias) | 0,00% | ZONA B | SISTEMA J - PRESERVAÇÃO | Setor 3 | 0,00% | 2026-07-02 | 5.13 |  |  |  |
| 393 | 1.3.3.3.5 | APLICAÇÃO SISTEMA DE PRESERVAÇÃO AÇO INOX - ALTA TEMPERATURA |  | 32h | 2026-12-19 | 2026-12-21 | 366, 369 | 123.5d | 112.06d | PINTOR ESC-OFF [200%] | 64h | PINT-PLANO | PPGM-I | ESTRUTURAL | ZPIN - Módulos para Pintura | 346056 | SS-780/2025 | M23 | 15989387 | NOTA ZS | Plano de Pintura para MóduloM23 Setor 3 | PINTURA - EXECUÇÃO DE PLANOS DE PINTURA | APROVAÇÃO BOOK DE PLANEJAMENTO | D - POSTERGÁVEL (Melhorias) | 0,00% | ZONA B | SISTEMA J - PRESERVAÇÃO | Setor 3 | 0,00% | 2026-07-02 | 6.32 |  |  |  |
| 394 | 1.3.3.4 | **DESMONTAGEM DE ANDAIMES** |  | 1.21d | 2027-05-12 | 2027-05-13 |  | 11.44d |  |  | 48h |  |  | ESTRUTURAL |  | 346056 | SS-780/2025 |  |  |  |  |  |  |  | 0,00% | ZONA B |  |  | 0,00% | 2026-07-02 |  |  |  |  |
| 395 | 1.3.3.4.1 | DESMONTAGEM DE ANDAIMES - ZONA B |  | 12h | 2027-05-12 | 2027-05-13 | 387, 389, 390, 391, 392, 393, 386 | 11.44d | 0d | MONTADOR ANDAIME-OFF [400%] | 48h |  |  | ESTRUTURAL |  | 346056 | SS-780/2025 |  |  |  |  |  |  |  | 0,00% | ZONA B |  |  | 0,00% | 2026-07-02 |  |  |  |  |
| 396 | 1.3.4 | EMISSÃO DOS RELATÓRIOS | milestone | 0h | 2027-05-13 | 2027-05-13 | 395 | 11.94d |  |  |  |  |  | ESTRUTURAL |  | 346056 | SS-780/2025 |  |  |  |  |  |  |  | 0,00% |  |  |  | 0,00% | 2026-07-02 |  | 0,00% | 1 |  |
| 397 | 1.289 | **SS-803/2025 - Registro: 346058 - Tratar e Pintar M23 Setor 6** |  | 81.29d | 2026-08-18 | 2026-11-07 |  | 168.06d |  |  | 6166h | PINT-PLANO | PPGM-I | ESTRUTURAL | ZPIN - Módulos para Pintura | 346058 | SS-803/2025 | M23 | 15989517 | NOTA ZS | Plano de Pintura para MóduloM23 Setor 6 | PINTURA - EXECUÇÃO DE PLANOS DE PINTURA | APROVAÇÃO BOOK DE PLANEJAMENTO | D - POSTERGÁVEL (Melhorias) | 0,00% |  |  | Setor 6 | 0,00% | 2026-07-02 | 85.98 | 0,00% | 1 | -1 |
| 398 | 1.4.1 | **ZONA A** |  | 36.47d | 2026-08-18 | 2026-09-23 |  | 168.06d |  |  | 2908h | PINT-PLANO | PPGM-I | ESTRUTURAL | ZPIN - Módulos para Pintura | 346058 | SS-803/2025 | M23 | 15989517 | NOTA ZS | Plano de Pintura para MóduloM23 Setor 6 | PINTURA - EXECUÇÃO DE PLANOS DE PINTURA | APROVAÇÃO BOOK DE PLANEJAMENTO | D - POSTERGÁVEL (Melhorias) | 0,00% | ZONA A |  | Setor 6 | 0,00% | 2026-07-02 | 77.05 |  |  | -1 |
| 399 | 1.4.1.1 | **MONTAGEM DO ACESSO** |  | 1.44d | 2026-08-18 | 2026-08-19 |  | 168.06d |  |  | 64h |  |  | ESTRUTURAL |  | 346058 | SS-803/2025 |  |  |  |  |  |  |  | 0,00% | ZONA A |  |  | 0,00% | 2026-07-02 |  |  |  |  |
| 400 | 1.4.1.1.1 | MONTAGEM DE ANDAIMES - ZONA A |  | 16h | 2026-08-18 | 2026-08-19 |  | 168.06d | 0d | MONTADOR ANDAIME-OFF [400%] | 64h |  |  | ESTRUTURAL |  | 346058 | SS-803/2025 |  |  |  |  |  |  |  | 0,00% | ZONA A |  |  | 0,00% | 2026-07-02 |  |  |  |  |

| ID | WBS | Task | Type | Duration | Start | Finish | Predecessors | Total slack | Free slack | Resources | Work | Empresa Executante | Registro | Nº SS | % Previsto Calculado Prazo | Zona [Plano Pintura] | % Previsto Calculado Trabalho | Data de Status | Disciplina | Gerência Executante | Área/Sistema | Módulo | Nota/Item/Medida | Origem | TAG | Serviço Padrão | Status Planner | Prioridade do Serviço | Sistema [Plano Pintura] | Piso/Setor | Quant. m² | Farol |
| --- | --- | --- | --- | --- | --- | --- | --- | --- | --- | --- | --- | --- | --- | --- | --- | --- | --- | --- | --- | --- | --- | --- | --- | --- | --- | --- | --- | --- | --- | --- | --- | --- |
| 401 | 1.4.1.2 | **PINTURA** |  | 34.29d | 2026-08-19 | 2026-09-23 |  | 168.35d |  |  | 2044h | ESTRUTURAL | 346058 | SS-803/2025 | 0,00% | ZONA A | 0,00% | 2026-07-02 |  |  |  |  |  |  |  |  |  |  |  |  |  |  |
| 402 | 1.4.1.2.1 | **APLICAÇÃO SISTEMA DE PINTURA AÇO CARBONO - TEMP. AMBIENTE** |  | 13d | 2026-08-19 | 2026-09-01 |  | 168.35d |  |  | 590h | ESTRUTURAL | 346058 | SS-803/2025 | 0,00% | ZONA A | 0,00% | 2026-07-02 | PINT-PLANO | PPGM-I | ZPIN - Módulos para Pintura | M23 | 15989517 | NOTA ZS | Plano de Pintura para MóduloM23 Setor 6 | PINTURA - EXECUÇÃO DE PLANOS DE PINTURA | APROVAÇÃO BOOK DE PLANEJAMENTO | D - POSTERGÁVEL (Melhorias) | SISTEMA B - TUBULAÇÕES | Setor 6 |  |  |
| 403 | 1.4.1.2.1.1 | Tratamento de Superfície |  | 147h | 2026-08-19 | 2026-08-28 | 400 | 168.35d | 0d | HIDROJATISTA-OFF [200%] | 294h | ESTRUTURAL | 346058 | SS-803/2025 | 0,00% | ZONA A | 0,00% | 2026-07-02 |  |  |  |  |  |  |  |  |  |  | SISTEMA B - TUBULAÇÕES |  |  |  |
| 404 | 1.4.1.2.1.2 | Pintura |  | 74h | 2026-08-28 | 2026-09-01 | 403 | 223.44d | 0d | PINTOR ESC-OFF [400%] | 296h | ESTRUTURAL | 346058 | SS-803/2025 | 0,00% | ZONA A | 0,00% | 2026-07-02 |  |  |  |  |  |  |  |  |  |  | SISTEMA B - TUBULAÇÕES |  |  |  |
| 405 | 1.4.1.2.2 | **APLICAÇÃO SISTEMA DE PINTURA AÇO CARBONO - TEMP. AMBIENTE** |  | 16.82d | 2026-08-31 | 2026-09-17 |  | 168.35d |  |  | 914h | ESTRUTURAL | 346058 | SS-803/2025 | 0,00% | ZONA A | 0,00% | 2026-07-02 | PINT-PLANO | PPGM-I | ZPIN - Módulos para Pintura | M23 | 15989517 | NOTA ZS | Plano de Pintura para MóduloM23 Setor 6 | PINTURA - EXECUÇÃO DE PLANOS DE PINTURA | APROVAÇÃO BOOK DE PLANEJAMENTO | D - POSTERGÁVEL (Melhorias) | SISTEMA C - ESTRUTURAS | Setor 6 |  |  |
| 406 | 1.4.1.2.2.1 | Tratamento de Superfície |  | 229h | 2026-08-31 | 2026-09-14 | 409 | 168.35d | 0d | HIDROJATISTA-OFF [200%] | 458h | ESTRUTURAL | 346058 | SS-803/2025 | 0,00% | ZONA A | 0,00% | 2026-07-02 |  |  |  |  |  |  |  |  |  |  | SISTEMA C - ESTRUTURAS |  |  |  |
| 407 | 1.4.1.2.2.2 | Pintura |  | 57h | 2026-09-14 | 2026-09-17 | 410, 406 | 214.32d | 0.88d | PINTOR ESC-OFF [800%] | 456h | ESTRUTURAL | 346058 | SS-803/2025 | 0,00% | ZONA A | 0,00% | 2026-07-02 |  |  |  |  |  |  |  |  |  |  | SISTEMA C - ESTRUTURAS |  |  |  |
| 408 | 1.4.1.2.3 | **APLICAÇÃO SISTEMA DE PINTURA AÇO CARBONO - TEMP. AMBIENTE** |  | 7.65d | 2026-08-28 | 2026-09-05 |  | 168.35d |  |  | 224h | ESTRUTURAL | 346058 | SS-803/2025 | 0,00% | ZONA A | 0,00% | 2026-07-02 | PINT-PLANO | PPGM-I | ZPIN - Módulos para Pintura | M23 | 15989517 | NOTA ZS | Plano de Pintura para MóduloM23 Setor 6 | PINTURA - EXECUÇÃO DE PLANOS DE PINTURA | APROVAÇÃO BOOK DE PLANEJAMENTO | D - POSTERGÁVEL (Melhorias) | SISTEMA D - SUPORTES | Setor 6 |  |  |
| 409 | 1.4.1.2.3.1 | Tratamento de Superfície |  | 56h | 2026-08-28 | 2026-08-31 | 403 | 168.35d | 0d | HIDROJATISTA-OFF [200%] | 112h | ESTRUTURAL | 346058 | SS-803/2025 | 0,00% | ZONA A | 0,00% | 2026-07-02 |  |  |  |  |  |  |  |  |  |  | SISTEMA D - SUPORTES |  |  |  |
| 410 | 1.4.1.2.3.2 | Pintura |  | 56h | 2026-09-01 | 2026-09-05 | 404, 409 | 223.44d | 0d | PINTOR ESC-OFF [200%] | 112h | ESTRUTURAL | 346058 | SS-803/2025 | 0,00% | ZONA A | 0,00% | 2026-07-02 |  |  |  |  |  |  |  |  |  |  | SISTEMA D - SUPORTES |  |  |  |
| 411 | 1.4.1.2.4 | **APLICAÇÃO SISTEMA DE PINTURA AÇO CARBONO - TEMP. AMBIENTE** |  | 8.47d | 2026-09-14 | 2026-09-22 |  | 168.35d |  |  | 288h | ESTRUTURAL | 346058 | SS-803/2025 | 0,00% | ZONA A | 0,00% | 2026-07-02 | PINT-PLANO | PPGM-I | ZPIN - Módulos para Pintura | M23 | 15989517 | NOTA ZS | Plano de Pintura para MóduloM23 Setor 6 | PINTURA - EXECUÇÃO DE PLANOS DE PINTURA | APROVAÇÃO BOOK DE PLANEJAMENTO | D - POSTERGÁVEL (Melhorias) | SISTEMA F - GUARDA CORPO | Setor 6 |  |  |
| 412 | 1.4.1.2.4.1 | Tratamento de Superfície |  | 72h | 2026-09-14 | 2026-09-18 | 406 | 168.35d | 0d | HIDROJATISTA-OFF [200%] | 144h | ESTRUTURAL | 346058 | SS-803/2025 | 0,00% | ZONA A | 0,00% | 2026-07-02 |  |  |  |  |  |  |  |  |  |  | SISTEMA F - GUARDA CORPO |  |  |  |
| 413 | 1.4.1.2.4.2 | Pintura |  | 72h | 2026-09-18 | 2026-09-22 | 407, 412 | 213.44d | 0d | PINTOR ESC-OFF [200%] | 144h | ESTRUTURAL | 346058 | SS-803/2025 | 0,00% | ZONA A | 0,00% | 2026-07-02 |  |  |  |  |  |  |  |  |  |  | SISTEMA F - GUARDA CORPO |  |  |  |
| 414 | 1.4.1.2.5 | **APLICAÇÃO SISTEMA DE PINTURA AÇO CARBONO - TEMP. AMBIENTE** |  | 4.65d | 2026-09-18 | 2026-09-23 |  | 168.35d |  |  | 28h | ESTRUTURAL | 346058 | SS-803/2025 | 0,00% | ZONA A | 0,00% | 2026-07-02 | PINT-PLANO | PPGM-I | ZPIN - Módulos para Pintura | M23 | 15989517 | NOTA ZS | Plano de Pintura para MóduloM23 Setor 6 | PINTURA - EXECUÇÃO DE PLANOS DE PINTURA | APROVAÇÃO BOOK DE PLANEJAMENTO | D - POSTERGÁVEL (Melhorias) | SISTEMA G - ESCADAS | Setor 6 |  |  |
| 415 | 1.4.1.2.5.1 | Tratamento de Superfície |  | 7h | 2026-09-18 | 2026-09-18 | 412 | 168.35d | 0d | HIDROJATISTA-OFF [200%] | 14h | ESTRUTURAL | 346058 | SS-803/2025 | 0,00% | ZONA A | 0,00% | 2026-07-02 |  |  |  |  |  |  |  |  |  |  | SISTEMA G - ESCADAS |  |  |  |
| 416 | 1.4.1.2.5.2 | Pintura |  | 7h | 2026-09-22 | 2026-09-23 | 413, 415 | 213.44d | 0.26d | PINTOR ESC-OFF [200%] | 14h | ESTRUTURAL | 346058 | SS-803/2025 | 0,00% | ZONA A | 0,00% | 2026-07-02 |  |  |  |  |  |  |  |  |  |  | SISTEMA G - ESCADAS |  |  |  |
| 417 | 1.4.1.3 | **PRESERVAÇÃO** |  | 5.65d | 2026-09-05 | 2026-09-10 |  | 226.76d |  |  | 768h | ESTRUTURAL | 346058 | SS-803/2025 | 0,00% | ZONA A | 0,00% | 2026-07-02 |  |  |  |  |  |  |  |  |  |  | SISTEMA J - PRESERVAÇÃO |  | 77.05 |  |
| 418 | 1.4.1.3.1 | APLICAÇÃO SISTEMA DE PRESERVAÇAO AÇO CARBONO - TEMP. AMBIENTE |  | 96h | 2026-09-05 | 2026-09-10 | 404, 410 | 226.76d |  | PINTOR ESC-OFF [800%] | 768h | ESTRUTURAL | 346058 | SS-803/2025 | 0,00% | ZONA A | 0,00% | 2026-07-02 | PINT-PLANO | PPGM-I | ZPIN - Módulos para Pintura | M23 | 15989517 | NOTA ZS | Plano de Pintura para MóduloM23 Setor 6 | PINTURA - EXECUÇÃO DE PLANOS DE PINTURA | APROVAÇÃO BOOK DE PLANEJAMENTO | D - POSTERGÁVEL (Melhorias) | SISTEMA J - PRESERVAÇÃO | Setor 6 | 77.05 |  |
| 419 | 1.4.1.4 | **DESMONTAGEM DE ANDAIMES** |  | 0.47d | 2026-09-23 | 2026-09-23 |  | 213.18d |  |  | 32h | ESTRUTURAL | 346058 | SS-803/2025 | 0,00% | ZONA A | 0,00% | 2026-07-02 |  |  |  |  |  |  |  |  |  |  |  |  |  |  |
| 420 | 1.4.1.4.1 | DESMONTAGEM DE ANDAIMES - ZONA A |  | 8h | 2026-09-23 | 2026-09-23 | 416 | 213.18d | 0d | MONTADOR ANDAIME-OFF [400%] | 32h | ESTRUTURAL | 346058 | SS-803/2025 | 0,00% | ZONA A | 0,00% | 2026-07-02 |  |  |  |  |  |  |  |  |  |  |  |  |  |  |
| 421 | 1.4.2 | EMISSÃO DOS RELATÓRIOS | milestone | 0h | 2026-09-23 | 2026-09-23 | 420 | 213.68d |  |  |  | ESTRUTURAL | 346058 | SS-803/2025 | 0,00% |  | 0,00% | 2026-07-02 |  |  |  |  |  |  |  |  |  |  |  |  |  |  |
| 422 | 1.4.3 | **ZONA B** |  | 79.85d | 2026-08-19 | 2026-11-07 |  | 168.85d |  |  | 3258h | ESTRUTURAL | 346058 | SS-803/2025 | 0,00% | ZONA B | 0,00% | 2026-07-02 | PINT-PLANO | PPGM-I | ZPIN - Módulos para Pintura | M23 | 15989517 | NOTA ZS | Plano de Pintura para MóduloM23 Setor 6 | PINTURA - EXECUÇÃO DE PLANOS DE PINTURA | APROVAÇÃO BOOK DE PLANEJAMENTO | D - POSTERGÁVEL (Melhorias) |  | Setor 6 | 8.93 | -1 |
| 423 | 1.4.3.1 | **MONTAGEM DO ACESSO** |  | 2.91d | 2026-08-19 | 2026-08-22 |  | 195.15d |  |  | 96h | ESTRUTURAL | 346058 | SS-803/2025 | 0,00% | ZONA B | 0,00% | 2026-07-02 |  |  |  |  |  |  |  |  |  |  |  |  |  |  |
| 424 | 1.4.3.1.1 | MONTAGEM DE ANDAIMES - ZONA B |  | 24h | 2026-08-19 | 2026-08-22 | 400 | 195.15d | 27.15d | MONTADOR ANDAIME-OFF [400%] | 96h | ESTRUTURAL | 346058 | SS-803/2025 | 0,00% | ZONA B | 0,00% | 2026-07-02 |  |  |  |  |  |  |  |  |  |  |  |  |  |  |

| ID | WBS | Task | Type | Duration | Start | Finish | Predecessors | Total slack | Free slack | Resources | Work | Empresa Executante | Registro | Nº SS | % Previsto Calculado Prazo | Zona [Plano Pintura] | % Previsto Calculado Trabalho | Data de Status | Disciplina | Gerência Executante | Área/Sistema | Módulo | Nota/Item/Medida | Origem | TAG | Serviço Padrão | Status Planner | Prioridade do Serviço | Sistema [Plano Pintura] | Piso/Setor | Quant. m² | % da Etapa Concluída | QT SS's/REG. |
| --- | --- | --- | --- | --- | --- | --- | --- | --- | --- | --- | --- | --- | --- | --- | --- | --- | --- | --- | --- | --- | --- | --- | --- | --- | --- | --- | --- | --- | --- | --- | --- | --- | --- |
| 425 | 1.4.3.2 | **PINTURA** |  | 48.59d | 2026-09-18 | 2026-11-06 |  | 168.35d |  |  | 3024h | ESTRUTURAL | 346058 | SS-803/2025 | 0,00% | ZONA B | 0,00% | 2026-07-02 |  |  |  |  |  |  |  |  |  |  |  |  |  |  |  |
| 426 | 1.4.3.2.1 | **APLICAÇÃO SISTEMA DE PINTURA AÇO CARBONO - TEMP. AMBIENTE** |  | 17.41d | 2026-09-18 | 2026-10-06 |  | 168.35d |  |  | 946h | ESTRUTURAL | 346058 | SS-803/2025 | 0,00% | ZONA B | 0,00% | 2026-07-02 | PINT-PLANO | PPGM-I | ZPIN - Módulos para Pintura | M23 | 15989517 | NOTA ZS | Plano de Pintura para MóduloM23 Setor 6 | PINTURA - EXECUÇÃO DE PLANOS DE PINTURA | APROVAÇÃO BOOK DE PLANEJAMENTO | D - POSTERGÁVEL (Melhorias) | SISTEMA B - TUBULAÇÕES | Setor 6 |  |  |  |
| 427 | 1.4.3.2.1.1 | Tratamento de Superfície |  | 237h | 2026-09-18 | 2026-10-02 | 415, 424 | 168.35d | 0d | HIDROJATISTA-OFF [200%] | 474h | ESTRUTURAL | 346058 | SS-803/2025 | 0,00% | ZONA B | 0,00% | 2026-07-02 |  |  |  |  |  |  |  |  |  |  | SISTEMA B - TUBULAÇÕES |  |  |  |  |
| 428 | 1.4.3.2.1.2 | Pintura |  | 59h | 2026-10-02 | 2026-10-06 | 427 | 189.76d | 0d | PINTOR ESC-OFF [800%] | 472h | ESTRUTURAL | 346058 | SS-803/2025 | 0,00% | ZONA B | 0,00% | 2026-07-02 |  |  |  |  |  |  |  |  |  |  | SISTEMA B - TUBULAÇÕES |  |  |  |  |
| 429 | 1.4.3.2.2 | **APLICAÇÃO SISTEMA DE PINTURA AÇO CARBONO - TEMP. AMBIENTE** |  | 29.06d | 2026-10-04 | 2026-11-03 |  | 168.35d |  |  | 1698h | ESTRUTURAL | 346058 | SS-803/2025 | 0,00% | ZONA B | 0,00% | 2026-07-02 | PINT-PLANO | PPGM-I | ZPIN - Módulos para Pintura | M23 | 15989517 | NOTA ZS | Plano de Pintura para MóduloM23 Setor 6 | PINTURA - EXECUÇÃO DE PLANOS DE PINTURA | APROVAÇÃO BOOK DE PLANEJAMENTO | D - POSTERGÁVEL (Melhorias) | SISTEMA C - ESTRUTURAS | Setor 6 |  |  |  |
| 430 | 1.4.3.2.2.1 | Tratamento de Superfície |  | 423h | 2026-10-04 | 2026-10-29 | 433 | 168.35d | 0d | HIDROJATISTA-OFF [200%] | 846h | ESTRUTURAL | 346058 | SS-803/2025 | 0,00% | ZONA B | 0,00% | 2026-07-02 |  |  |  |  |  |  |  |  |  |  | SISTEMA C - ESTRUTURAS |  |  |  |  |
| 431 | 1.4.3.2.2.2 | Pintura |  | 71h | 2026-10-29 | 2026-11-03 | 434, 430 | 168.35d | 0d | PINTOR ESC-OFF [1200%] | 852h | ESTRUTURAL | 346058 | SS-803/2025 | 0,00% | ZONA B | 0,00% | 2026-07-02 |  |  |  |  |  |  |  |  |  |  | SISTEMA C - ESTRUTURAS |  |  |  |  |
| 432 | 1.4.3.2.3 | **APLICAÇÃO SISTEMA DE PINTURA AÇO CARBONO - TEMP. AMBIENTE** |  | 5.71d | 2026-10-02 | 2026-10-08 |  | 168.35d |  |  | 152h | ESTRUTURAL | 346058 | SS-803/2025 | 0,00% | ZONA B | 0,00% | 2026-07-02 | PINT-PLANO | PPGM-I | ZPIN - Módulos para Pintura | M23 | 15989517 | NOTA ZS | Plano de Pintura para MóduloM23 Setor 6 | PINTURA - EXECUÇÃO DE PLANOS DE PINTURA | APROVAÇÃO BOOK DE PLANEJAMENTO | D - POSTERGÁVEL (Melhorias) | SISTEMA D - SUPORTES | Setor 6 |  |  |  |
| 433 | 1.4.3.2.3.1 | Tratamento de Superfície |  | 38h | 2026-10-02 | 2026-10-04 | 427 | 168.35d | 0d | HIDROJATISTA-OFF [200%] | 76h | ESTRUTURAL | 346058 | SS-803/2025 | 0,00% | ZONA B | 0,00% | 2026-07-02 |  |  |  |  |  |  |  |  |  |  | SISTEMA D - SUPORTES |  |  |  |  |
| 434 | 1.4.3.2.3.2 | Pintura |  | 38h | 2026-10-06 | 2026-10-08 | 428, 433 | 189.76d | 0d | PINTOR ESC-OFF [200%] | 76h | ESTRUTURAL | 346058 | SS-803/2025 | 0,00% | ZONA B | 0,00% | 2026-07-02 |  |  |  |  |  |  |  |  |  |  | SISTEMA D - SUPORTES |  |  |  |  |
| 435 | 1.4.3.2.4 | **APLICAÇÃO SISTEMA DE PINTURA AÇO CARBONO - TEMP. AMBIENTE** |  | 5.53d | 2026-10-29 | 2026-11-04 |  | 168.35d |  |  | 92h | ESTRUTURAL | 346058 | SS-803/2025 | 0,00% | ZONA B | 0,00% | 2026-07-02 | PINT-PLANO | PPGM-I | ZPIN - Módulos para Pintura | M23 | 15989517 | NOTA ZS | Plano de Pintura para MóduloM23 Setor 6 | PINTURA - EXECUÇÃO DE PLANOS DE PINTURA | APROVAÇÃO BOOK DE PLANEJAMENTO | D - POSTERGÁVEL (Melhorias) | SISTEMA F - GUARDA CORPO | Setor 6 |  |  |  |
| 436 | 1.4.3.2.4.1 | Tratamento de Superfície |  | 23h | 2026-10-29 | 2026-10-31 | 430 | 170.53d | 0d | HIDROJATISTA-OFF [200%] | 46h | ESTRUTURAL | 346058 | SS-803/2025 | 0,00% | ZONA B | 0,00% | 2026-07-02 |  |  |  |  |  |  |  |  |  |  | SISTEMA F - GUARDA CORPO |  |  |  |  |
| 437 | 1.4.3.2.4.2 | Pintura |  | 23h | 2026-11-03 | 2026-11-04 | 431, 436 | 168.35d | 0d | PINTOR ESC-OFF [200%] | 46h | ESTRUTURAL | 346058 | SS-803/2025 | 0,00% | ZONA B | 0,00% | 2026-07-02 |  |  |  |  |  |  |  |  |  |  | SISTEMA F - GUARDA CORPO |  |  |  |  |
| 438 | 1.4.3.2.5 | **APLICAÇÃO SISTEMA DE PINTURA AÇO CARBONO - TEMP. AMBIENTE** |  | 6.18d | 2026-10-31 | 2026-11-06 |  | 168.35d |  |  | 136h | ESTRUTURAL | 346058 | SS-803/2025 | 0,00% | ZONA B | 0,00% | 2026-07-02 | PINT-PLANO | PPGM-I | ZPIN - Módulos para Pintura | M23 | 15989517 | NOTA ZS | Plano de Pintura para MóduloM23 Setor 6 | PINTURA - EXECUÇÃO DE PLANOS DE PINTURA | APROVAÇÃO BOOK DE PLANEJAMENTO | D - POSTERGÁVEL (Melhorias) | SISTEMA G - ESCADAS | Setor 6 |  |  |  |
| 439 | 1.4.3.2.5.1 | Tratamento de Superfície |  | 34h | 2026-10-31 | 2026-11-02 | 436 | 170.53d | 2.18d | HIDROJATISTA-OFF [200%] | 68h | ESTRUTURAL | 346058 | SS-803/2025 | 0,00% | ZONA B | 0,00% | 2026-07-02 |  |  |  |  |  |  |  |  |  |  | SISTEMA G - ESCADAS |  |  |  |  |
| 440 | 1.4.3.2.5.2 | Pintura |  | 34h | 2026-11-04 | 2026-11-06 | 437, 439 | 168.35d | 0d | PINTOR ESC-OFF [200%] | 68h | ESTRUTURAL | 346058 | SS-803/2025 | 0,00% | ZONA B | 0,00% | 2026-07-02 |  |  |  |  |  |  |  |  |  |  | SISTEMA G - ESCADAS |  |  |  |  |
| 441 | 1.4.3.3 | **PRESERVAÇÃO** |  | 2.65d | 2026-10-08 | 2026-10-11 |  | 196.35d |  |  | 90h | ESTRUTURAL | 346058 | SS-803/2025 | 0,00% | ZONA B | 0,00% | 2026-07-02 |  |  |  |  |  |  |  |  |  |  | SISTEMA J - PRESERVAÇÃO |  | 8.93 |  |  |
| 442 | 1.4.3.3.1 | APLICAÇÃO SISTEMA DE PRESERVAÇAO AÇO CARBONO - TEMP. AMBIENTE |  | 45h | 2026-10-08 | 2026-10-11 | 428, 434 | 196.35d |  | PINTOR ESC-OFF [200%] | 90h | ESTRUTURAL | 346058 | SS-803/2025 | 0,00% | ZONA B | 0,00% | 2026-07-02 | PINT-PLANO | PPGM-I | ZPIN - Módulos para Pintura | M23 | 15989517 | NOTA ZS | Plano de Pintura para MóduloM23 Setor 6 | PINTURA - EXECUÇÃO DE PLANOS DE PINTURA | APROVAÇÃO BOOK DE PLANEJAMENTO | D - POSTERGÁVEL (Melhorias) | SISTEMA J - PRESERVAÇÃO | Setor 6 | 8.93 |  |  |
| 443 | 1.4.3.4 | **DESMONTAGEM DE ANDAIMES** |  | 1.21d | 2026-11-06 | 2026-11-07 |  | 168.35d |  |  | 48h | ESTRUTURAL | 346058 | SS-803/2025 | 0,00% | ZONA B | 0,00% | 2026-07-02 |  |  |  |  |  |  |  |  |  |  |  |  |  |  |  |
| 444 | 1.4.3.4.1 | DESMONTAGEM DE ANDAIMES - ZONA B |  | 12h | 2026-11-06 | 2026-11-07 | 440 | 168.35d | 0d | MONTADOR ANDAIME-OFF [400%] | 48h | ESTRUTURAL | 346058 | SS-803/2025 | 0,00% | ZONA B | 0,00% | 2026-07-02 |  |  |  |  |  |  |  |  |  |  |  |  |  |  |  |
| 445 | 1.4.4 | EMISSÃO DOS RELATÓRIOS | milestone | 0h | 2026-11-07 | 2026-11-07 | 444 | 168.85d |  |  |  | ESTRUTURAL | 346058 | SS-803/2025 | 0,00% |  | 0,00% | 2026-07-02 |  |  |  |  |  |  |  |  |  |  |  |  |  | 0,00% | 1 |
